# C:\Documents and Settings\Edmond\My Documents\caAERS-ProjectSchedule-ConstructionPhase

Schedule from MS Project, 2006-12-01 to 2007-10-16, A marks actual dates.

## Calendars

- Standard: Mon-Fri 08:00-12:00, 13:00-17:00; Sat-Sun off. Exceptions (off unless hours are given): 2006-12-25, 2007-01-01.

## Resources

| Resource |
| --- |
| Warren |
| Cal |
| Renee |
| Rhett |
| Vinay |
| Joshua |
| Padmaja |
| Richard |
| Krikor |
| John |
| Ram |
| Sujith |
| David |
| Brenda |
| Natasha |
| Mayo |
| WF |
| AE_SIG |
| VCDE_WS |
| Arch_WS |
| Edmond |
| Functional Team Lead |
| Dave |
| CCB |
| Sean |
| BAH |
| Kulasekeran |
| Kulasekaran |
| Lynne W. |
| Brian D |
| Brenda M. |
| Lynne W |
| Brenda M |
| Adopters |
| Mentors |
| DCP |
| CTEP |
| Ann |
| NCI |
| All |

## Schedule

| ID | WBS | Task | Type | Duration | Start | Finish | Predecessors | Complete | Remaining | Baseline start | Baseline finish | Baseline duration | Total slack | Constraint | Resources | Work | Actual work | Text1 |
| --- | --- | --- | --- | --- | --- | --- | --- | --- | --- | --- | --- | --- | --- | --- | --- | --- | --- | --- |
| 1 | 1 | **caAERS Application Development Project** |  | 226d | 2006-12-01 A | 2007-10-16 |  | 32% | 152.67d | 2006-12-01 | 2007-09-26 | 212d | 0d |  |  | 41200.2h | 16448.1h |  |
| 2 | 1.1 | **Elaboration Phase** |  | 57d | 2006-12-01 A | 2007-02-21 |  | 89% | 6.34d | 2006-12-01 | 2007-02-01 | 43d | 169d |  |  | 13192.2h | 11538.1h |  |
| 3 | 1.1.1 | **Iteration 1** |  | 31d | 2006-12-01 A | 2007-01-16 |  | 87% | 3.95d | 2006-12-01 | 2007-01-03 | 22d | 195d |  |  | 8120.24h | 7022.06h |  |
| 4 | 1.1.1.1 | **Project Management** |  | 31d | 2006-12-01 A | 2007-01-16 |  | 75% | 7.82d | 2006-12-01 | 2007-01-03 | 22d | 195d |  |  | 2736h | 2512h |  |
| 5 | 1.1.1.1.1 | **Inception and Kickoff Planning** |  | 6d | 2006-12-01 A | 2006-12-08 A |  | 100% |  | 2006-12-01 | 2006-12-08 | 6d |  |  |  | 200h | 200h |  |
| 6 | 1.1.1.1.1.1 | Draft Project Management Plan |  | 3d | 2006-12-01 A | 2006-12-05 A |  | 100% |  | 2006-12-01 | 2006-12-05 | 3d |  |  | Edmond; Ram; Vinay | 72h | 72h |  |
| 7 | 1.1.1.1.1.2 | High-Level Schedule and Assignments |  | 3d | 2006-12-01 A | 2006-12-05 A |  | 100% |  | 2006-12-01 | 2006-12-05 | 3d |  |  | Edmond; Ram; Vinay | 72h | 72h | GANTT |
| 8 | 1.1.1.1.1.3 | Kickoff Meeting | milestone | 1d | 2006-12-06 A | 2006-12-06 A |  | 100% |  | 2006-12-06 | 2006-12-06 | 1d |  | start no earlier than 2006-12-06 | Edmond; Ram; Vinay; Warren; Renee; Cal | 48h | 48h |  |
| 9 | 1.1.1.1.1.4 | Kickoff Meeting Notes (Task 1.5) |  | 1d | 2006-12-08 A | 2006-12-08 A | 8FS+1d | 100% |  | 2006-12-08 | 2006-12-08 | 1d |  |  | Edmond | 8h | 8h | Kickoff Minutes |
| 10 | 1.1.1.1.2 | **Project Management Plan Baseline (Task 1.1)** |  | 25d | 2006-12-11 A | 2007-01-16 |  | 44% | 14d | 2006-12-11 | 2006-12-26 | 11d | 195d |  |  | 408h | 296h |  |
| 11 | 1.1.1.1.2.1 | Add Details for Elaboration Phase to Project Plan |  | 3d | 2006-12-11 A | 2006-12-13 A | 9 | 100% |  | 2006-12-11 | 2006-12-13 | 3d |  |  | Edmond; Ram; Vinay | 72h | 72h |  |
| 12 | 1.1.1.1.2.2 | Resource Load and Level Project Schedule for Elaboration Phase |  | 1d | 2006-12-14 A | 2006-12-14 A | 11 | 100% |  | 2006-12-14 | 2006-12-14 | 1d |  |  | Edmond | 8h | 8h |  |
| 13 | 1.1.1.1.2.3 | Adopters/Collaborators Review |  | 5d | 2006-12-15 A | 2006-12-21 A | 12 | 100% |  | 2006-12-15 | 2006-12-21 | 5d |  |  | Mayo; WF; AE_SIG; VCDE_WS; Arch_WS | 200h | 200h |  |
| 14 | 1.1.1.1.2.4 | Updates |  | 2d | 2006-12-22 A | 2006-12-26 A | 13 | 100% |  | 2006-12-22 | 2006-12-26 | 2d |  |  | Edmond | 16h | 16h |  |
| 15 | 1.1.1.1.2.5 | Submit to BAH | milestone | 0d | 2006-12-26 A | 2006-12-26 A | 14 | 100% |  | 2006-12-26 | 2006-12-26 | 0d |  |  | Edmond |  |  |  |
| 16 | 1.1.1.1.2.6 | Formal Review by BAH |  | 14d | 2006-12-27 | 2007-01-16 | 15 |  |  |  |  |  | 195d |  | BAH | 112h |  |  |
| 17 | 1.1.1.1.3 | **Communications Plan (Task 1.2)** |  | 25d | 2006-12-01 A | 2007-01-08 |  | 44% | 14d | 2006-12-01 | 2006-12-15 | 11d | 201d |  |  | 480h | 368h |  |
| 18 | 1.1.1.1.3.1 | Developers Draft |  | 5d | 2006-12-01 A | 2006-12-07 A |  | 100% |  | 2006-12-01 | 2006-12-07 | 5d |  |  | Edmond; Ram; Warren; Cal | 160h | 160h |  |
| 19 | 1.1.1.1.3.2 | Adopters/Collaborators Review |  | 5d | 2006-12-08 A | 2006-12-14 A | 18 | 100% |  | 2006-12-08 | 2006-12-14 | 5d |  |  | Mayo; WF; AE_SIG; VCDE_WS; Arch_WS | 200h | 200h |  |
| 20 | 1.1.1.1.3.3 | Developers Update |  | 1d | 2006-12-15 A | 2006-12-15 A | 19 | 100% |  | 2006-12-15 | 2006-12-15 | 1d |  |  | Edmond | 8h | 8h | Communications Plan |
| 21 | 1.1.1.1.3.4 | Submit to BAH | milestone | 0d | 2006-12-15 A | 2006-12-15 A | 20 | 100% |  | 2006-12-15 | 2006-12-15 | 0d |  |  | Edmond |  |  |  |
| 22 | 1.1.1.1.3.5 | Formal Review by BAH |  | 14d | 2006-12-18 | 2007-01-08 | 21 |  |  |  |  |  | 201d |  | BAH | 112h |  |  |
| 23 | 1.1.1.1.4 | **Adopters Collaboration Plan** |  | 11d | 2006-12-01 A | 2006-12-15 A |  | 100% |  | 2006-12-01 | 2006-12-15 | 11d |  |  |  | 368h | 368h | Collaboration Plan |
| 24 | 1.1.1.1.4.1 | Developers Draft |  | 5d | 2006-12-01 A | 2006-12-07 A |  | 100% |  | 2006-12-01 | 2006-12-07 | 5d |  |  | Edmond; Ram; Warren; Cal | 160h | 160h |  |
| 25 | 1.1.1.1.4.2 | Adopters/Collaborators Review |  | 5d | 2006-12-08 A | 2006-12-14 A | 24 | 100% |  | 2006-12-08 | 2006-12-14 | 5d |  |  | Mayo; WF; AE_SIG; VCDE_WS; Arch_WS | 200h | 200h |  |
| 26 | 1.1.1.1.4.3 | Developers Update |  | 1d | 2006-12-15 A | 2006-12-15 A | 25 | 100% |  | 2006-12-15 | 2006-12-15 | 1d |  |  | Edmond | 8h | 8h |  |
| 27 | 1.1.1.1.4.4 | Submit to BAH | milestone | 0d | 2006-12-15 A | 2006-12-15 A | 26 | 100% |  | 2006-12-15 | 2006-12-15 | 0d |  |  | Edmond |  |  |  |

| ID | WBS | Task | Type | Duration | Start | Finish | Predecessors | Complete | Baseline start | Baseline finish | Baseline duration | Constraint | Resources | Work | Actual work | Text1 |
| --- | --- | --- | --- | --- | --- | --- | --- | --- | --- | --- | --- | --- | --- | --- | --- | --- |
| 28 | 1.1.1.1.5 | **Risk and Issue Management Plan** |  | 11d | 2006-12-01 A | 2006-12-15 A |  | 100% | 2006-12-01 | 2006-12-15 | 11d |  |  | 248h | 248h | Risk Matrix |
| 29 | 1.1.1.1.5.1 | Developers Draft |  | 5d | 2006-12-01 A | 2006-12-07 A |  | 100% | 2006-12-01 | 2006-12-07 | 5d |  | Edmond | 40h | 40h |  |
| 30 | 1.1.1.1.5.2 | Adopters/Collaborators Review |  | 5d | 2006-12-08 A | 2006-12-14 A | 29 | 100% | 2006-12-08 | 2006-12-14 | 5d |  | Mayo; WF; AE_SIG; VCDE_WS; Arch_WS | 200h | 200h |  |
| 31 | 1.1.1.1.5.3 | Developers Update |  | 1d | 2006-12-15 A | 2006-12-15 A | 30 | 100% | 2006-12-15 | 2006-12-15 | 1d |  | Edmond | 8h | 8h |  |
| 32 | 1.1.1.1.5.4 | Submit to BAH | milestone | 0d | 2006-12-15 A | 2006-12-15 A | 31 | 100% | 2006-12-15 | 2006-12-15 | 0d |  | Edmond |  |  |  |
| 33 | 1.1.1.1.6 | **caAERS Vision and Scope Document (Task 1.8)** |  | 11d | 2006-12-06 A | 2006-12-20 A |  | 100% | 2006-12-06 | 2006-12-20 | 11d |  |  | 400h | 400h | Scope Document |
| 34 | 1.1.1.1.6.1 | Developers Draft |  | 5d | 2006-12-06 A | 2006-12-12 A |  | 100% | 2006-12-06 | 2006-12-12 | 5d | start no earlier than 2006-12-06 | Warren; Cal; Renee; Ram | 160h | 160h |  |
| 35 | 1.1.1.1.6.2 | Adopters/Collaborators Review |  | 5d | 2006-12-13 A | 2006-12-19 A | 34 | 100% | 2006-12-13 | 2006-12-19 | 5d |  | Mayo; WF; AE_SIG; VCDE_WS; Arch_WS | 200h | 200h |  |
| 36 | 1.1.1.1.6.3 | Developers Update |  | 1d | 2006-12-20 A | 2006-12-20 A | 35 | 100% | 2006-12-20 | 2006-12-20 | 1d |  | Warren; Cal; Renee; Ram; Edmond | 40h | 40h |  |
| 37 | 1.1.1.1.6.4 | Submit to BAH | milestone | 0d | 2006-12-20 A | 2006-12-20 A | 36 | 100% | 2006-12-20 | 2006-12-20 | 0d |  | Edmond |  |  |  |
| 38 | 1.1.1.1.7 | **Test and QA Mgmt Plan Document (Task 2.6)** |  | 9d | 2006-12-18 A | 2006-12-29 A |  | 100% | 2006-12-18 | 2006-12-29 | 9d |  |  | 328h | 328h |  |
| 39 | 1.1.1.1.7.1 | Developer Draft |  | 3d | 2006-12-18 A | 2006-12-20 A |  | 100% | 2006-12-18 | 2006-12-20 | 3d | start no earlier than 2006-12-18 | Edmond; Vinay; Joshua; Rhett; Natasha | 120h | 120h |  |
| 40 | 1.1.1.1.7.2 | Adopters/Collobators Review |  | 5d | 2006-12-21 A | 2006-12-28 A | 39 | 100% | 2006-12-21 | 2006-12-28 | 5d |  | Mayo; WF; AE_SIG; VCDE_WS; Arch_WS | 200h | 200h |  |
| 41 | 1.1.1.1.7.3 | Developer Update |  | 1d | 2006-12-29 A | 2006-12-29 A | 40 | 100% | 2006-12-29 | 2006-12-29 | 1d |  | Edmond | 8h | 8h |  |
| 42 | 1.1.1.1.7.4 | Submit to BAH | milestone | 0d | 2006-12-29 A | 2006-12-29 A | 41 | 100% | 2006-12-29 | 2006-12-29 | 0d |  | Edmond |  |  |  |
| 43 | 1.1.1.1.8 | **caAERS F2F (Cross-Cutting WS) Meeting Planning** |  | 13d | 2006-12-01 A | 2006-12-19 A |  | 100% | 2006-12-01 | 2006-12-19 | 13d |  |  | 136h | 136h |  |
| 44 | 1.1.1.1.8.1 | Set Date |  | 1d | 2006-12-01 A | 2006-12-01 A |  | 100% | 2006-12-01 | 2006-12-01 | 1d |  | Edmond | 8h | 8h |  |
| 45 | 1.1.1.1.8.2 | Draft Agenda |  | 1d | 2006-12-15 A | 2006-12-15 A | 7 | 100% | 2006-12-15 | 2006-12-15 | 1d | start no earlier than 2006-12-15 | Ram; Vinay; Warren; Cal; Renee; Edmond | 48h | 48h |  |
| 46 | 1.1.1.1.8.3 | Review by Adopters/Collaborators |  | 2d | 2006-12-18 A | 2006-12-19 A | 45 | 100% | 2006-12-18 | 2006-12-19 | 2d |  | Mayo; WF; AE_SIG; VCDE_WS; Arch_WS | 80h | 80h |  |
| 47 | 1.1.1.1.8.4 | Finalize F2F Meeting Agenda and Details | milestone | 0d | 2006-12-19 A | 2006-12-19 A | 46 | 100% | 2006-12-19 | 2006-12-19 | 0d |  | Edmond |  |  |  |
| 48 | 1.1.1.1.9 | **Weekly Team/Developers Meeting** |  | 11d | 2006-12-11 A | 2006-12-26 A |  | 100% | 2006-12-11 | 2006-12-26 | 11d |  |  | 72h | 72h |  |
| 49 | 1.1.1.1.9.1 | Weekly Team Meeting 1 |  | 1d | 2006-12-11 A | 2006-12-11 A |  | 100% | 2006-12-11 | 2006-12-11 | 1d | start no earlier than 2006-12-11 | Edmond; Vinay; Functional Team Lead | 24h | 24h |  |
| 50 | 1.1.1.1.9.2 | Weekly Team Meeting 2 |  | 1d | 2006-12-18 A | 2006-12-18 A |  | 100% | 2006-12-18 | 2006-12-18 | 1d | start no earlier than 2006-12-18 | Edmond; Vinay; Functional Team Lead | 24h | 24h |  |
| 51 | 1.1.1.1.9.3 | Weekly Team Meeting 3 |  | 1d | 2006-12-26 A | 2006-12-26 A |  | 100% | 2006-12-26 | 2006-12-26 | 1d | start no earlier than 2006-12-25 | Edmond; Vinay; Functional Team Lead | 24h | 24h |  |

| ID | WBS | Task | Type | Duration | Start | Finish | Predecessors | Complete | Baseline start | Baseline finish | Baseline duration | Constraint | Resources | Work | Actual work |
| --- | --- | --- | --- | --- | --- | --- | --- | --- | --- | --- | --- | --- | --- | --- | --- |
| 52 | 1.1.1.1.10 | **Status and Risk Reporting** |  | 10d | 2006-12-15 A | 2006-12-29 A |  | 100% | 2006-12-15 | 2006-12-29 | 10d |  |  | 32h | 32h |
| 53 | 1.1.1.1.10.1 | Bi-weekly Risk Update in caMP (Task 1.4) | milestone | 0d | 2006-12-15 A | 2006-12-15 A |  | 100% | 2006-12-15 | 2006-12-15 | 0d | start no earlier than 2006-12-15 | Edmond |  |  |
| 54 | 1.1.1.1.10.2 | Bi-weekly Risk Matrix Update Meeting |  | 1d | 2006-12-22 A | 2006-12-22 A |  | 100% | 2006-12-22 | 2006-12-22 | 1d | start no earlier than 2006-12-22 | Edmond; Vinay | 16h | 16h |
| 55 | 1.1.1.1.10.3 | Bi-weekly Risk Update in caMP (Task 1.4) | milestone | 0d | 2006-12-29 A | 2006-12-29 A |  | 100% | 2006-12-29 | 2006-12-29 | 0d | start no earlier than 2006-12-29 | Edmond |  |  |
| 56 | 1.1.1.1.10.4 | Bi-weekly Status Update Meeting with BAH/NCI |  | 1d | 2006-12-29 A | 2006-12-29 A |  | 100% | 2006-12-29 | 2006-12-29 | 1d | start no earlier than 2006-12-29 | Edmond; Vinay | 16h | 16h |
| 57 | 1.1.1.1.10.5 | Monthly Status Report (Task 1.3) | milestone | 0d | 2006-12-29 A | 2006-12-29 A |  | 100% | 2006-12-29 | 2006-12-29 | 0d | start no earlier than 2006-12-29 | Edmond |  |  |
| 58 | 1.1.1.1.10.6 | Monthly Risk Matrix Update (Task 1.3) | milestone | 0d | 2006-12-29 A | 2006-12-29 A |  | 100% | 2006-12-29 | 2006-12-29 | 0d | must finish on 2006-12-29 |  |  |  |
| 59 | 1.1.1.1.11 | **Collaboration Management Activities** |  | 10d | 2006-12-14 A | 2006-12-28 A |  | 100% | 2006-12-14 | 2006-12-28 | 10d |  |  | 64h | 64h |
| 60 | 1.1.1.1.11.1 | Bi-Weekly AE SIG Meeting |  | 1d | 2006-12-14 A | 2006-12-14 A |  | 100% | 2006-12-14 | 2006-12-14 | 1d | start no earlier than 2006-12-14 | Edmond; Warren; Cal; Renee | 32h | 32h |
| 61 | 1.1.1.1.11.2 | Bi-Weekly AE SIG Meeting |  | 1d | 2006-12-28 A | 2006-12-28 A |  | 100% | 2006-12-28 | 2006-12-28 | 1d | start no earlier than 2006-12-28 | Edmond; Warren; Cal; Renee | 32h | 32h |
| 62 | 1.1.1.2 | **Set up Development Environment** |  | 7d | 2006-12-01 A | 2006-12-11 A |  | 100% | 2006-12-01 | 2006-12-11 | 7d |  |  | 144h | 144h |
| 63 | 1.1.1.2.1 | Set up SCM (Subversion) |  | 2d | 2006-12-01 A | 2006-12-04 A |  | 100% | 2006-12-01 | 2006-12-04 | 2d |  | Rhett; Vinay | 32h | 32h |
| 64 | 1.1.1.2.2 | Create Build Scripts (using Ant) |  | 3d | 2006-12-05 A | 2006-12-07 A | 63 | 100% | 2006-12-05 | 2006-12-07 | 3d |  | Rhett | 24h | 24h |
| 65 | 1.1.1.2.3 | Decide on Tech Stack |  | 2d | 2006-12-01 A | 2006-12-04 A |  | 100% | 2006-12-01 | 2006-12-04 | 2d |  | Rhett; Vinay; Joshua | 48h | 48h |
| 66 | 1.1.1.2.4 | Prepare Development Server |  | 5d | 2006-12-05 A | 2006-12-11 A | 65 | 100% | 2006-12-05 | 2006-12-11 | 5d |  | Vinay | 40h | 40h |
| 67 | 1.1.1.3 | **Requirements** |  | 20d | 2006-12-01 A | 2006-12-29 A |  | 100% | 2006-12-01 | 2006-12-29 | 20d |  |  | 1392h | 1392h |
| 68 | 1.1.1.3.1 | Review Existing R1 Prototype and Requirements |  | 5d | 2006-12-01 A | 2006-12-07 A |  | 100% | 2006-12-01 | 2006-12-07 | 5d |  | Vinay; Joshua; Rhett; Krikor; Padmaja; Sujith; Renee; David; Brenda; Natasha | 400h | 400h |
| 69 | 1.1.1.3.2 | Select Use Cases |  | 1d | 2006-12-08 A | 2006-12-08 A | 68 | 100% | 2006-12-08 | 2006-12-08 | 1d |  | Ram; Vinay | 16h | 16h |
| 70 | 1.1.1.3.3 | Assign Use Cases |  | 1d | 2006-12-11 A | 2006-12-11 A | 69 | 100% | 2006-12-11 | 2006-12-11 | 1d |  | Ram; Vinay | 16h | 16h |
| 71 | 1.1.1.3.4 | **Review and Update Use Case Documents (Task 2.1)** |  | 8d | 2006-12-12 A | 2006-12-21 A | 70 | 100% | 2006-12-12 | 2006-12-21 | 8d |  |  | 632h | 632h |
| 72 | 1.1.1.3.4.1 | **Create Study/Protocol** |  | 8d | 2006-12-12 A | 2006-12-21 A |  | 100% | 2006-12-12 | 2006-12-21 | 8d |  |  | 248h | 248h |
| 73 | 1.1.1.3.4.1.1 | Developer draft |  | 5d | 2006-12-12 A | 2006-12-18 A |  | 100% | 2006-12-12 | 2006-12-18 | 5d |  | Padmaja; Sujith; Renee; Dave | 160h | 160h |
| 74 | 1.1.1.3.4.1.2 | Adopters/Collaborators Review |  | 2d | 2006-12-19 A | 2006-12-20 A | 73 | 100% | 2006-12-19 | 2006-12-20 | 2d |  | Mayo; WF; AE_SIG; VCDE_WS; Arch_WS | 80h | 80h |
| 75 | 1.1.1.3.4.1.3 | Developers Update |  | 1d | 2006-12-21 A | 2006-12-21 A | 74 | 100% | 2006-12-21 | 2006-12-21 | 1d |  | John | 8h | 8h |
| 76 | 1.1.1.3.4.1.4 | Submit to BAH (Task 2.1) | milestone | 0d | 2006-12-21 A | 2006-12-21 A | 75 | 100% | 2006-12-21 | 2006-12-21 | 0d |  | Edmond |  |  |

| ID | WBS | Task | Type | Duration | Start | Finish | Predecessors | Complete | Remaining | Baseline start | Baseline finish | Baseline duration | Total slack | Resources | Work | Actual work |
| --- | --- | --- | --- | --- | --- | --- | --- | --- | --- | --- | --- | --- | --- | --- | --- | --- |
| 77 | 1.1.1.3.4.2 | **Create Participant** |  | 8d | 2006-12-12 A | 2006-12-21 A |  | 100% |  | 2006-12-12 | 2006-12-21 | 8d |  |  | 128h | 128h |
| 78 | 1.1.1.3.4.2.1 | Developer draft |  | 5d | 2006-12-12 A | 2006-12-18 A |  | 100% |  | 2006-12-12 | 2006-12-18 | 5d |  | Krikor | 40h | 40h |
| 79 | 1.1.1.3.4.2.2 | Adopters/Collaborators Review |  | 2d | 2006-12-19 A | 2006-12-20 A | 78 | 100% |  | 2006-12-19 | 2006-12-20 | 2d |  | Mayo; WF; AE_SIG; VCDE_WS; Arch_WS | 80h | 80h |
| 80 | 1.1.1.3.4.2.3 | Developers Update |  | 1d | 2006-12-21 A | 2006-12-21 A | 79 | 100% |  | 2006-12-21 | 2006-12-21 | 1d |  | John | 8h | 8h |
| 81 | 1.1.1.3.4.2.4 | Submit to BAH (Task 2.1) | milestone | 0d | 2006-12-21 A | 2006-12-21 A | 80 | 100% |  | 2006-12-21 | 2006-12-21 | 0d |  | Edmond |  |  |
| 82 | 1.1.1.3.4.3 | **Create AE** |  | 8d | 2006-12-12 A | 2006-12-21 A |  | 100% |  | 2006-12-12 | 2006-12-21 | 8d |  |  | 128h | 128h |
| 83 | 1.1.1.3.4.3.1 | Developer draft |  | 5d | 2006-12-12 A | 2006-12-18 A |  | 100% |  | 2006-12-12 | 2006-12-18 | 5d |  | Rhett | 40h | 40h |
| 84 | 1.1.1.3.4.3.2 | Adopters/Collaborators Review |  | 2d | 2006-12-19 A | 2006-12-20 A | 83 | 100% |  | 2006-12-19 | 2006-12-20 | 2d |  | Mayo; WF; AE_SIG; VCDE_WS; Arch_WS | 80h | 80h |
| 85 | 1.1.1.3.4.3.3 | Developers Update |  | 1d | 2006-12-21 A | 2006-12-21 A | 84 | 100% |  | 2006-12-21 | 2006-12-21 | 1d |  | John | 8h | 8h |
| 86 | 1.1.1.3.4.3.4 | Submit to BAH (Task 2.1) | milestone | 0d | 2006-12-21 A | 2006-12-21 A | 85 | 100% |  | 2006-12-21 | 2006-12-21 | 0d |  | Edmond |  |  |
| 87 | 1.1.1.3.4.4 | **Login** |  | 7d | 2006-12-12 A | 2006-12-20 A |  | 100% |  | 2006-12-12 | 2006-12-20 | 7d |  |  | 128h | 128h |
| 88 | 1.1.1.3.4.4.1 | Developer draft |  | 5d | 2006-12-12 A | 2006-12-18 A |  | 100% |  | 2006-12-12 | 2006-12-18 | 5d |  | Padmaja; Sujith | 80h | 80h |
| 89 | 1.1.1.3.4.4.2 | Adopters/Collaborators Review |  | 1d | 2006-12-19 A | 2006-12-19 A | 88 | 100% |  | 2006-12-19 | 2006-12-19 | 1d |  | Mayo; WF; AE_SIG; VCDE_WS; Arch_WS | 40h | 40h |
| 90 | 1.1.1.3.4.4.3 | Developers Update |  | 1d | 2006-12-20 A | 2006-12-20 A | 89 | 100% |  | 2006-12-20 | 2006-12-20 | 1d |  | John | 8h | 8h |
| 91 | 1.1.1.3.4.4.4 | Submit to BAH (Task 2.1) | milestone | 0d | 2006-12-20 A | 2006-12-20 A | 90 | 100% |  | 2006-12-20 | 2006-12-20 | 0d |  | Edmond |  |  |
| 92 | 1.1.1.3.5 | **SRS document (Task 2.2)** |  | 11d | 2006-12-14 A | 2006-12-29 A | 71SS+2d | 100% |  | 2006-12-14 | 2006-12-29 | 11d |  |  | 328h | 328h |
| 93 | 1.1.1.3.5.1 | Developer draft |  | 5d | 2006-12-14 A | 2006-12-20 A |  | 100% |  | 2006-12-14 | 2006-12-20 | 5d |  | John; Vinay; Rhett | 120h | 120h |
| 94 | 1.1.1.3.5.2 | Adopter review |  | 5d | 2006-12-21 A | 2006-12-28 A | 93 | 100% |  | 2006-12-21 | 2006-12-28 | 5d |  | Mayo; WF; AE_SIG; VCDE_WS; Arch_WS | 200h | 200h |
| 95 | 1.1.1.3.5.3 | Developer update |  | 1d | 2006-12-29 A | 2006-12-29 A | 94 | 100% |  | 2006-12-29 | 2006-12-29 | 1d |  | John | 8h | 8h |
| 96 | 1.1.1.3.5.4 | Deliver SRS document to BAH (Task 2.2) | milestone | 0d | 2006-12-29 A | 2006-12-29 A | 95 | 100% |  | 2006-12-29 | 2006-12-29 | 0d |  | Edmond |  |  |
| 97 | 1.1.1.4 | **Analysis and Design** |  | 10d | 2006-12-18 A | 2007-01-02 | 70SS+5d | 95% | 0.47d | 2006-12-18 | 2007-01-02 | 10d | 205d |  | 1488h | 1452h |
| 98 | 1.1.1.4.1 | **Design Documents (Task 2.4)** |  | 8d | 2006-12-18 A | 2006-12-28 A |  | 100% |  | 2006-12-18 | 2006-12-28 | 8d |  |  | 936h | 936h |
| 99 | 1.1.1.4.1.1 | **Create Study/Protocol Design Documents** |  | 8d | 2006-12-18 A | 2006-12-28 A |  | 100% |  | 2006-12-18 | 2006-12-28 | 8d |  |  | 256h | 256h |
| 100 | 1.1.1.4.1.1.1 | Develop appropriate UML Artifacts |  | 5d | 2006-12-18 A | 2006-12-22 A |  | 100% |  | 2006-12-18 | 2006-12-22 | 5d |  | Padmaja; Sujith | 80h | 80h |
| 101 | 1.1.1.4.1.1.2 | Developer draft |  | 5d | 2006-12-18 A | 2006-12-22 A |  | 100% |  | 2006-12-18 | 2006-12-22 | 5d |  | Padmaja; Sujith | 80h | 80h |
| 102 | 1.1.1.4.1.1.3 | Adopters/Collaborators Review |  | 2d | 2006-12-26 A | 2006-12-27 A | 101 | 100% |  | 2006-12-26 | 2006-12-27 | 2d |  | Mayo; WF; AE_SIG; VCDE_WS; Arch_WS | 80h | 80h |
| 103 | 1.1.1.4.1.1.4 | Developers Update |  | 1d | 2006-12-28 A | 2006-12-28 A | 102 | 100% |  | 2006-12-28 | 2006-12-28 | 1d |  | Padmaja; Sujith | 16h | 16h |
| 104 | 1.1.1.4.1.1.5 | Submit to BAH (Task 2.3 and 2.4) | milestone | 0d | 2006-12-28 A | 2006-12-28 A | 103 | 100% |  | 2006-12-28 | 2006-12-28 | 0d |  | Edmond |  |  |

| ID | WBS | Task | Type | Duration | Start | Finish | Predecessors | Complete | Baseline start | Baseline finish | Baseline duration | Resources | Work | Actual work |
| --- | --- | --- | --- | --- | --- | --- | --- | --- | --- | --- | --- | --- | --- | --- |
| 105 | 1.1.1.4.1.2 | **Create Participant Design Documents** |  | 8d | 2006-12-18 A | 2006-12-28 A |  | 100% | 2006-12-18 | 2006-12-28 | 8d |  | 168h | 168h |
| 106 | 1.1.1.4.1.2.1 | Develop appropriate UML Artifacts |  | 5d | 2006-12-18 A | 2006-12-22 A |  | 100% | 2006-12-18 | 2006-12-22 | 5d | Krikor | 40h | 40h |
| 107 | 1.1.1.4.1.2.2 | Developer draft |  | 5d | 2006-12-18 A | 2006-12-22 A |  | 100% | 2006-12-18 | 2006-12-22 | 5d | Krikor | 40h | 40h |
| 108 | 1.1.1.4.1.2.3 | Adopters/Collaborators Review |  | 2d | 2006-12-26 A | 2006-12-27 A | 107 | 100% | 2006-12-26 | 2006-12-27 | 2d | Mayo; WF; AE_SIG; VCDE_WS; Arch_WS | 80h | 80h |
| 109 | 1.1.1.4.1.2.4 | Developers Update |  | 1d | 2006-12-28 A | 2006-12-28 A | 108 | 100% | 2006-12-28 | 2006-12-28 | 1d | Krikor | 8h | 8h |
| 110 | 1.1.1.4.1.2.5 | Submit to BAH (Task 2.3 and 2.4) | milestone | 0d | 2006-12-28 A | 2006-12-28 A | 109 | 100% | 2006-12-28 | 2006-12-28 | 0d | Edmond |  |  |
| 111 | 1.1.1.4.1.3 | **Create AE Design Documents** |  | 8d | 2006-12-18 A | 2006-12-28 A |  | 100% | 2006-12-18 | 2006-12-28 | 8d |  | 168h | 168h |
| 112 | 1.1.1.4.1.3.1 | Develop appropriate UML Artifacts |  | 5d | 2006-12-18 A | 2006-12-22 A |  | 100% | 2006-12-18 | 2006-12-22 | 5d | Rhett | 40h | 40h |
| 113 | 1.1.1.4.1.3.2 | Developer draft |  | 5d | 2006-12-18 A | 2006-12-22 A |  | 100% | 2006-12-18 | 2006-12-22 | 5d | Rhett | 40h | 40h |
| 114 | 1.1.1.4.1.3.3 | Adopters/Collaborators Review |  | 2d | 2006-12-26 A | 2006-12-27 A | 113 | 100% | 2006-12-26 | 2006-12-27 | 2d | Mayo; WF; AE_SIG; VCDE_WS; Arch_WS | 80h | 80h |
| 115 | 1.1.1.4.1.3.4 | Developers Update |  | 1d | 2006-12-28 A | 2006-12-28 A | 114 | 100% | 2006-12-28 | 2006-12-28 | 1d | Rhett | 8h | 8h |
| 116 | 1.1.1.4.1.3.5 | Submit to BAH (Task 2.3 and 2.4) | milestone | 0d | 2006-12-28 A | 2006-12-28 A | 115 | 100% | 2006-12-28 | 2006-12-28 | 0d | Edmond |  |  |
| 117 | 1.1.1.4.1.4 | **Login Design Documents** |  | 8d | 2006-12-18 A | 2006-12-28 A |  | 100% | 2006-12-18 | 2006-12-28 | 8d |  | 216h | 216h |
| 118 | 1.1.1.4.1.4.1 | Develop appropriate UML Artifacts |  | 5d | 2006-12-18 A | 2006-12-22 A |  | 100% | 2006-12-18 | 2006-12-22 | 5d | Rhett | 40h | 40h |
| 119 | 1.1.1.4.1.4.2 | Developer draft |  | 5d | 2006-12-18 A | 2006-12-22 A |  | 100% | 2006-12-18 | 2006-12-22 | 5d | Padmaja; Sujith | 80h | 80h |
| 120 | 1.1.1.4.1.4.3 | Adopters/Collaborators Review |  | 2d | 2006-12-26 A | 2006-12-27 A | 119 | 100% | 2006-12-26 | 2006-12-27 | 2d | Mayo; WF; AE_SIG; VCDE_WS; Arch_WS | 80h | 80h |
| 121 | 1.1.1.4.1.4.4 | Developers Update |  | 1d | 2006-12-28 A | 2006-12-28 A | 120 | 100% | 2006-12-28 | 2006-12-28 | 1d | Padmaja; Sujith | 16h | 16h |
| 122 | 1.1.1.4.1.4.5 | Submit to BAH (Task 2.3 and 2.4) | milestone | 0d | 2006-12-28 A | 2006-12-28 A | 121 | 100% | 2006-12-28 | 2006-12-28 | 0d | Edmond |  |  |
| 123 | 1.1.1.4.1.5 | **UI/Mockups Design Documents** |  | 8d | 2006-12-18 A | 2006-12-28 A |  | 100% | 2006-12-18 | 2006-12-28 | 8d |  | 128h | 128h |
| 124 | 1.1.1.4.1.5.1 | Developer Draft |  | 5d | 2006-12-18 A | 2006-12-22 A |  | 100% | 2006-12-18 | 2006-12-22 | 5d | Richard | 40h | 40h |
| 125 | 1.1.1.4.1.5.2 | Adopters/Collaborators Review |  | 2d | 2006-12-26 A | 2006-12-27 A | 124 | 100% | 2006-12-26 | 2006-12-27 | 2d | Mayo; WF; AE_SIG; VCDE_WS; Arch_WS | 80h | 80h |
| 126 | 1.1.1.4.1.5.3 | Developers Update |  | 1d | 2006-12-28 A | 2006-12-28 A | 125 | 100% | 2006-12-28 | 2006-12-28 | 1d | Richard | 8h | 8h |
| 127 | 1.1.1.4.1.5.4 | Submit to BAH (Task 2.4) | milestone | 0d | 2006-12-28 A | 2006-12-28 A | 126 | 100% | 2006-12-28 | 2006-12-28 | 0d | Edmond |  |  |
| 128 | 1.1.1.4.2 | **ESB** |  | 7d | 2006-12-18 A | 2006-12-27 A |  | 100% | 2006-12-18 | 2006-12-27 | 7d |  | 112h | 112h |
| 129 | 1.1.1.4.2.1 | Evalutate technologies by prototyping |  | 7d | 2006-12-18 A | 2006-12-27 A |  | 100% | 2006-12-18 | 2006-12-27 | 7d | Vinay; Joshua | 112h | 112h |

| ID | WBS | Task | Duration | Start | Finish | Predecessors | Complete | Remaining | Baseline start | Baseline finish | Baseline duration | Total slack | Free slack | Resources | Work | Actual work |
| --- | --- | --- | --- | --- | --- | --- | --- | --- | --- | --- | --- | --- | --- | --- | --- | --- |
| 130 | 1.1.1.4.3 | **Grid service** | 7d | 2006-12-18 A | 2006-12-27 A |  | 100% |  | 2006-12-18 | 2006-12-27 | 7d |  |  |  | 112h | 112h |
| 131 | 1.1.1.4.3.1 | Evaluate caGrid 1.0 service infrastructure | 7d | 2006-12-18 A | 2006-12-27 A |  | 100% |  | 2006-12-18 | 2006-12-27 | 7d |  |  | Vinay; Joshua | 112h | 112h |
| 132 | 1.1.1.4.4 | **Database** | 3d | 2006-12-18 A | 2006-12-20 A |  | 100% |  | 2006-12-18 | 2006-12-20 | 3d |  |  |  | 96h | 96h |
| 133 | 1.1.1.4.4.1 | First draft of database structure | 3d | 2006-12-18 A | 2006-12-20 A |  | 100% |  | 2006-12-18 | 2006-12-20 | 3d |  |  | Rhett; Padmaja; Sujith; Krikor | 96h | 96h |
| 134 | 1.1.1.4.5 | **Domain model** | 9d | 2006-12-18 A | 2006-12-29 |  | 50% | 4.5d | 2006-12-18 | 2006-12-29 | 9d | 206d |  |  | 72h | 36h |
| 135 | 1.1.1.4.5.1 | Create model harmonized with BRIDG | 5d | 2006-12-18 A | 2006-12-22 |  | 50% | 2.5d | 2006-12-18 | 2006-12-22 | 5d | 208d | 0d | John | 40h | 20h |
| 136 | 1.1.1.4.5.2 | Create first draft of model | 4d | 2006-12-26 A | 2006-12-29 | 135 | 50% | 2d | 2006-12-26 | 2006-12-29 | 4d | 206d |  | John | 32h | 16h |
| 137 | 1.1.1.4.6 | **Security** | 10d | 2006-12-18 A | 2007-01-02 A |  | 100% |  | 2006-12-18 | 2007-01-02 | 10d |  |  |  | 160h | 160h |
| 138 | 1.1.1.4.6.1 | Evaluate caGrid 1.0 security infrastructure | 10d | 2006-12-18 A | 2007-01-02 A | 70 | 100% |  | 2006-12-18 | 2007-01-02 | 10d |  |  | Vinay; Joshua | 160h | 160h |
| 139 | 1.1.1.5 | **Implementation** | 5d | 2006-12-19 A | 2006-12-26 A | 97SS+1d | 100% |  | 2006-12-19 | 2006-12-26 | 5d |  |  |  | 1280h | 1280h |
| 140 | 1.1.1.5.1 | **Enterprise Service Bus** | 5d | 2006-12-19 A | 2006-12-26 A |  | 100% |  | 2006-12-19 | 2006-12-26 | 5d |  |  |  | 80h | 80h |
| 141 | 1.1.1.5.1.1 | Setup initial project | 5d | 2006-12-19 A | 2006-12-26 A |  | 100% |  | 2006-12-19 | 2006-12-26 | 5d |  |  | Vinay; Joshua | 80h | 80h |
| 142 | 1.1.1.5.2 | **Grid service** | 5d | 2006-12-19 A | 2006-12-26 A |  | 100% |  | 2006-12-19 | 2006-12-26 | 5d |  |  |  | 80h | 80h |
| 143 | 1.1.1.5.2.1 | Create grid service skeleton | 5d | 2006-12-19 A | 2006-12-26 A |  | 100% |  | 2006-12-19 | 2006-12-26 | 5d |  |  | Vinay; Joshua | 80h | 80h |
| 144 | 1.1.1.5.3 | **Create Study/Protocol** | 5d | 2006-12-19 A | 2006-12-26 A |  | 100% |  | 2006-12-19 | 2006-12-26 | 5d |  |  |  | 640h | 640h |
| 145 | 1.1.1.5.3.1 | Implement O/R mapping | 5d | 2006-12-19 A | 2006-12-26 A |  | 100% |  | 2006-12-19 | 2006-12-26 | 5d |  |  | Padmaja; Sujith | 80h | 80h |
| 146 | 1.1.1.5.3.2 | Develop StudyDAO | 5d | 2006-12-19 A | 2006-12-26 A |  | 100% |  | 2006-12-19 | 2006-12-26 | 5d |  |  | Padmaja; Sujith | 80h | 80h |
| 147 | 1.1.1.5.3.3 | Develop StudyService | 5d | 2006-12-19 A | 2006-12-26 A |  | 100% |  | 2006-12-19 | 2006-12-26 | 5d |  |  | Padmaja; Sujith | 80h | 80h |
| 148 | 1.1.1.5.3.4 | Develop controller and command objects | 5d | 2006-12-19 A | 2006-12-26 A |  | 100% |  | 2006-12-19 | 2006-12-26 | 5d |  |  | Padmaja; Sujith | 80h | 80h |
| 149 | 1.1.1.5.3.5 | Develop UI | 5d | 2006-12-19 A | 2006-12-26 A |  | 100% |  | 2006-12-19 | 2006-12-26 | 5d |  |  | Padmaja; Sujith | 80h | 80h |
| 150 | 1.1.1.5.3.6 | Develop JUnit test cases | 5d | 2006-12-19 A | 2006-12-26 A |  | 100% |  | 2006-12-19 | 2006-12-26 | 5d |  |  | Padmaja; Sujith | 80h | 80h |
| 151 | 1.1.1.5.3.7 | Develop | 5d | 2006-12-19 A | 2006-12-26 A |  | 100% |  | 2006-12-19 | 2006-12-26 | 5d |  |  | Padmaja; Sujith | 80h | 80h |
| 152 | 1.1.1.5.3.8 | Login | 5d | 2006-12-19 A | 2006-12-26 A |  | 100% |  | 2006-12-19 | 2006-12-26 | 5d |  |  | Padmaja; Sujith | 80h | 80h |
| 153 | 1.1.1.5.4 | **Create Participant** | 5d | 2006-12-19 A | 2006-12-26 A |  | 100% |  | 2006-12-19 | 2006-12-26 | 5d |  |  |  | 240h | 240h |
| 154 | 1.1.1.5.4.1 | Implement O/R mapping | 5d | 2006-12-19 A | 2006-12-26 A |  | 100% |  | 2006-12-19 | 2006-12-26 | 5d |  |  | Krikor | 40h | 40h |
| 155 | 1.1.1.5.4.2 | Develop ParticipantDAO | 5d | 2006-12-19 A | 2006-12-26 A |  | 100% |  | 2006-12-19 | 2006-12-26 | 5d |  |  | Krikor | 40h | 40h |
| 156 | 1.1.1.5.4.3 | Develop ParticipantService | 5d | 2006-12-19 A | 2006-12-26 A |  | 100% |  | 2006-12-19 | 2006-12-26 | 5d |  |  | Krikor | 40h | 40h |
| 157 | 1.1.1.5.4.4 | Develop controller and command objects | 5d | 2006-12-19 A | 2006-12-26 A |  | 100% |  | 2006-12-19 | 2006-12-26 | 5d |  |  | Krikor | 40h | 40h |
| 158 | 1.1.1.5.4.5 | Develop UI | 5d | 2006-12-19 A | 2006-12-26 A |  | 100% |  | 2006-12-19 | 2006-12-26 | 5d |  |  | Krikor | 40h | 40h |
| 159 | 1.1.1.5.4.6 | Develop JUnit test cases | 5d | 2006-12-19 A | 2006-12-26 A |  | 100% |  | 2006-12-19 | 2006-12-26 | 5d |  |  | Krikor | 40h | 40h |

| ID | WBS | Task | Type | Duration | Start | Finish | Predecessors | Complete | Remaining | Baseline start | Baseline finish | Baseline duration | Total slack | Free slack | Constraint | Resources | Work | Actual work |
| --- | --- | --- | --- | --- | --- | --- | --- | --- | --- | --- | --- | --- | --- | --- | --- | --- | --- | --- |
| 160 | 1.1.1.5.5 | **Create AE** |  | 5d | 2006-12-19 A | 2006-12-26 A |  | 100% |  | 2006-12-19 | 2006-12-26 | 5d |  |  |  |  | 240h | 240h |
| 161 | 1.1.1.5.5.1 | Implement O/R mapping |  | 5d | 2006-12-19 A | 2006-12-26 A |  | 100% |  | 2006-12-19 | 2006-12-26 | 5d |  |  |  | Rhett | 40h | 40h |
| 162 | 1.1.1.5.5.2 | Develop AdverseEventDAO |  | 5d | 2006-12-19 A | 2006-12-26 A |  | 100% |  | 2006-12-19 | 2006-12-26 | 5d |  |  |  | Rhett | 40h | 40h |
| 163 | 1.1.1.5.5.3 | Develop AdverseEventService |  | 5d | 2006-12-19 A | 2006-12-26 A |  | 100% |  | 2006-12-19 | 2006-12-26 | 5d |  |  |  | Rhett | 40h | 40h |
| 164 | 1.1.1.5.5.4 | Develop controller and command objects |  | 5d | 2006-12-19 A | 2006-12-26 A |  | 100% |  | 2006-12-19 | 2006-12-26 | 5d |  |  |  | Rhett | 40h | 40h |
| 165 | 1.1.1.5.5.5 | Develop UI |  | 5d | 2006-12-19 A | 2006-12-26 A |  | 100% |  | 2006-12-19 | 2006-12-26 | 5d |  |  |  | Rhett | 40h | 40h |
| 166 | 1.1.1.5.5.6 | Develop JUnit test cases |  | 5d | 2006-12-19 A | 2006-12-26 A |  | 100% |  | 2006-12-19 | 2006-12-26 | 5d |  |  |  | Rhett | 40h | 40h |
| 167 | 1.1.1.6 | **Testing** |  | 8d | 2006-12-19 A | 2006-12-29 |  | 22% | 6.25d | 2006-12-19 | 2006-12-29 | 8d | 206d |  |  |  | 1080.24h | 242.06h |
| 168 | 1.1.1.6.1 | **Create Functional Tests** |  | 6d | 2006-12-19 A | 2006-12-27 | 71SS+5d | 25% | 4.5d | 2006-12-19 | 2006-12-27 | 6d | 208d |  |  |  | 968.24h | 242.06h |
| 169 | 1.1.1.6.1.1 | Create Study |  | 5d | 2006-12-19 A | 2006-12-26 |  | 25% | 3.75d | 2006-12-19 | 2006-12-26 | 5d | 209d |  |  | Renee; David; Brenda; Natasha; Mayo; WF | 240.24h | 60.06h |
| 170 | 1.1.1.6.1.2 | Create Participant |  | 5d | 2006-12-19 A | 2006-12-26 |  | 25% | 3.75d | 2006-12-19 | 2006-12-26 | 5d | 209d |  |  | Renee; David; Brenda; Natasha; Mayo; WF | 240h | 60h |
| 171 | 1.1.1.6.1.3 | Login |  | 5d | 2006-12-19 A | 2006-12-26 |  | 25% | 3.75d | 2006-12-19 | 2006-12-26 | 5d | 209d |  |  | Renee; David; Brenda; Natasha; Mayo; WF | 240h | 60h |
| 172 | 1.1.1.6.1.4 | Create AE |  | 5d | 2006-12-19 A | 2006-12-26 |  | 25% | 3.75d | 2006-12-19 | 2006-12-26 | 5d | 208.25d | 0d |  | Renee; David; Brenda; Natasha; Mayo; WF | 240h | 60h |
| 173 | 1.1.1.6.1.5 | RTM |  | 1d | 2006-12-27 A | 2006-12-27 | 172, 93 | 25% | 0.75d | 2006-12-27 | 2006-12-27 | 1d | 208d |  |  | John | 8h | 2h |
| 174 | 1.1.1.6.2 | **Final Tests of Iteration** |  | 3d | 2006-12-27 | 2006-12-29 |  |  |  | 2006-12-27 | 2006-12-29 | 3d | 201.51d |  |  |  | 112h |  |
| 175 | 1.1.1.6.2.1 | Deploy Prototype (Task 2.5) |  | 1d | 2006-12-27 | 2006-12-27 | 139 |  |  | 2006-12-27 | 2006-12-27 | 1d | 201.51d | 0d |  | Joshua; Rhett | 16h |  |
| 176 | 1.1.1.6.2.2 | Validation and Acceptance Testing |  | 2d | 2006-12-28 | 2006-12-29 | 175 |  |  | 2006-12-28 | 2006-12-29 | 2d | 201.51d | 0d |  | Renee; David; Brenda; Natasha; Mayo; WF | 96h |  |
| 177 | 1.1.1.6.2.3 | Submit Test Results Report (Task 2.7) | milestone | 0d | 2006-12-29 | 2006-12-29 | 176 |  |  | 2006-12-29 | 2006-12-29 | 0d | 201.51d | 0d |  |  |  |  |
| 178 | 1.1.2 | **Iteration 2** |  | 46d | 2006-12-18 A | 2007-02-21 | 177 | 90% | 4.49d | 2007-01-02 | 2007-02-01 | 23d | 169d |  |  |  | 5072h | 4516h |
| 179 | 1.1.2.1 | Start Iteration 2 | milestone | 0d | 2007-01-02 | 2007-01-02 |  |  |  |  |  |  | 205.73d | 0d | start no earlier than 2007-01-02 |  |  |  |
| 180 | 1.1.2.2 | **Project Management** |  | 43d | 2006-12-18 A | 2007-02-16 | 179SS | 99% | 0.27d | 2007-01-02 | 2007-02-01 | 23d | 172d |  |  |  | 1088h | 1084h |
| 181 | 1.1.2.2.1 | Update Project Plan |  | 5d | 2007-01-02 A | 2007-01-08 A |  | 100% |  | 2007-01-02 | 2007-01-08 | 5d |  |  |  | Edmond | 40h | 40h |
| 182 | 1.1.2.2.2 | **Detailed Construction and Transition Plan** |  | 20d | 2007-01-22 A | 2007-02-16 A |  | 100% |  | 2007-01-22 | 2007-02-01 | 9d |  |  |  |  | 480h | 480h |
| 183 | 1.1.2.2.2.1 | Prepare Detailed Plan for Construction and Transition Phases |  | 5d | 2007-01-22 A | 2007-01-26 A |  | 100% |  | 2007-01-22 | 2007-01-26 | 5d |  |  | start no earlier than 2007-01-22 | Edmond; Ram; Vinay; Warren; Cal | 200h | 200h |
| 184 | 1.1.2.2.2.2 | Deliver Plan to BAH (Task 2.9) | milestone | 0d | 2007-01-26 A | 2007-01-26 A | 183 | 100% |  | 2007-02-01 | 2007-02-01 | 0d |  |  |  | Edmond |  |  |
| 185 | 1.1.2.2.2.3 | Adopter Review |  | 10d | 2007-01-29 A | 2007-02-09 A | 184 | 100% |  |  |  |  |  |  |  | Mayo; WF | 160h | 160h |
| 186 | 1.1.2.2.2.4 | Formal Review by BAH |  | 15d | 2007-01-29 A | 2007-02-16 A | 184 | 100% |  |  |  |  |  |  |  | BAH | 120h | 120h |

| ID | WBS | Task | Type | Duration | Start | Finish | Predecessors | Complete | Remaining | Baseline start | Baseline finish | Baseline duration | Total slack | Constraint | Resources | Work | Actual work |
| --- | --- | --- | --- | --- | --- | --- | --- | --- | --- | --- | --- | --- | --- | --- | --- | --- | --- |
| 187 | 1.1.2.2.3 | **Change Control Board Plan and Charter (Task 2.10)** |  | 32.75d | 2006-12-18 A | 2007-02-02 A |  | 100% |  | 2006-12-18 | 2007-01-03 | 11d |  |  |  | 400h | 400h |
| 188 | 1.1.2.2.3.1 | Prepare CCB Charter |  | 10d | 2006-12-18 A | 2007-01-12 A |  | 100% |  | 2006-12-18 | 2006-12-22 | 5d |  | start no earlier than 2006-12-18 | Edmond | 80h | 80h |
| 189 | 1.1.2.2.3.2 | Submit to BAH | milestone | 0d | 2007-01-12 A | 2007-01-12 A | 188 | 100% |  | 2007-01-03 | 2007-01-03 | 0d |  |  | Edmond |  |  |
| 190 | 1.1.2.2.3.3 | Adopters/Collobators Review |  | 5d | 2007-01-12 A | 2007-01-19 A | 189 | 100% |  | 2006-12-26 | 2007-01-02 | 5d |  |  | Mayo; WF; AE_SIG; VCDE_WS; Arch_WS | 200h | 200h |
| 191 | 1.1.2.2.3.4 | Formal Review by BAH |  | 15d | 2007-01-12 A | 2007-02-02 A | 189 | 100% |  |  |  |  |  |  | BAH | 120h | 120h |
| 192 | 1.1.2.2.4 | **Weekly Team/Developers Meeting** |  | 16d | 2007-01-08 A | 2007-01-29 A |  | 100% |  | 2007-01-08 | 2007-01-29 | 16d |  |  |  | 96h | 96h |
| 193 | 1.1.2.2.4.1 | Weekly Team Meeting 1 |  | 1d | 2007-01-08 A | 2007-01-08 A |  | 100% |  | 2007-01-08 | 2007-01-08 | 1d |  | start no earlier than 2007-01-08 | Edmond; Vinay; Functional Team Lead | 24h | 24h |
| 194 | 1.1.2.2.4.2 | Weekly Team Meeting 2 |  | 1d | 2007-01-15 A | 2007-01-15 A |  | 100% |  | 2007-01-15 | 2007-01-15 | 1d |  | start no earlier than 2007-01-15 | Edmond; Vinay; Functional Team Lead | 24h | 24h |
| 195 | 1.1.2.2.4.3 | Weekly Team Meeting 3 |  | 1d | 2007-01-22 A | 2007-01-22 A |  | 100% |  | 2007-01-22 | 2007-01-22 | 1d |  | start no earlier than 2007-01-22 | Edmond; Vinay; Functional Team Lead | 24h | 24h |
| 196 | 1.1.2.2.4.4 | Weekly Team Meeting 4 |  | 1d | 2007-01-29 A | 2007-01-29 A |  | 100% |  | 2007-01-29 | 2007-01-29 | 1d |  | start no earlier than 2007-01-29 | Edmond; Vinay; Functional Team Lead | 24h | 24h |
| 197 | 1.1.2.2.5 | **Status and Risk Reporting** |  | 14d | 2007-01-12 A | 2007-01-31 |  | 93% | 1d | 2007-01-12 | 2007-01-31 | 14d | 184d |  |  | 72h | 68h |
| 198 | 1.1.2.2.5.1 | Bi-weekly Risk Update in caMP (Task 1.4) |  | 1d | 2007-01-12 A | 2007-01-12 A |  | 100% |  | 2007-01-12 | 2007-01-12 | 1d |  | start no earlier than 2007-01-12 | Edmond | 8h | 8h |
| 199 | 1.1.2.2.5.2 | Bi-weekly Risk Matrix Update Meeting |  | 1d | 2007-01-12 A | 2007-01-12 A |  | 100% |  | 2007-01-12 | 2007-01-12 | 1d |  | start no earlier than 2007-01-12 | Edmond | 8h | 8h |
| 200 | 1.1.2.2.5.3 | Bi-weekly Risk Update in caMP (Task 1.4) |  | 1d | 2007-01-26 A | 2007-01-26 A |  | 100% |  | 2007-01-26 | 2007-01-26 | 1d |  | start no earlier than 2007-01-26 | Edmond | 8h | 8h |
| 201 | 1.1.2.2.5.4 | Bi-weekly Status Update Meeting with BAH/NCI |  | 1d | 2007-01-26 A | 2007-01-26 A |  | 100% |  | 2007-01-26 | 2007-01-26 | 1d |  | start no earlier than 2007-01-26 | Edmond; Ram; Vinay | 24h | 24h |
| 202 | 1.1.2.2.5.5 | Monthly Status Report (Task 1.3) |  | 1d | 2007-01-31 A | 2007-01-31 A |  | 100% |  | 2007-01-31 | 2007-01-31 | 1d |  | start no earlier than 2007-01-31 | Edmond | 8h | 8h |
| 203 | 1.1.2.2.5.6 | Monthly Risk Matrix Update (Task 1.3) |  | 1d | 2007-01-31 A | 2007-01-31 A |  | 100% |  | 2007-01-31 | 2007-01-31 | 1d |  | start no earlier than 2007-01-31 | Edmond | 8h | 8h |
| 204 | 1.1.2.2.5.7 | Adopters Collaboration Report (Task 1.7) |  | 1d | 2007-01-31 A | 2007-01-31 |  | 50% | 0.5d | 2007-01-31 | 2007-01-31 | 1d | 184d | start no earlier than 2007-01-31 | Edmond | 8h | 4h |
| 205 | 1.1.2.2.6 | **Collaboration Management Activities** |  | 11d | 2007-01-11 A | 2007-01-25 A |  | 100% |  | 2007-01-11 | 2007-01-25 | 11d |  |  |  |  |  |
| 206 | 1.1.2.2.6.1 | Bi-Weekly AE SIG Meeting |  | 1d | 2007-01-11 A | 2007-01-11 A |  | 100% |  | 2007-01-11 | 2007-01-11 | 1d |  | start no earlier than 2007-01-11 |  |  |  |
| 207 | 1.1.2.2.6.2 | Adopters Mtg |  | 1d | 2007-01-18 A | 2007-01-18 A |  | 100% |  |  |  |  |  | start no earlier than 2007-01-18 |  |  |  |
| 208 | 1.1.2.2.6.3 | Bi-Weekly AE SIG Meeting |  | 1d | 2007-01-25 A | 2007-01-25 A |  | 100% |  | 2007-01-25 | 2007-01-25 | 1d |  | start no earlier than 2007-01-25 |  |  |  |
| 209 | 1.1.2.3 | **Requirements** |  | 32d | 2007-01-02 A | 2007-02-14 A |  | 100% |  | 2007-01-02 | 2007-01-23 | 16d |  |  |  | 1088h | 1088h |
| 210 | 1.1.2.3.1 | Face-to-Face Meeting |  | 2d | 2007-01-04 A | 2007-01-05 A |  | 100% |  | 2007-01-04 | 2007-01-05 | 2d |  | must start on 2007-01-04 | Ram; Vinay; Warren; Cal; Renee; David; John; Rhett; Joshua | 144h | 144h |
| 211 | 1.1.2.3.2 | F2F Meeting Notes (Task 1.5) |  | 2d | 2007-01-08 A | 2007-01-09 A | 210 | 100% |  | 2007-01-08 | 2007-01-09 | 2d |  |  | Edmond | 16h | 16h |
| 212 | 1.1.2.3.3 | Use Case Selection |  | 2d | 2007-01-02 A | 2007-01-03 A |  | 100% |  | 2007-01-02 | 2007-01-03 | 2d |  |  | Ram; Vinay; Warren; Cal | 64h | 64h |
| 213 | 1.1.2.3.4 | Use Case Assignments for Iteration 2 |  | 1d | 2007-01-04 A | 2007-01-04 A | 212 | 100% |  | 2007-01-04 | 2007-01-04 | 1d |  |  | Vinay | 8h | 8h |

| ID | WBS | Task | Type | Duration | Start | Finish | Predecessors | Complete | Remaining | Baseline start | Baseline finish | Baseline duration | Total slack | Resources | Work | Actual work |
| --- | --- | --- | --- | --- | --- | --- | --- | --- | --- | --- | --- | --- | --- | --- | --- | --- |
| 214 | 1.1.2.3.5 | **Use Case Specification and Realization (Task 2.1)** |  | 17d | 2007-01-02 A | 2007-01-24 A |  | 100% |  | 2007-01-05 | 2007-01-12 | 6d |  |  | 600h | 600h |
| 215 | 1.1.2.3.5.1 | **Protocol Abstraction** |  | 14d | 2007-01-02 A | 2007-01-19 A |  | 100% |  |  |  |  |  |  | 192h | 192h |
| 216 | 1.1.2.3.5.1.1 | Developer draft |  | 5d | 2007-01-02 A | 2007-01-08 A |  | 100% |  |  |  |  |  | Sean; Krikor | 80h | 80h |
| 217 | 1.1.2.3.5.1.2 | Adopters/Collobators Review |  | 5d | 2007-01-09 A | 2007-01-15 A | 216 | 100% |  |  |  |  |  | Mayo; WF | 80h | 80h |
| 218 | 1.1.2.3.5.1.3 | Developer Update |  | 4d | 2007-01-16 A | 2007-01-19 A | 217 | 100% |  |  |  |  |  | Sean | 32h | 32h |
| 219 | 1.1.2.3.5.2 | **AE Data Collection** |  | 14d | 2007-01-02 A | 2007-01-19 A |  | 100% |  |  |  |  |  |  | 192h | 192h |
| 220 | 1.1.2.3.5.2.1 | Developer draft |  | 5d | 2007-01-02 A | 2007-01-08 A |  | 100% |  |  |  |  |  | Sean; Rhett | 80h | 80h |
| 221 | 1.1.2.3.5.2.2 | Adopters/Collobators Review |  | 5d | 2007-01-09 A | 2007-01-15 A | 220 | 100% |  |  |  |  |  | Mayo; WF | 80h | 80h |
| 222 | 1.1.2.3.5.2.3 | Developer Update |  | 4d | 2007-01-16 A | 2007-01-19 A | 221 | 100% |  |  |  |  |  | Sean | 32h | 32h |
| 223 | 1.1.2.3.5.3 | **Triggers/Notification** |  | 14d | 2007-01-02 A | 2007-01-19 A |  | 100% |  |  |  |  |  |  | 192h | 192h |
| 224 | 1.1.2.3.5.3.1 | Developer draft |  | 5d | 2007-01-02 A | 2007-01-08 A |  | 100% |  |  |  |  |  | Sean; Rhett | 80h | 80h |
| 225 | 1.1.2.3.5.3.2 | Adopters/Collobators Review |  | 5d | 2007-01-09 A | 2007-01-15 A | 224 | 100% |  |  |  |  |  | Mayo; WF | 80h | 80h |
| 226 | 1.1.2.3.5.3.3 | Developer Update |  | 4d | 2007-01-16 A | 2007-01-19 A | 225 | 100% |  |  |  |  |  | Sean | 32h | 32h |
| 227 | 1.1.2.3.5.4 | Update Use Case Document |  | 3d | 2007-01-22 A | 2007-01-24 A | 218, 222, 226 | 100% |  |  |  |  |  | Sean | 24h | 24h |
| 228 | 1.1.2.3.5.5 | Submit Updated Use Case Document to BAH (Task 2.1) | milestone | 0d | 2007-01-24 A | 2007-01-24 A | 227 | 100% |  |  |  |  |  |  |  |  |
| 229 | 1.1.2.3.6 | **SRS document (Task 2.2)** |  | 32d | 2007-01-02 A | 2007-02-14 A |  | 100% |  | 2007-01-09 | 2007-01-23 | 11d |  |  | 256h | 256h |
| 230 | 1.1.2.3.6.1 | Developer draft |  | 5d | 2007-01-02 A | 2007-01-08 A |  | 100% |  | 2007-01-09 | 2007-01-15 | 5d |  | Sean | 40h | 40h |
| 231 | 1.1.2.3.6.2 | Adopter review |  | 5d | 2007-01-09 A | 2007-01-15 A | 230 | 100% |  | 2007-01-16 | 2007-01-22 | 5d |  | Sean | 40h | 40h |
| 232 | 1.1.2.3.6.3 | Developer update |  | 7d | 2007-01-16 A | 2007-01-24 A | 231 | 100% |  | 2007-01-23 | 2007-01-23 | 1d |  | Sean | 56h | 56h |
| 233 | 1.1.2.3.6.4 | Deliver SRS document to BAH (Task 2.2) | milestone | 0d | 2007-01-24 A | 2007-01-24 A | 232 | 100% |  | 2007-01-23 | 2007-01-23 | 0d |  | Sean |  |  |
| 234 | 1.1.2.3.6.5 | Formal Review by BAH |  | 15d | 2007-01-25 A | 2007-02-14 A | 233 | 100% |  |  |  |  |  | BAH | 120h | 120h |
| 235 | 1.1.2.4 | **Analysis and Design** |  | 37d | 2007-01-02 A | 2007-02-21 |  | 50% | 18.4d | 2007-01-12 | 2007-01-26 | 11d | 169d |  | 968h | 416h |
| 236 | 1.1.2.4.1 | **Design Documents** |  | 28d | 2007-01-09 A | 2007-02-15 | 214SS+5d | 72% | 7.78d | 2007-01-12 | 2007-01-23 | 8d | 173d |  | 432h | 312h |
| 237 | 1.1.2.4.1.1 | **Protocol Abstraction** |  | 13d | 2007-01-09 A | 2007-01-25 A |  | 100% |  |  |  |  |  |  | 104h | 104h |
| 238 | 1.1.2.4.1.1.1 | Develop appropriate UML Artifacts |  | 5d | 2007-01-09 A | 2007-01-15 A |  | 100% |  |  |  |  |  | Krikor | 40h | 40h |
| 239 | 1.1.2.4.1.1.2 | Create Design Document |  | 5d | 2007-01-16 A | 2007-01-22 A | 238 | 100% |  |  |  |  |  | Krikor | 40h | 40h |
| 240 | 1.1.2.4.1.1.3 | Adopters/Collaborators Review |  | 2d | 2007-01-23 A | 2007-01-24 A | 239 | 100% |  |  |  |  |  | Krikor | 16h | 16h |
| 241 | 1.1.2.4.1.1.4 | Developers Update |  | 1d | 2007-01-25 A | 2007-01-25 A | 240 | 100% |  |  |  |  |  | Krikor | 8h | 8h |

| ID | WBS | Task | Type | Duration | Start | Finish | Predecessors | Complete | Remaining | Baseline start | Baseline finish | Baseline duration | Total slack | Free slack | Resources | Work | Actual work |
| --- | --- | --- | --- | --- | --- | --- | --- | --- | --- | --- | --- | --- | --- | --- | --- | --- | --- |
| 242 | 1.1.2.4.1.2 | **AE Data Collection** |  | 13d | 2007-01-09 A | 2007-01-25 A |  | 100% |  |  |  |  |  |  |  | 104h | 104h |
| 243 | 1.1.2.4.1.2.1 | Develop appropriate UML Artifacts |  | 5d | 2007-01-09 A | 2007-01-15 A |  | 100% |  |  |  |  |  |  | Rhett | 40h | 40h |
| 244 | 1.1.2.4.1.2.2 | Create Design Document |  | 5d | 2007-01-16 A | 2007-01-22 A | 243 | 100% |  |  |  |  |  |  | Rhett | 40h | 40h |
| 245 | 1.1.2.4.1.2.3 | Adopters/Collaborators Review |  | 2d | 2007-01-23 A | 2007-01-24 A | 244 | 100% |  |  |  |  |  |  | Rhett | 16h | 16h |
| 246 | 1.1.2.4.1.2.4 | Developers Update |  | 1d | 2007-01-25 A | 2007-01-25 A | 245 | 100% |  |  |  |  |  |  | Rhett | 8h | 8h |
| 247 | 1.1.2.4.1.3 | **Triggers/Notification** |  | 13d | 2007-01-09 A | 2007-01-25 A |  | 100% |  |  |  |  |  |  |  | 104h | 104h |
| 248 | 1.1.2.4.1.3.1 | Develop appropriate UML Artifacts |  | 5d | 2007-01-09 A | 2007-01-15 A |  | 100% |  |  |  |  |  |  | Sujith | 40h | 40h |
| 249 | 1.1.2.4.1.3.2 | Create Design Document |  | 5d | 2007-01-16 A | 2007-01-22 A | 248 | 100% |  |  |  |  |  |  | Sujith | 40h | 40h |
| 250 | 1.1.2.4.1.3.3 | Adopters/Collaborators Review |  | 2d | 2007-01-23 A | 2007-01-24 A | 249 | 100% |  |  |  |  |  |  | Sujith | 16h | 16h |
| 251 | 1.1.2.4.1.3.4 | Developers Update |  | 1d | 2007-01-25 A | 2007-01-25 A | 250 | 100% |  |  |  |  |  |  | Sujith | 8h | 8h |
| 252 | 1.1.2.4.1.4 | Deliver Design document to BAH (Task 2.2) | milestone | 0d | 2007-01-25 | 2007-01-25 | 241, 246, 251 |  |  | 2007-01-23 | 2007-01-23 | 0d | 188d |  | Edmond |  |  |
| 253 | 1.1.2.4.1.5 | Deliver UML to BAH (Task 2.3) | milestone | 0d | 2007-01-25 | 2007-01-25 | 241, 246, 251 |  |  |  |  |  | 173d | 0d | Edmond |  |  |
| 254 | 1.1.2.4.1.6 | Formal Review by BAH |  | 15d | 2007-01-26 | 2007-02-15 | 253 |  |  |  |  |  | 173d |  | BAH | 120h |  |
| 255 | 1.1.2.4.2 | **Domain Model** |  | 3d | 2007-01-02 A | 2007-01-04 |  | 75% | 0.75d |  |  |  | 203d |  |  | 24h | 18h |
| 256 | 1.1.2.4.2.1 | Update Model/BRIDG Harmonization |  | 3d | 2007-01-02 A | 2007-01-04 |  | 75% | 0.75d |  |  |  | 203d |  | Ram | 24h | 18h |
| 257 | 1.1.2.4.3 | **Technical/Architecture Guide** |  | 32d | 2007-01-09 A | 2007-02-21 |  | 11% | 28.5d | 2007-01-12 | 2007-01-26 | 11d | 169d |  |  | 512h | 86h |
| 258 | 1.1.2.4.3.1 | Prepare draft of Tech/Arch Guide |  | 9d | 2007-01-09 A | 2007-01-19 | 214SS+5d | 25% | 6.75d | 2007-01-12 | 2007-01-18 | 5d | 170.25d | 0d | Vinay; Joshua | 144h | 36h |
| 259 | 1.1.2.4.3.2 | Adopter review |  | 5d | 2007-01-22 A | 2007-01-26 | 258 | 25% | 3.75d | 2007-01-19 | 2007-01-25 | 5d | 169d | 0d | Mayo; WF; AE_SIG; VCDE_WS; Arch_WS | 200h | 50h |
| 260 | 1.1.2.4.3.3 | Developer update |  | 3d | 2007-01-29 | 2007-01-31 | 259 |  |  | 2007-01-26 | 2007-01-26 | 1d | 169d | 0d | Vinay; Joshua | 48h |  |
| 261 | 1.1.2.4.3.4 | Deliver to BAH (Task 2.8) | milestone | 0d | 2007-01-31 | 2007-01-31 | 260 |  |  | 2007-01-26 | 2007-01-26 | 0d | 169d | 0d | Edmond |  |  |
| 262 | 1.1.2.4.3.5 | Formal Review by BAH |  | 15d | 2007-02-01 | 2007-02-21 | 261 |  |  |  |  |  | 169d |  | BAH | 120h |  |
| 263 | 1.1.2.5 | **Implementation** |  | 19d | 2007-01-03 A | 2007-01-29 A | 214SS+1d | 100% |  | 2007-01-08 | 2007-01-24 | 13d |  |  |  | 1392h | 1392h |
| 264 | 1.1.2.5.1 | **Web interface** |  | 9d | 2007-01-03 A | 2007-01-15 A |  | 100% |  | 2007-01-08 | 2007-01-19 | 10d |  |  |  | 72h | 72h |
| 265 | 1.1.2.5.1.1 | Second web interface iteration |  | 9d | 2007-01-03 A | 2007-01-15 A |  | 100% |  | 2007-01-08 | 2007-01-19 | 10d |  |  | Richard | 72h | 72h |

| ID | WBS | Task | Type | Duration | Start | Finish | Predecessors | Complete | Baseline start | Baseline finish | Baseline duration | Constraint | Resources | Work | Actual work |
| --- | --- | --- | --- | --- | --- | --- | --- | --- | --- | --- | --- | --- | --- | --- | --- |
| 266 | 1.1.2.5.2 | **Enterprise Service Bus** |  | 10d | 2007-01-03 A | 2007-01-16 A |  | 100% | 2007-01-08 | 2007-01-19 | 10d |  |  | 160h | 160h |
| 267 | 1.1.2.5.2.1 | Second ESB Iteration |  | 10d | 2007-01-03 A | 2007-01-16 A |  | 100% | 2007-01-08 | 2007-01-19 | 10d |  | Vinay; Joshua | 160h | 160h |
| 268 | 1.1.2.5.3 | **Grid service** |  | 13d | 2007-01-03 A | 2007-01-19 A |  | 100% | 2007-01-08 | 2007-01-24 | 13d |  |  | 208h | 208h |
| 269 | 1.1.2.5.3.1 | Implement Grid Service |  | 13d | 2007-01-03 A | 2007-01-19 A |  | 100% | 2007-01-08 | 2007-01-24 | 13d |  | Vinay; Joshua | 208h | 208h |
| 270 | 1.1.2.5.4 | **Implement Use Cases** |  | 15d | 2007-01-09 A | 2007-01-29 A |  | 100% | 2007-01-08 | 2007-01-23 | 12d |  |  | 952h | 952h |
| 271 | 1.1.2.5.4.1 | **Protocol Abstraction** |  | 12d | 2007-01-09 A | 2007-01-24 A | 237SS | 100% |  |  |  |  |  | 416h | 416h |
| 272 | 1.1.2.5.4.1.1 | UI - Incorporate HTML and CSS |  | 5d | 2007-01-16 A | 2007-01-22 A | 265 | 100% |  |  |  |  | Krikor | 40h | 40h |
| 273 | 1.1.2.5.4.1.2 | Implement O/R mapping |  | 10d | 2007-01-09 A | 2007-01-22 A |  | 100% | 2007-01-08 | 2007-01-19 | 10d |  | Krikor | 80h | 80h |
| 274 | 1.1.2.5.4.1.3 | Develop DAO |  | 10d | 2007-01-11 A | 2007-01-24 A | 273SS+2d | 100% | 2007-01-10 | 2007-01-23 | 10d |  | Krikor | 80h | 80h |
| 275 | 1.1.2.5.4.1.4 | Develop Service |  | 10d | 2007-01-11 A | 2007-01-24 A | 273SS+2d | 100% | 2007-01-10 | 2007-01-23 | 10d |  | Krikor | 80h | 80h |
| 276 | 1.1.2.5.4.1.5 | Develop controller and command objects |  | 10d | 2007-01-11 A | 2007-01-24 A | 273SS+2d | 100% | 2007-01-10 | 2007-01-23 | 10d |  | Krikor | 80h | 80h |
| 277 | 1.1.2.5.4.1.6 | Develop JUnit test cases |  | 7d | 2007-01-11 A | 2007-01-19 A | 273SS+2d | 100% | 2007-01-10 | 2007-01-18 | 7d |  | Krikor | 56h | 56h |
| 278 | 1.1.2.5.4.2 | **AE Data Collection** |  | 11.25d | 2007-01-09 A | 2007-01-24 A | 242SS | 100% |  |  |  |  |  | 416h | 416h |
| 279 | 1.1.2.5.4.2.1 | UI - Incorporate HTML and CSS |  | 5d | 2007-01-16 A | 2007-01-22 A | 265 | 100% |  |  |  |  | Rhett | 40h | 40h |
| 280 | 1.1.2.5.4.2.2 | Implement O/R mapping |  | 10d | 2007-01-09 A | 2007-01-22 A |  | 100% |  |  |  |  | Rhett | 80h | 80h |
| 281 | 1.1.2.5.4.2.3 | Develop DAO |  | 10d | 2007-01-09 A | 2007-01-24 A | 280SS+2d | 100% |  |  |  |  | Rhett | 80h | 80h |
| 282 | 1.1.2.5.4.2.4 | Develop Service |  | 10d | 2007-01-09 A | 2007-01-24 A | 280SS+2d | 100% |  |  |  |  | Rhett | 80h | 80h |
| 283 | 1.1.2.5.4.2.5 | Develop controller and command objects |  | 10d | 2007-01-09 A | 2007-01-24 A | 280SS+2d | 100% |  |  |  |  | Rhett | 80h | 80h |
| 284 | 1.1.2.5.4.2.6 | Develop JUnit test cases |  | 7d | 2007-01-09 A | 2007-01-19 A | 280SS+2d | 100% |  |  |  |  | Rhett | 56h | 56h |
| 285 | 1.1.2.5.4.3 | **Triggers/Notification** |  | 15d | 2007-01-09 A | 2007-01-29 A | 247SS | 100% |  |  |  |  |  | 120h | 120h |
| 286 | 1.1.2.5.4.3.1 | JBOSS Rules Setup/Development |  | 15d | 2007-01-09 A | 2007-01-29 A |  | 100% |  |  |  |  | Sujith | 120h | 120h |
| 287 | 1.1.2.6 | **Testing** |  | 26d | 2007-01-17 A | 2007-02-21 A |  | 100% | 2007-01-12 | 2007-01-26 | 11d |  |  | 336h | 336h |
| 288 | 1.1.2.6.1 | **Test Plan** |  | 18d | 2007-01-17 A | 2007-02-09 A |  | 100% |  |  |  |  |  | 152h | 152h |
| 289 | 1.1.2.6.1.1 | Update Test Plan Document (Task 2.6) |  | 3d | 2007-01-17 A | 2007-01-19 A |  | 100% | 2007-01-08 | 2007-01-12 | 5d | start no earlier than 2007-01-17 | Vinay; Ram | 32h | 32h |
| 290 | 1.1.2.6.1.2 | Submit to BAH | milestone | 0d | 2007-01-19 A | 2007-01-19 A | 289 | 100% |  |  |  |  | Edmond |  |  |
| 291 | 1.1.2.6.1.3 | Formal Review by BAH |  | 15d | 2007-01-22 A | 2007-02-09 A | 290 | 100% |  |  |  |  | BAH | 120h | 120h |

| ID | WBS | Task | Type | Duration | Start | Finish | Predecessors | Complete | Remaining | Baseline start | Baseline finish | Baseline duration | Total slack | Constraint | Resources | Work | Actual work | Text3 |
| --- | --- | --- | --- | --- | --- | --- | --- | --- | --- | --- | --- | --- | --- | --- | --- | --- | --- | --- |
| 292 | 1.1.2.6.2 | **Final Tests of Iteration** |  | 17d | 2007-01-30 A | 2007-02-21 A |  | 100% |  | 2007-01-24 | 2007-01-26 | 2d |  |  |  | 184h | 184h |  |
| 293 | 1.1.2.6.2.1 | Testing |  | 2d | 2007-01-30 A | 2007-01-31 A | 263 | 100% |  | 2007-01-25 | 2007-01-26 | 2d |  |  | Renee; David; Brenda; Natasha | 64h | 64h |  |
| 294 | 1.1.2.6.2.2 | Submit Test Results Report (Task 2.7) | milestone | 0d | 2007-01-31 A | 2007-01-31 A | 293 | 100% |  | 2007-01-26 | 2007-01-26 | 0d |  |  |  |  |  |  |
| 295 | 1.1.2.6.2.3 | Formal Review of Test results Report |  | 15d | 2007-02-01 A | 2007-02-21 A | 294 | 100% |  |  |  |  |  |  | BAH | 120h | 120h |  |
| 296 | 1.1.2.7 | **Deployment** |  | 26d | 2006-12-29 A | 2007-02-06 A |  | 100% |  |  |  |  |  |  |  | 200h | 200h |  |
| 297 | 1.1.2.7.1 | Submit prototype code (Task 2.5) | milestone | 0d | 2006-12-29 A | 2006-12-29 A |  | 100% |  |  |  |  |  |  | Ram |  |  |  |
| 298 | 1.1.2.7.2 | Formal Review of Code by BAH |  | 15d | 2007-01-02 A | 2007-01-22 A | 297 | 100% |  |  |  |  |  |  | BAH | 120h | 120h |  |
| 299 | 1.1.2.7.3 | Draft Installation Guide |  | 3d | 2007-01-02 A | 2007-01-04 A |  | 100% |  |  |  |  |  |  | Krikor; Vinay | 48h | 48h |  |
| 300 | 1.1.2.7.4 | Deploy Prototype for Iteration 2 at Mayo and WF |  | 1d | 2007-01-30 A | 2007-01-30 A | 263 | 100% |  | 2007-01-24 | 2007-01-24 | 0d |  |  | Vinay; Mayo; WF | 24h | 24h |  |
| 301 | 1.1.2.7.5 | Deploy Prototype / Make URL Public |  | 1d | 2007-02-06 A | 2007-02-06 A | 263FS+5d | 100% |  |  |  |  |  |  | Vinay | 8h | 8h |  |
| 302 | 1.1.3 | caBIG Annual Meeting |  | 3d | 2007-02-05 A | 2007-02-07 A |  | 100% |  |  |  |  |  | must start on 2007-02-05 |  |  |  |  |
| 303 | 1.2 | **Construction Phase** |  | 161d | 2007-02-01 A | 2007-09-13 |  | 17% | 133.72d | 2007-02-01 | 2007-09-12 | 160d | 23d |  |  | 28008h | 4910h |  |
| 304 | 1.2.1 | **Construction Phase Iteration 1** |  | 36d | 2007-02-01 A | 2007-03-22 | 302 | 93% | 2.56d | 2007-02-01 | 2007-03-02 | 22d | 148d |  |  | 3176h | 3012h | Maven, Security, UI, StudyAgents, Study Edits, Rules Engine |
| 305 | 1.2.1.1 | Begin Iteration 1 | milestone | 0d | 2007-02-14 A | 2007-02-14 A | 302 | 100% |  | 2007-02-01 | 2007-02-01 | 0d |  | start no earlier than 2007-02-14 |  |  |  |  |
| 306 | 1.2.1.2 | **Iteration Planning (Iter-1)** |  | 1d | 2007-02-14 A | 2007-02-14 A | 305 | 100% |  |  |  |  |  |  |  | 48h | 48h |  |
| 307 | 1.2.1.2.1 | Review and finalize Ucases and Work List for Iteration |  | 1d | 2007-02-14 A | 2007-02-14 A |  | 100% |  |  |  |  |  |  | Edmond; Ram; Vinay | 24h | 24h |  |
| 308 | 1.2.1.2.2 | Review and finalize assignments for Iteration |  | 1d | 2007-02-14 A | 2007-02-14 A |  | 100% |  |  |  |  |  |  | Edmond; Ram; Vinay | 24h | 24h |  |
| 309 | 1.2.1.3 | **Project Management (Iter-1)** |  | 29d | 2007-02-01 A | 2007-03-13 |  | 98% | 0.72d |  |  |  | 155d |  |  | 128h | 124h |  |
| 310 | 1.2.1.3.1 | Update Project Plan |  | 3d | 2007-02-15 A | 2007-02-19 A | 308 | 100% |  |  |  |  |  |  | Edmond | 24h | 24h |  |
| 311 | 1.2.1.3.2 | **Weekly Team/Developers Meeting** |  | 16d | 2007-02-12 A | 2007-03-05 A |  | 100% |  |  |  |  |  |  |  | 32h | 32h |  |
| 312 | 1.2.1.3.2.1 | Weekly Team Meeting 1 |  | 1d | 2007-02-12 A | 2007-02-12 A |  | 100% |  |  |  |  |  | must start on 2007-02-12 | Edmond | 8h | 8h |  |
| 313 | 1.2.1.3.2.2 | Weekly Team Meeting 2 |  | 1d | 2007-02-19 A | 2007-02-19 A |  | 100% |  |  |  |  |  | must start on 2007-02-19 | Edmond | 8h | 8h |  |
| 314 | 1.2.1.3.2.3 | Weekly Team Meeting 3 |  | 1d | 2007-02-26 A | 2007-02-26 A |  | 100% |  |  |  |  |  | must start on 2007-02-26 | Edmond | 8h | 8h |  |
| 315 | 1.2.1.3.2.4 | Weekly Team Meeting 4 |  | 1d | 2007-03-05 A | 2007-03-05 A |  | 100% |  |  |  |  |  | must start on 2007-03-05 | Edmond | 8h | 8h |  |

Notes:
- 304: Text1: 1.1, 1.2, 1.3, 1.4, 2.10, 3.1, 3.2, 3.3, 3.4, 3.5, 3.6, 3.8, 3.10, 3.13, 3.14

| ID | WBS | Task | Type | Duration | Start | Finish | Predecessors | Complete | Remaining | Total slack | Constraint | Resources | Work | Actual work |
| --- | --- | --- | --- | --- | --- | --- | --- | --- | --- | --- | --- | --- | --- | --- |
| 316 | 1.2.1.3.3 | **Status and Risk Reporting** |  | 23d | 2007-02-09 A | 2007-03-13 |  | 94% | 1.28d | 155d |  |  | 72h | 68h |
| 317 | 1.2.1.3.3.1 | Bi-weekly Risk Update in caMP (Task 1.4) |  | 1d | 2007-02-09 A | 2007-02-09 A |  | 100% |  |  | must start on 2007-02-09 | Edmond | 8h | 8h |
| 318 | 1.2.1.3.3.2 | Bi-weekly Risk Matrix Update Meeting |  | 1d | 2007-02-09 A | 2007-02-09 A |  | 100% |  |  | must start on 2007-02-09 | Edmond | 8h | 8h |
| 319 | 1.2.1.3.3.3 | Bi-weekly Risk Update in caMP (Task 1.4) |  | 1d | 2007-02-23 A | 2007-02-23 A |  | 100% |  |  | start no earlier than 2007-02-23 | Edmond | 8h | 8h |
| 320 | 1.2.1.3.3.4 | Bi-weekly Risk Matrix Update Meeting |  | 1d | 2007-02-23 A | 2007-02-23 A |  | 100% |  |  | must start on 2007-02-23 | Edmond | 8h | 8h |
| 321 | 1.2.1.3.3.5 | Bi-weekly Status Update Meeting with BAH/NCI |  | 1d | 2007-02-16 A | 2007-02-16 A |  | 100% |  |  | must start on 2007-02-16 | Edmond | 8h | 8h |
| 322 | 1.2.1.3.3.6 | Bi-weekly Status Update Meeting with BAH/NCI |  | 1d | 2007-03-02 A | 2007-03-02 A |  | 100% |  |  | must start on 2007-03-02 | Edmond | 8h | 8h |
| 323 | 1.2.1.3.3.7 | Monthly Status Report (Task 1.3) |  | 1d | 2007-03-09 A | 2007-03-09 A |  | 100% |  |  | must finish on 2007-03-09 | Edmond | 8h | 8h |
| 324 | 1.2.1.3.3.8 | Monthly Risk Matrix Update (Task 1.3) |  | 1d | 2007-03-12 A | 2007-03-12 A | 323 | 100% |  |  |  | Edmond | 8h | 8h |
| 325 | 1.2.1.3.3.9 | Adopters Collaboration Report (Task 1.7) |  | 1d | 2007-03-13 A | 2007-03-13 | 324 | 50% | 0.5d | 155d |  | Edmond | 8h | 4h |
| 326 | 1.2.1.3.4 | **Collaboration Management Activities** |  | 16d | 2007-02-01 A | 2007-02-22 A |  | 100% |  |  |  |  |  |  |
| 327 | 1.2.1.3.4.1 | Adopters Mtg |  | 1d | 2007-02-01 A | 2007-02-01 A |  | 100% |  |  | must start on 2007-02-01 |  |  |  |
| 328 | 1.2.1.3.4.2 | Bi-Weekly AE SIG Meeting |  | 1d | 2007-02-08 A | 2007-02-08 A |  | 100% |  |  | must start on 2007-02-08 |  |  |  |
| 329 | 1.2.1.3.4.3 | Adopters Mtg |  | 1d | 2007-02-15 A | 2007-02-15 A |  | 100% |  |  | must start on 2007-02-15 |  |  |  |
| 330 | 1.2.1.3.4.4 | Bi-Weekly AE SIG Meeting |  | 1d | 2007-02-22 A | 2007-02-22 A |  | 100% |  |  | must start on 2007-02-22 |  |  |  |
| 331 | 1.2.1.4 | **Environment (Iter-1)** |  | 3d | 2007-02-08 A | 2007-02-12 A |  | 100% |  |  |  |  |  |  |
| 332 | 1.2.1.4.1 | Update Environment |  | 3d | 2007-02-08 A | 2007-02-12 A |  | 100% |  |  |  |  |  |  |
| 333 | 1.2.1.5 | **SCM (Iter-1)** |  | 5d | 2007-02-08 A | 2007-02-14 A |  | 100% |  |  |  |  |  |  |
| 334 | 1.2.1.5.1 | Manage Repository |  | 5d | 2007-02-08 A | 2007-02-14 A |  | 100% |  |  |  |  |  |  |
| 335 | 1.2.1.6 | **Requirements (Iter-1)** |  | 27d | 2007-02-14 A | 2007-03-22 |  | 86% | 3.75d | 148d |  |  | 808h | 718h |
| 336 | 1.2.1.6.1 | **Updated Use Case Specification and Realization** |  | 27d | 2007-02-14 A | 2007-03-22 |  | 86% | 3.75d | 148d |  |  | 256h | 226h |
| 337 | 1.2.1.6.1.1 | Developer draft |  | 5d | 2007-02-14 A | 2007-02-20 A | 305 | 100% |  |  |  | Sean | 40h | 40h |
| 338 | 1.2.1.6.1.2 | Adopters/Collobators Review |  | 5d | 2007-02-21 A | 2007-02-27 A | 337 | 100% |  |  |  | Mayo; WF | 80h | 80h |
| 339 | 1.2.1.6.1.3 | Update Use Case Document |  | 2d | 2007-02-28 A | 2007-03-01 A | 338 | 100% |  |  |  | Sean | 16h | 16h |
| 340 | 1.2.1.6.1.4 | Submit Updated Use Case Document to BAH (Task 3.1) | milestone | 0d | 2007-03-01 A | 2007-03-01 A | 339 | 100% |  |  |  | Edmond |  |  |
| 341 | 1.2.1.6.1.5 | Formal Review of Updated Use Case Document |  | 15d | 2007-03-02 A | 2007-03-22 | 340 | 75% | 3.75d | 148d |  | BAH | 120h | 90h |

| ID | WBS | Task | Type | Duration | Start | Finish | Predecessors | Complete | Remaining | Total slack | Resources | Work | Actual work |
| --- | --- | --- | --- | --- | --- | --- | --- | --- | --- | --- | --- | --- | --- |
| 342 | 1.2.1.6.2 | **Updated SRS Document** |  | 27d | 2007-02-14 A | 2007-03-22 |  | 86% | 3.75d | 148d |  | 256h | 226h |
| 343 | 1.2.1.6.2.1 | Developer draft |  | 5d | 2007-02-14 A | 2007-02-20 A | 305 | 100% |  |  | Sean | 40h | 40h |
| 344 | 1.2.1.6.2.2 | Adopters/Collobators Review |  | 5d | 2007-02-21 A | 2007-02-27 A | 343 | 100% |  |  | Mayo; WF | 80h | 80h |
| 345 | 1.2.1.6.2.3 | Update SRS |  | 2d | 2007-02-28 A | 2007-03-01 A | 344 | 100% |  |  | Sean | 16h | 16h |
| 346 | 1.2.1.6.2.4 | Submit Updated SRS Document to BAH (Task 3.2) | milestone | 0d | 2007-03-01 A | 2007-03-01 A | 345 | 100% |  |  | Mayo; WF |  |  |
| 347 | 1.2.1.6.2.5 | Formal Review of Updated SRS |  | 15d | 2007-03-02 A | 2007-03-22 | 346 | 75% | 3.75d | 148d | BAH | 120h | 90h |
| 348 | 1.2.1.6.3 | **Updated UML Static Class Diagram Model** |  | 27d | 2007-02-14 A | 2007-03-22 |  | 86% | 3.75d | 148d |  | 296h | 266h |
| 349 | 1.2.1.6.3.1 | Developer draft |  | 5d | 2007-02-14 A | 2007-02-20 A | 305 | 100% |  |  | Ram; Sean | 80h | 80h |
| 350 | 1.2.1.6.3.2 | Adopters/Collobators Review |  | 5d | 2007-02-21 A | 2007-02-27 A | 349 | 100% |  |  | Mayo; WF | 80h | 80h |
| 351 | 1.2.1.6.3.3 | Update UML |  | 2d | 2007-02-28 A | 2007-03-01 A | 350 | 100% |  |  | Sean | 16h | 16h |
| 352 | 1.2.1.6.3.4 | Submit UML to BAH (Task 3.3) | milestone | 0d | 2007-03-01 A | 2007-03-01 A | 351 | 100% |  |  | Edmond |  |  |
| 353 | 1.2.1.6.3.5 | Formal Review of UML |  | 15d | 2007-03-02 A | 2007-03-22 | 352 | 75% | 3.75d | 148d | BAH | 120h | 90h |
| 354 | 1.2.1.7 | **Analysis and Design (Iter-1)** |  | 30d | 2007-02-08 A | 2007-03-21 |  | 97% | 1.04d | 149d |  | 904h | 904h |
| 355 | 1.2.1.7.1 | **Design Documents** |  | 26d | 2007-02-08 A | 2007-03-15 |  | 95% | 1.41d | 153d |  | 408h | 408h |
| 356 | 1.2.1.7.1.1 | **Protocol Abstraction (Diseases/Agents)** |  | 12d | 2007-02-14 A | 2007-03-01 A |  | 100% |  |  |  | 136h | 136h |
| 357 | 1.2.1.7.1.1.1 | Develop appropriate UML Artifacts |  | 2d | 2007-02-14 A | 2007-02-15 A | 305 | 100% |  |  | Krikor | 16h | 16h |
| 358 | 1.2.1.7.1.1.2 | Create Design Document |  | 3d | 2007-02-16 A | 2007-02-20 A | 357 | 100% |  |  | Krikor | 24h | 24h |
| 359 | 1.2.1.7.1.1.3 | Adopters/Collaborators Review |  | 5d | 2007-02-21 A | 2007-02-27 A | 358 | 100% |  |  | Mayo; WF | 80h | 80h |
| 360 | 1.2.1.7.1.1.4 | Developers Update |  | 2d | 2007-02-28 A | 2007-03-01 A | 359 | 100% |  |  | Krikor | 16h | 16h |
| 361 | 1.2.1.7.1.2 | **Protocol Abstration (Search/Edit Study)** |  | 12d | 2007-02-08 A | 2007-02-23 A |  | 100% |  |  |  | 136h | 136h |
| 362 | 1.2.1.7.1.2.1 | Develop appropriate UML Artifacts |  | 2d | 2007-02-08 A | 2007-02-09 A |  | 100% |  |  | Kulasekaran | 16h | 16h |
| 363 | 1.2.1.7.1.2.2 | Create Design Document |  | 3d | 2007-02-12 A | 2007-02-14 A | 362 | 100% |  |  | Kulasekaran | 24h | 24h |
| 364 | 1.2.1.7.1.2.3 | Adopters/Collaborators Review |  | 5d | 2007-02-15 A | 2007-02-21 A | 363 | 100% |  |  | Mayo; WF | 80h | 80h |
| 365 | 1.2.1.7.1.2.4 | Developers Update |  | 2d | 2007-02-22 A | 2007-02-23 A | 364 | 100% |  |  | Kulasekaran | 16h | 16h |

| ID | WBS | Task | Type | Duration | Start | Finish | Predecessors | Complete | Remaining | Baseline start | Baseline finish | Baseline duration | Total slack | Resources | Work | Actual work |
| --- | --- | --- | --- | --- | --- | --- | --- | --- | --- | --- | --- | --- | --- | --- | --- | --- |
| 366 | 1.2.1.7.1.3 | **Triggers/Notification (cont'd)** |  | 12d | 2007-02-08 A | 2007-02-23 A |  | 100% |  |  |  |  |  |  | 136h | 136h |
| 367 | 1.2.1.7.1.3.1 | Develop appropriate UML Artifacts |  | 2d | 2007-02-08 A | 2007-02-09 A |  | 100% |  |  |  |  |  | Sujith | 16h | 16h |
| 368 | 1.2.1.7.1.3.2 | Create Design Document |  | 3d | 2007-02-12 A | 2007-02-14 A | 367 | 100% |  |  |  |  |  | Sujith | 24h | 24h |
| 369 | 1.2.1.7.1.3.3 | Adopters/Collaborators Review |  | 5d | 2007-02-15 A | 2007-02-21 A | 368 | 100% |  |  |  |  |  | Mayo; WF | 80h | 80h |
| 370 | 1.2.1.7.1.3.4 | Developers Update |  | 2d | 2007-02-22 A | 2007-02-23 A | 369 | 100% |  |  |  |  |  | Sujith | 16h | 16h |
| 371 | 1.2.1.7.1.4 | Deliver Design document to BAH (Task 3.4) | milestone | 0d | 2007-03-01 A | 2007-03-01 A | 360, 365, 370 | 100% |  |  |  |  |  |  |  |  |
| 372 | 1.2.1.7.1.5 | Deliver UML to BAH (Task 3.3) | milestone | 0d | 2007-03-01 A | 2007-03-01 A | 360, 365, 370 | 100% |  |  |  |  |  |  |  |  |
| 373 | 1.2.1.7.1.6 | Formal Review by BAH |  | 10d | 2007-03-02 A | 2007-03-15 | 372 | 75% | 2.5d |  |  |  | 153d |  |  |  |
| 374 | 1.2.1.7.2 | **Domain Model** |  | 5d | 2007-02-14 A | 2007-02-20 A |  | 100% |  |  |  |  |  |  | 40h | 40h |
| 375 | 1.2.1.7.2.1 | Update Model/BRIDG Harmonization |  | 5d | 2007-02-14 A | 2007-02-20 A | 305 | 100% |  |  |  |  |  | Ram | 40h | 40h |
| 376 | 1.2.1.7.3 | **Technical/Architecture Guide** |  | 21d | 2007-02-21 A | 2007-03-21 A |  | 100% |  | 2007-01-12 | 2007-01-26 | 11d |  |  | 456h | 456h |
| 377 | 1.2.1.7.3.1 | Update Tech/Arch Guide |  | 6d | 2007-02-21 A | 2007-02-28 A | 305FS+5d | 100% |  | 2007-01-12 | 2007-01-18 | 5d |  | Vinay; Joshua | 96h | 96h |
| 378 | 1.2.1.7.3.2 | Deliver to BAH (Task 2.8) | milestone | 0d | 2007-02-28 A | 2007-02-28 A | 377 | 100% |  | 2007-01-26 | 2007-01-26 | 0d |  | Edmond |  |  |
| 379 | 1.2.1.7.3.3 | Formal Review |  | 15d | 2007-03-01 A | 2007-03-21 A | 378 | 100% |  |  |  |  |  | BAH; Mayo; WF | 360h | 360h |
| 380 | 1.2.1.8 | **Implementation (Iter-1)** |  | 11d | 2007-02-14 A | 2007-02-28 A |  | 100% |  |  |  |  |  |  | 792h | 792h |
| 381 | 1.2.1.8.1 | **Infrastructure** |  | 10d | 2007-02-14 A | 2007-02-27 A |  | 100% |  |  |  |  |  |  | 280h | 280h |
| 382 | 1.2.1.8.1.1 | **Build Framework** |  | 5d | 2007-02-14 A | 2007-02-20 A |  | 100% |  |  |  |  |  |  | 40h | 40h |
| 383 | 1.2.1.8.1.1.1 | Maven Setup |  | 5d | 2007-02-14 A | 2007-02-20 A | 305 | 100% |  |  |  |  |  | Rhett | 40h | 40h |
| 384 | 1.2.1.8.1.2 | **Web interface** |  | 10d | 2007-02-14 A | 2007-02-27 A |  | 100% |  |  |  |  |  |  | 160h | 160h |
| 385 | 1.2.1.8.1.2.1 | UI Refactoring |  | 10d | 2007-02-14 A | 2007-02-27 A | 305 | 100% |  |  |  |  |  | Richard; Rhett | 160h | 160h |
| 386 | 1.2.1.8.1.3 | **Security** |  | 10d | 2007-02-14 A | 2007-02-27 A |  | 100% |  |  |  |  |  |  | 80h | 80h |
| 387 | 1.2.1.8.1.3.1 | Acegi - CSM |  | 10d | 2007-02-14 A | 2007-02-27 A | 305 | 100% |  |  |  |  |  | Joshua | 80h | 80h |
| 388 | 1.2.1.8.2 | **Implement Use Cases** |  | 11d | 2007-02-14 A | 2007-02-28 A |  | 100% |  |  |  |  |  |  | 512h | 512h |
| 389 | 1.2.1.8.2.1 | **Protocol Abstraction (Agents)** |  | 11d | 2007-02-14 A | 2007-02-28 A |  | 100% |  |  |  |  |  |  | 216h | 216h |
| 390 | 1.2.1.8.2.1.1 | Implement O/R mapping |  | 5d | 2007-02-14 A | 2007-02-20 A | 305 | 100% |  |  |  |  |  | Krikor | 40h | 40h |
| 391 | 1.2.1.8.2.1.2 | Develop DAO |  | 7d | 2007-02-16 A | 2007-02-26 A | 390SS+2d | 100% |  |  |  |  |  | Krikor | 56h | 56h |
| 392 | 1.2.1.8.2.1.3 | Develop Service |  | 7d | 2007-02-20 A | 2007-02-28 A | 391SS+2d | 100% |  |  |  |  |  | Krikor | 56h | 56h |
| 393 | 1.2.1.8.2.1.4 | Develop controller and command objects |  | 5d | 2007-02-22 A | 2007-02-28 A | 392SS+2d | 100% |  |  |  |  |  | Krikor | 40h | 40h |
| 394 | 1.2.1.8.2.1.5 | Develop JUnit test cases |  | 3d | 2007-02-26 A | 2007-02-28 A | 393SS+2d | 100% |  |  |  |  |  | Krikor | 24h | 24h |

| ID | WBS | Task | Type | Duration | Start | Finish | Predecessors | Complete | Remaining | Baseline start | Baseline finish | Baseline duration | Total slack | Constraint | Resources | Work | Actual work |
| --- | --- | --- | --- | --- | --- | --- | --- | --- | --- | --- | --- | --- | --- | --- | --- | --- | --- |
| 395 | 1.2.1.8.2.2 | **Protocol Abstraction (Search/Edit Study)** |  | 11d | 2007-02-14 A | 2007-02-28 A |  | 100% |  |  |  |  |  |  |  | 216h | 216h |
| 396 | 1.2.1.8.2.2.1 | Implement O/R mapping |  | 5d | 2007-02-14 A | 2007-02-20 A | 305 | 100% |  |  |  |  |  |  | Kulasekaran | 40h | 40h |
| 397 | 1.2.1.8.2.2.2 | Develop DAO |  | 7d | 2007-02-16 A | 2007-02-26 A | 396SS+2d | 100% |  |  |  |  |  |  | Kulasekaran | 56h | 56h |
| 398 | 1.2.1.8.2.2.3 | Develop Service |  | 7d | 2007-02-20 A | 2007-02-28 A | 397SS+2d | 100% |  |  |  |  |  |  | Kulasekaran | 56h | 56h |
| 399 | 1.2.1.8.2.2.4 | Develop controller and command objects |  | 5d | 2007-02-22 A | 2007-02-28 A | 398SS+2d | 100% |  |  |  |  |  |  | Kulasekaran | 40h | 40h |
| 400 | 1.2.1.8.2.2.5 | Develop JUnit test cases |  | 3d | 2007-02-26 A | 2007-02-28 A | 399SS+2d | 100% |  |  |  |  |  |  | Kulasekaran | 24h | 24h |
| 401 | 1.2.1.8.2.3 | **Triggers/Notification (cont'd)** |  | 10d | 2007-02-14 A | 2007-02-27 A |  | 100% |  |  |  |  |  |  |  | 80h | 80h |
| 402 | 1.2.1.8.2.3.1 | Rules Engine Development |  | 10d | 2007-02-14 A | 2007-02-27 A | 305 | 100% |  |  |  |  |  |  | Sujith | 80h | 80h |
| 403 | 1.2.1.9 | **Testing (Iter-1)** |  | 26d | 2007-02-14 A | 2007-03-21 |  | 84% | 4.28d |  |  |  | 149d |  |  | 352h | 302h |
| 404 | 1.2.1.9.1 | **Test Plan** |  | 20d | 2007-02-14 A | 2007-03-13 |  | 88% | 2.5d |  |  |  | 155d |  |  | 160h | 140h |
| 405 | 1.2.1.9.1.1 | Update Test Plan Document (Task 3.6) |  | 10d | 2007-02-14 A | 2007-02-27 A | 305 | 100% |  |  |  |  |  |  | Ram | 80h | 80h |
| 406 | 1.2.1.9.1.2 | Submit to BAH | milestone | 0d | 2007-02-27 A | 2007-02-27 A | 405 | 100% |  |  |  |  |  |  | Edmond |  |  |
| 407 | 1.2.1.9.1.3 | Formal Review by BAH |  | 10d | 2007-02-28 A | 2007-03-13 | 406 | 75% | 2.5d |  |  |  | 155d |  | BAH | 80h | 60h |
| 408 | 1.2.1.9.2 | **Run Tests** |  | 18d | 2007-02-26 A | 2007-03-21 |  | 79% | 3.75d |  |  |  | 149d |  |  | 192h | 162h |
| 409 | 1.2.1.9.2.1 | Testing |  | 3d | 2007-02-26 A | 2007-02-28 A |  | 100% |  |  |  |  |  | must start on 2007-02-26 | Renee; David; Natasha | 72h | 72h |
| 410 | 1.2.1.9.2.2 | Submit Test Results Report (Task 3.7) | milestone | 0d | 2007-02-28 A | 2007-02-28 A | 409 | 100% |  |  |  |  |  |  | Edmond |  |  |
| 411 | 1.2.1.9.2.3 | Formal Review of Test results Report |  | 15d | 2007-03-01 A | 2007-03-21 | 410 | 75% | 3.75d |  |  |  | 149d |  | BAH | 120h | 90h |
| 412 | 1.2.1.10 | **Deployment (Iter-1)** |  | 10d | 2007-02-28 A | 2007-03-14 |  | 82% | 1.79d |  |  |  | 154d |  |  | 144h | 124h |
| 413 | 1.2.1.10.1 | Submit prototype code (Task 3.5) | milestone | 0d | 2007-02-28 A | 2007-02-28 A | 409 | 100% |  |  |  |  |  |  | Ram |  |  |
| 414 | 1.2.1.10.2 | Formal Review of Code by BAH |  | 10d | 2007-03-01 A | 2007-03-14 | 413 | 75% | 2.5d |  |  |  | 154d |  | BAH | 80h | 60h |
| 415 | 1.2.1.10.3 | Update Installation Guide |  | 2d | 2007-03-01 A | 2007-03-02 A | 380 | 100% |  |  |  |  |  |  | Krikor; Vinay | 32h | 32h |
| 416 | 1.2.1.10.4 | Deploy Prototype for Iteration 1 at Mayo and WF |  | 1d | 2007-03-05 A | 2007-03-05 A | 409, 415 | 100% |  |  |  |  |  |  | Vinay; Mayo; WF | 24h | 24h |
| 417 | 1.2.1.10.5 | Make URL Public |  | 1d | 2007-03-01 A | 2007-03-01 A | 409 | 100% |  |  |  |  |  |  | Vinay | 8h | 8h |
| 418 | 1.2.1.11 | Finish Iteration 1 | milestone | 0d | 2007-02-28 A | 2007-02-28 A | 413 | 100% |  | 2007-02-28 | 2007-02-28 | 0d |  |  |  |  |  |

| ID | WBS | Task | Type | Duration | Start | Finish | Predecessors | Complete | Remaining | Baseline start | Baseline finish | Baseline duration | Total slack | Constraint | Resources | Work | Actual work |
| --- | --- | --- | --- | --- | --- | --- | --- | --- | --- | --- | --- | --- | --- | --- | --- | --- | --- |
| 419 | 1.2.2 | **Construction Phase Iteration 2** |  | 37d | 2007-03-01 A | 2007-04-20 | 418 | 41% | 21.91d | 2007-03-02 | 2007-04-04 | 23d | 127d |  |  | 5248h | 1898h |
| 420 | 1.2.2.1 | Begin Iteration 2 | milestone | 0d | 2007-03-01 A | 2007-03-01 A | 418 | 100% |  | 2007-03-02 | 2007-03-02 | 0d |  | start no earlier than 2007-03-01 |  |  |  |
| 421 | 1.2.2.2 | **Iteration Planning (Iter-2)** |  | 2d | 2007-03-01 A | 2007-03-02 A |  | 100% |  |  |  |  |  |  |  | 48h | 48h |
| 422 | 1.2.2.2.1 | Review and finalize Ucases and Work List for Iteration |  | 1d | 2007-03-01 A | 2007-03-01 A | 420 | 100% |  |  |  |  |  |  | Edmond; Ram; Vinay | 24h | 24h |
| 423 | 1.2.2.2.2 | Review and finalize assignments for Iteration |  | 1d | 2007-03-02 A | 2007-03-02 A | 422 | 100% |  |  |  |  |  |  | Edmond; Ram; Vinay | 24h | 24h |
| 424 | 1.2.2.3 | **Project Management (Iter-2)** |  | 22d | 2007-03-01 A | 2007-03-31 |  | 71% | 6.33d |  |  |  | 142d |  |  | 160h | 114h |
| 425 | 1.2.2.3.1 | Update Project Plan |  | 3d | 2007-03-05 A | 2007-03-07 | 423 | 75% | 0.75d |  |  |  | 159d |  | Edmond | 24h | 18h |
| 426 | 1.2.2.3.2 | **CaAERS CCB (Task 2.10)** |  | 1d | 2007-03-12 A | 2007-03-12 A |  | 100% |  |  |  |  |  |  |  | 8h | 8h |
| 427 | 1.2.2.3.2.1 | CCB Meeting |  | 1d | 2007-03-12 A | 2007-03-12 A |  | 100% |  |  |  |  |  | start no earlier than 2007-03-12 | Edmond | 8h | 8h |
| 428 | 1.2.2.3.3 | **Weekly Team/Developers Meeting** |  | 16d | 2007-03-05 A | 2007-03-26 |  | 75% | 4d |  |  |  | 0d |  |  | 32h | 24h |
| 429 | 1.2.2.3.3.1 | Weekly Team Meeting 1 |  | 1d | 2007-03-05 A | 2007-03-05 A |  | 100% |  |  |  |  |  | must start on 2007-03-05 | Edmond | 8h | 8h |
| 430 | 1.2.2.3.3.2 | Weekly Team Meeting 2 |  | 1d | 2007-03-12 A | 2007-03-12 A |  | 100% |  |  |  |  |  | must start on 2007-03-12 | Edmond | 8h | 8h |
| 431 | 1.2.2.3.3.3 | Weekly Team Meeting 3 |  | 1d | 2007-03-19 A | 2007-03-19 A |  | 100% |  |  |  |  |  | must start on 2007-03-19 | Edmond | 8h | 8h |
| 432 | 1.2.2.3.3.4 | Weekly Team Meeting 4 |  | 1d | 2007-03-26 | 2007-03-26 |  |  |  |  |  |  | 0d | must start on 2007-03-26 | Edmond | 8h |  |
| 433 | 1.2.2.3.4 | **Status and Risk Reporting** |  | 21d | 2007-03-02 A | 2007-03-31 |  | 63% | 7.88d |  |  |  | 142d |  |  | 64h | 40h |
| 434 | 1.2.2.3.4.1 | Bi-weekly Risk Update in caMP (Task 1.4) |  | 1d | 2007-03-02 A | 2007-03-02 A |  | 100% |  |  |  |  |  | must start on 2007-03-02 | Edmond | 8h | 8h |
| 435 | 1.2.2.3.4.2 | Bi-weekly Risk Matrix Update Meeting |  | 1d | 2007-03-02 A | 2007-03-02 A |  | 100% |  |  |  |  |  | must start on 2007-03-02 | Edmond | 8h | 8h |
| 436 | 1.2.2.3.4.3 | Bi-weekly Risk Update in caMP (Task 1.4) |  | 1d | 2007-03-16 A | 2007-03-16 A |  | 100% |  |  |  |  |  | start no earlier than 2007-03-16 | Edmond | 8h | 8h |
| 437 | 1.2.2.3.4.4 | Bi-weekly Risk Matrix Update Meeting |  | 1d | 2007-03-16 A | 2007-03-16 A |  | 100% |  |  |  |  |  | must start on 2007-03-16 | Edmond | 8h | 8h |
| 438 | 1.2.2.3.4.5 | Bi-weekly Status Update Meeting with BAH/NCI |  | 1d | 2007-03-09 A | 2007-03-09 A |  | 100% |  |  |  |  |  | must start on 2007-03-09 | Edmond | 8h | 8h |
| 439 | 1.2.2.3.4.6 | Bi-weekly Status Update Meeting with BAH/NCI |  | 1d | 2007-03-23 | 2007-03-23 |  |  |  |  |  |  | 0d | must start on 2007-03-23 | Edmond | 8h |  |
| 440 | 1.2.2.3.4.7 | Monthly Status Report (Task 1.3) |  | 1d | 2007-03-30 | 2007-03-31 |  |  |  |  |  |  | 0d | must finish on 2007-03-31 | Edmond | 8h |  |
| 441 | 1.2.2.3.4.8 | Monthly Risk Matrix Update (Task 1.3) |  | 1d | 2007-03-30 | 2007-03-30 | 440SS |  |  |  |  |  | 142d |  | Edmond | 8h |  |
| 442 | 1.2.2.3.5 | **Collaboration Management Activities** |  | 16d | 2007-03-01 A | 2007-03-22 |  | 75% | 4d |  |  |  | 0d |  |  | 32h | 24h |
| 443 | 1.2.2.3.5.1 | Adopters Mtg |  | 1d | 2007-03-01 A | 2007-03-01 A |  | 100% |  |  |  |  |  | must start on 2007-03-01 | Edmond | 8h | 8h |
| 444 | 1.2.2.3.5.2 | Bi-Weekly AE SIG Meeting |  | 1d | 2007-03-08 A | 2007-03-08 A |  | 100% |  |  |  |  |  | must start on 2007-03-08 | Edmond | 8h | 8h |
| 445 | 1.2.2.3.5.3 | Adopters Mtg |  | 1d | 2007-03-15 A | 2007-03-15 A |  | 100% |  |  |  |  |  | must start on 2007-03-15 | Edmond | 8h | 8h |
| 446 | 1.2.2.3.5.4 | Bi-Weekly AE SIG Meeting |  | 1d | 2007-03-22 | 2007-03-22 |  |  |  |  |  |  | 0d | must start on 2007-03-22 | Edmond | 8h |  |

Notes:
- 419: Text1: 1.1, 1.2, 1.3, 1.4, 2.10, 3.1, 3.2, 3.3, 3.4, 3.5, 3.6, 3.8, 3.10, 3.13, 3.14 / Text3: RoleBasedSecurity,StudyDiseases,Investigators,Personnel,Import,MultipleAEs,AEDataCapture,TriggersUI
- 427: Text1: 2.10
- 434: Text1: 1.4
- 436: Text1: 1.4
- 440: Text1: 1.3
- 441: Text1: 1.3

| ID | WBS | Task | Type | Duration | Start | Finish | Predecessors | Complete | Remaining | Total slack | Free slack | Resources | Work | Actual work | Text1 |
| --- | --- | --- | --- | --- | --- | --- | --- | --- | --- | --- | --- | --- | --- | --- | --- |
| 447 | 1.2.2.4 | **Environment (Iter-2)** |  | 3d | 2007-03-01 A | 2007-03-05 |  | 75% | 0.75d | 161d |  |  | 24h | 18h |  |
| 448 | 1.2.2.4.1 | Update Environment |  | 3d | 2007-03-01 A | 2007-03-05 | 418 | 75% | 0.75d | 161d |  | Vinay | 24h | 18h |  |
| 449 | 1.2.2.5 | **SCM (Iter-2)** |  | 5d | 2007-03-01 A | 2007-03-07 |  | 75% | 1.25d | 159d |  |  | 40h | 30h |  |
| 450 | 1.2.2.5.1 | Manage Repository |  | 5d | 2007-03-01 A | 2007-03-07 | 418 | 75% | 1.25d | 159d |  | Rhett | 40h | 30h |  |
| 451 | 1.2.2.6 | **Requirements (Iter-2)** |  | 30d | 2007-03-01 A | 2007-04-11 |  | 35% | 19.5d | 134d |  |  | 824h | 304h |  |
| 452 | 1.2.2.6.1 | **Requirement Gathering/Elucidation Meetings** |  | 5d | 2007-03-01 A | 2007-03-07 |  | 65% | 1.77d | 159d |  |  |  |  |  |
| 453 | 1.2.2.6.1.1 | CTEP |  | 5d | 2007-03-01 A | 2007-03-07 |  | 75% | 1.25d | 159d |  |  |  |  |  |
| 454 | 1.2.2.6.1.2 | DCP |  | 5d | 2007-03-01 A | 2007-03-07 |  | 50% | 2.5d | 159d |  |  |  |  |  |
| 455 | 1.2.2.6.1.3 | MedDRA |  | 1d | 2007-03-01 A | 2007-03-01 |  | 75% | 0.25d | 163d |  |  |  |  |  |
| 456 | 1.2.2.6.1.4 | Diseases |  | 1d | 2007-03-01 A | 2007-03-01 |  | 75% | 0.25d | 163d |  |  |  |  |  |
| 457 | 1.2.2.6.2 | **Updated Use Case Specification and Realization** |  | 28d | 2007-03-01 A | 2007-04-09 |  | 35% | 18.25d | 136d |  |  | 264h | 108h |  |
| 458 | 1.2.2.6.2.1 | Developer draft |  | 5d | 2007-03-01 A | 2007-03-07 | 418 | 75% | 1.25d | 142d | 0d | Sean | 40h | 30h |  |
| 459 | 1.2.2.6.2.2 | Adopters/Collobators Review |  | 5d | 2007-03-08 A | 2007-03-14 | 458 | 75% | 1.25d | 138.25d | 0d | Mayo; WF | 80h | 60h |  |
| 460 | 1.2.2.6.2.3 | Update Use Case Document |  | 3d | 2007-03-15 A | 2007-03-19 | 459 | 75% | 0.75d | 136d | 0d | Sean | 24h | 18h |  |
| 461 | 1.2.2.6.2.4 | Submit Updated Use Case Document to BAH (Task 3.1) | milestone | 0d | 2007-03-19 | 2007-03-19 | 460 |  |  | 136d | 0d | Edmond |  |  | 3.1 |
| 462 | 1.2.2.6.2.5 | Formal Review of Updated Use Case Document |  | 15d | 2007-03-20 | 2007-04-09 | 461 |  |  | 136d |  | BAH | 120h |  |  |
| 463 | 1.2.2.6.3 | **Updated SRS Document** |  | 28d | 2007-03-05 A | 2007-04-11 |  | 35% | 18.25d | 134d |  |  | 264h | 108h |  |
| 464 | 1.2.2.6.3.1 | Developer draft |  | 5d | 2007-03-05 A | 2007-03-09 | 423 | 75% | 1.25d | 140d | 0d | Sean | 40h | 30h |  |
| 465 | 1.2.2.6.3.2 | Adopters/Collobators Review |  | 5d | 2007-03-12 A | 2007-03-16 | 464 | 75% | 1.25d | 136.25d | 0d | Mayo; WF | 80h | 60h |  |
| 466 | 1.2.2.6.3.3 | Update SRS |  | 3d | 2007-03-19 A | 2007-03-21 | 465 | 75% | 0.75d | 134d | 0d | Sean | 24h | 18h |  |
| 467 | 1.2.2.6.3.4 | Submit Updated SRS Document to BAH (Task 3.2) | milestone | 0d | 2007-03-21 | 2007-03-21 | 466 |  |  | 134d | 0d | Mayo; WF |  |  | 3.2 |
| 468 | 1.2.2.6.3.5 | Formal Review of Updated SRS |  | 15d | 2007-03-22 | 2007-04-11 | 467 |  |  | 134d |  | BAH | 120h |  |  |
| 469 | 1.2.2.6.4 | **Updated UML Static Class Diagram Model** |  | 27d | 2007-03-05 A | 2007-04-10 |  | 22% | 21d | 135d |  |  | 296h | 88h |  |
| 470 | 1.2.2.6.4.1 | Developer draft |  | 5d | 2007-03-05 A | 2007-03-09 | 423 | 50% | 2.5d | 138.5d | 0d | Ram; Sean | 80h | 40h |  |
| 471 | 1.2.2.6.4.2 | Adopters/Collobators Review |  | 5d | 2007-03-12 A | 2007-03-16 | 470 | 50% | 2.5d | 136d | 0d | Mayo; WF | 80h | 40h |  |
| 472 | 1.2.2.6.4.3 | Update UML |  | 2d | 2007-03-19 A | 2007-03-20 | 471 | 50% | 1d | 135d | 0d | Sean | 16h | 8h |  |
| 473 | 1.2.2.6.4.4 | Submit UML to BAH (Task 3.3) | milestone | 0d | 2007-03-20 | 2007-03-20 | 472 |  |  | 135d | 0d | Edmond |  |  | 3.3 |
| 474 | 1.2.2.6.4.5 | Formal Review of UML |  | 15d | 2007-03-21 | 2007-04-10 | 473 |  |  | 135d |  | BAH | 120h |  |  |

| ID | WBS | Task | Type | Duration | Start | Finish | Predecessors | Complete | Remaining | Total slack | Free slack | Resources | Work | Actual work | Text1 |
| --- | --- | --- | --- | --- | --- | --- | --- | --- | --- | --- | --- | --- | --- | --- | --- |
| 475 | 1.2.2.7 | **Analysis and Design (Iter-2)** |  | 29d | 2007-03-01 A | 2007-04-10 |  | 27% | 21.21d | 135d |  |  | 1200h | 264h |  |
| 476 | 1.2.2.7.1 | **Design Documents** |  | 29d | 2007-03-01 A | 2007-04-10 |  | 26% | 21.47d | 135d |  |  | 1048h | 224h |  |
| 477 | 1.2.2.7.1.1 | **Protocol Abstraction (Diseases)** |  | 9d | 2007-03-05 A | 2007-03-15 |  | 39% | 5.5d | 142d |  |  | 96h | 40h |  |
| 478 | 1.2.2.7.1.1.1 | Develop appropriate UML Artifacts |  | 2d | 2007-03-05 A | 2007-03-06 | 423 | 50% | 1d | 144.5d | 0d | Krikor | 16h | 8h |  |
| 479 | 1.2.2.7.1.1.2 | Create Design Document |  | 2d | 2007-03-07 A | 2007-03-08 | 478 | 50% | 1d | 143.5d | 0d | Krikor | 16h | 8h |  |
| 480 | 1.2.2.7.1.1.3 | Adopters/Collaborators Review |  | 3d | 2007-03-09 A | 2007-03-13 | 479 | 50% | 1.5d | 142d | 0d | Mayo; WF | 48h | 24h |  |
| 481 | 1.2.2.7.1.1.4 | Developers Update |  | 2d | 2007-03-14 | 2007-03-15 | 480 |  |  | 142d | 0d | Krikor | 16h |  |  |
| 482 | 1.2.2.7.1.2 | **Data Exchange with Local CTMS (Import)** |  | 11d | 2007-03-16 | 2007-03-30 |  |  |  | 142d |  |  | 128h |  |  |
| 483 | 1.2.2.7.1.2.1 | Develop appropriate UML Artifacts |  | 2d | 2007-03-16 | 2007-03-19 | 481 |  |  | 142d | 0d | Krikor | 16h |  |  |
| 484 | 1.2.2.7.1.2.2 | Create Design Document |  | 2d | 2007-03-20 | 2007-03-21 | 483 |  |  | 142d | 0d | Krikor | 16h |  |  |
| 485 | 1.2.2.7.1.2.3 | Adopters/Collaborators Review |  | 5d | 2007-03-22 | 2007-03-28 | 484 |  |  | 142d | 0d | Mayo; WF | 80h |  |  |
| 486 | 1.2.2.7.1.2.4 | Developers Update |  | 2d | 2007-03-29 | 2007-03-30 | 485 |  |  | 142d |  | Krikor | 16h |  |  |
| 487 | 1.2.2.7.1.3 | **AE Data Collection (AE Attribution Related Functionality)** |  | 17d | 2007-03-05 A | 2007-03-27 |  | 22% | 13.25d | 135d |  |  | 176h | 40h |  |
| 488 | 1.2.2.7.1.3.1 | Develop appropriate UML Artifacts |  | 5d | 2007-03-05 A | 2007-03-09 | 423 | 25% | 3.75d | 137.5d | 0d | Rhett | 40h | 10h |  |
| 489 | 1.2.2.7.1.3.2 | Create Design Document |  | 5d | 2007-03-12 A | 2007-03-16 | 488 | 25% | 3.75d | 136.25d | 0d | Rhett | 40h | 10h |  |
| 490 | 1.2.2.7.1.3.3 | Adopters/Collaborators Review |  | 5d | 2007-03-19 A | 2007-03-23 | 489 | 25% | 3.75d | 135d | 0d | Mayo; WF | 80h | 20h |  |
| 491 | 1.2.2.7.1.3.4 | Developers Update |  | 2d | 2007-03-26 | 2007-03-27 | 490 |  |  | 135d | 0d | Rhett | 16h |  |  |
| 492 | 1.2.2.7.1.4 | **Protocol Abstraction (Study Investigators, Study Personnel)** |  | 14d | 2007-03-05 A | 2007-03-22 |  | 39% | 8.5d | 138d |  |  | 152h | 64h |  |
| 493 | 1.2.2.7.1.4.1 | Develop appropriate UML Artifacts |  | 3d | 2007-03-05 A | 2007-03-07 | 423 | 50% | 1.5d | 142d | 0d | Kulasekeran | 24h | 12h |  |
| 494 | 1.2.2.7.1.4.2 | Create Design Document |  | 3d | 2007-03-08 A | 2007-03-12 | 493 | 50% | 1.5d | 140.5d | 0d | Kulasekeran | 24h | 12h |  |
| 495 | 1.2.2.7.1.4.3 | Adopters/Collaborators Review |  | 5d | 2007-03-13 A | 2007-03-19 | 494 | 50% | 2.5d | 138d | 0d | Mayo; WF | 80h | 40h |  |
| 496 | 1.2.2.7.1.4.4 | Developers Update |  | 3d | 2007-03-20 | 2007-03-22 | 495 |  |  | 138d | 3d | Kulasekeran | 24h |  |  |
| 497 | 1.2.2.7.1.5 | **Protocol Level AE Notification Trigger** |  | 17d | 2007-03-01 A | 2007-03-23 |  | 44% | 9.5d | 137d |  |  | 176h | 80h |  |
| 498 | 1.2.2.7.1.5.1 | Develop appropriate UML Artifacts |  | 5d | 2007-03-01 A | 2007-03-07 |  | 50% | 2.5d | 142d | 0d | Sujith | 40h | 20h |  |
| 499 | 1.2.2.7.1.5.2 | Create Design Document |  | 5d | 2007-03-08 A | 2007-03-14 | 498 | 50% | 2.5d | 139.5d | 0d | Sujith | 40h | 20h |  |
| 500 | 1.2.2.7.1.5.3 | Adopters/Collaborators Review |  | 5d | 2007-03-15 A | 2007-03-21 | 499 | 50% | 2.5d | 137d | 0d | Mayo; WF | 80h | 40h |  |
| 501 | 1.2.2.7.1.5.4 | Developers Update |  | 2d | 2007-03-22 | 2007-03-23 | 500 |  |  | 137d | 2d | Sujith | 16h |  |  |
| 502 | 1.2.2.7.1.6 | Deliver Design document to BAH (Task 3.4) | milestone | 0d | 2007-03-27 | 2007-03-27 | 481, 491, 501, 496 |  |  | 145d |  | Edmond |  |  | 3.4 |
| 503 | 1.2.2.7.1.7 | Deliver UML to BAH (Task 3.3) | milestone | 0d | 2007-03-27 | 2007-03-27 | 481, 491, 501, 496 |  |  | 135d | 0d | Edmond |  |  | 3.3 |
| 504 | 1.2.2.7.1.8 | Formal Review by BAH |  | 10d | 2007-03-28 | 2007-04-10 | 503 |  |  | 135d |  | BAH; NCI; Mayo; WF | 320h |  |  |

| ID | WBS | Task | Duration | Start | Finish | Predecessors | Complete | Remaining | Total slack | Free slack | Constraint | Resources | Work | Actual work | Text2 |
| --- | --- | --- | --- | --- | --- | --- | --- | --- | --- | --- | --- | --- | --- | --- | --- |
| 505 | 1.2.2.7.2 | **Modeling** | 10d | 2007-03-05 A | 2007-03-16 |  | 38% | 6.25d | 152d |  |  |  | 80h | 30h | BRIDG |
| 506 | 1.2.2.7.2.1 | Update Implementation Model | 5d | 2007-03-05 A | 2007-03-09 | 423 | 50% | 2.5d | 152.25d | 0d |  | Ram | 40h | 20h |  |
| 507 | 1.2.2.7.2.2 | Domain Analysis Model/BRIDG Harmonization | 5d | 2007-03-12 A | 2007-03-16 | 506 | 25% | 3.75d | 152d |  |  | Sean | 40h | 10h |  |
| 508 | 1.2.2.7.3 | **Semantic Interoperability** | 6d | 2007-03-16 A | 2007-03-23 |  | 21% | 4.75d | 147d |  |  |  | 72h | 10h | VCDE |
| 509 | 1.2.2.7.3.1 | Begin process of matching to existing CDEs | 5d | 2007-03-16 A | 2007-03-22 | 506 | 25% | 3.75d | 147d | 0d | start no earlier than 2007-03-16 | Sean | 40h | 10h |  |
| 510 | 1.2.2.7.3.2 | Meeting with VCDE | 1d | 2007-03-23 | 2007-03-23 | 509 |  |  | 147d |  | start no earlier than 2007-03-23 | Sean; Lynne W.; Brian D; Brenda M. | 32h |  |  |
| 511 | 1.2.2.8 | **Implementation (Iter-2)** | 22d | 2007-03-01 A | 2007-03-30 |  | 63% | 8.21d | 0d |  |  |  | 1704h | 1120h |  |
| 512 | 1.2.2.8.1 | **Web interface** | 10d | 2007-03-05 A | 2007-03-16 |  | 75% | 2.5d | 4d |  |  |  | 80h | 60h |  |
| 513 | 1.2.2.8.1.1 | UI Refinement | 10d | 2007-03-05 A | 2007-03-16 | 423 | 75% | 2.5d | 4d |  |  | Richard | 80h | 60h |  |
| 514 | 1.2.2.8.2 | **Bug Fixes** | 6d | 2007-03-01 A | 2007-03-08 |  | 79% | 1.25d | 10d |  |  |  |  |  |  |
| 515 | 1.2.2.8.2.1 | Review and assignment of Bugs from prior iteration | 1d | 2007-03-01 A | 2007-03-01 A |  | 100% |  |  |  |  |  |  |  |  |
| 516 | 1.2.2.8.2.2 | Bug Fixes | 5d | 2007-03-02 A | 2007-03-08 | 515 | 75% | 1.25d | 10d |  |  |  |  |  |  |
| 517 | 1.2.2.8.3 | **Implement Use Cases** | 22d | 2007-03-01 A | 2007-03-30 |  | 61% | 8.48d | 0d |  |  |  | 1624h | 1060h |  |
| 518 | 1.2.2.8.3.1 | **Protocol Abstraction (Diseases)** | 11d | 2007-03-01 A | 2007-03-15 |  | 90% | 1.1d | 5d |  |  |  | 120h | 108h |  |
| 519 | 1.2.2.8.3.1.1 | Implement O/R mapping | 3d | 2007-03-01 A | 2007-03-05 |  | 90% | 0.3d | 13d | 0d |  | Krikor | 24h | 21.6h |  |
| 520 | 1.2.2.8.3.1.2 | Develop DAO | 3d | 2007-03-05 A | 2007-03-07 | 519SS+2d | 90% | 0.3d | 11d | 0d |  | Krikor | 24h | 21.6h |  |
| 521 | 1.2.2.8.3.1.3 | Develop Service | 3d | 2007-03-07 A | 2007-03-09 | 520SS+2d | 90% | 0.3d | 9d | 0d |  | Krikor | 24h | 21.6h |  |
| 522 | 1.2.2.8.3.1.4 | Develop controller and command objects | 3d | 2007-03-09 A | 2007-03-13 | 521SS+2d | 90% | 0.3d | 7d | 0d |  | Krikor | 24h | 21.6h |  |
| 523 | 1.2.2.8.3.1.5 | Develop JUnit test cases | 3d | 2007-03-13 A | 2007-03-15 | 522SS+2d | 90% | 0.3d | 1.25d | 0d |  | Krikor | 24h | 21.6h |  |
| 524 | 1.2.2.8.3.2 | **Data Exchange with Local CTMS (Import)** | 11d | 2007-03-16 A | 2007-03-30 |  | 25% | 8.25d | 0d |  |  |  | 176h | 44h |  |
| 525 | 1.2.2.8.3.2.1 | Implement O/R mapping | 5d | 2007-03-16 A | 2007-03-22 | 523 | 25% | 3.75d | 0d |  |  | Krikor | 40h | 10h |  |
| 526 | 1.2.2.8.3.2.2 | Develop DAO | 5d | 2007-03-20 A | 2007-03-26 | 525SS+2d | 25% | 3.75d | -2d | 0d |  | Krikor | 40h | 10h |  |
| 527 | 1.2.2.8.3.2.3 | Develop Service | 5d | 2007-03-22 A | 2007-03-28 | 526SS+2d | 25% | 3.75d | -4d | 0d |  | Krikor | 40h | 10h |  |
| 528 | 1.2.2.8.3.2.4 | Develop controller and command objects | 4d | 2007-03-26 A | 2007-03-29 | 527SS+2d | 25% | 3d | -5d | 0d |  | Krikor | 32h | 8h |  |
| 529 | 1.2.2.8.3.2.5 | Develop JUnit test cases | 3d | 2007-03-28 A | 2007-03-30 | 528SS+2d | 25% | 2.25d | -6d | 0d |  | Krikor | 24h | 6h |  |

| ID | WBS | Task | Type | Duration | Start | Finish | Predecessors | Complete | Remaining | Total slack | Free slack | Resources | Work | Actual work | Text1 |
| --- | --- | --- | --- | --- | --- | --- | --- | --- | --- | --- | --- | --- | --- | --- | --- |
| 530 | 1.2.2.8.3.3 | **AE Data Collection (cont'd)** |  | 16d | 2007-03-05 A | 2007-03-26 |  | 25% | 12d | 0d |  |  | 336h | 84h |  |
| 531 | 1.2.2.8.3.3.1 | Implement O/R mapping |  | 5d | 2007-03-05 A | 2007-03-09 | 423 | 25% | 3.75d | 9d | 0d | Rhett | 40h | 10h |  |
| 532 | 1.2.2.8.3.3.2 | Develop DAO |  | 10d | 2007-03-07 A | 2007-03-20 | 531SS+2d | 25% | 7.5d | 2d | 0d | Rhett | 80h | 20h |  |
| 533 | 1.2.2.8.3.3.3 | Develop Service |  | 10d | 2007-03-09 A | 2007-03-22 | 532SS+2d | 25% | 7.5d | 0d |  | Rhett | 80h | 20h |  |
| 534 | 1.2.2.8.3.3.4 | Develop controller and command objects |  | 10d | 2007-03-13 A | 2007-03-26 | 533SS+2d | 25% | 7.5d | -2d | 0d | Rhett | 80h | 20h |  |
| 535 | 1.2.2.8.3.3.5 | Develop JUnit test cases |  | 7d | 2007-03-15 A | 2007-03-23 | 534SS+2d | 25% | 5.25d | -1d | 0d | Rhett | 56h | 14h |  |
| 536 | 1.2.2.8.3.4 | **Protocol Abstraction (Study Investigators/Personnel)** |  | 16d | 2007-03-05 A | 2007-03-26 |  | 75% | 4d | 0d |  |  | 336h | 252h |  |
| 537 | 1.2.2.8.3.4.1 | Implement O/R mapping |  | 5d | 2007-03-05 A | 2007-03-09 | 423 | 75% | 1.25d | 9d | 0d | Kulasekaran | 40h | 30h |  |
| 538 | 1.2.2.8.3.4.2 | Develop DAO |  | 10d | 2007-03-07 A | 2007-03-20 | 537SS+2d | 75% | 2.5d | 2d | 0d | Kulasekaran | 80h | 60h |  |
| 539 | 1.2.2.8.3.4.3 | Develop Service |  | 10d | 2007-03-09 A | 2007-03-22 | 538SS+2d | 75% | 2.5d | 0d |  | Kulasekaran | 80h | 60h |  |
| 540 | 1.2.2.8.3.4.4 | Develop controller and command objects |  | 10d | 2007-03-13 A | 2007-03-26 | 539SS+2d | 75% | 2.5d | -2d | 0d | Kulasekaran | 80h | 60h |  |
| 541 | 1.2.2.8.3.4.5 | Develop JUnit test cases |  | 7d | 2007-03-15 A | 2007-03-23 | 540SS+2d | 75% | 1.75d | -1d | 0d | Kulasekaran | 56h | 42h |  |
| 542 | 1.2.2.8.3.5 | **Protocol Level Triggers/Notification and Reports (cont'd)** |  | 16d | 2007-03-05 A | 2007-03-26 |  | 75% | 4d | 0d |  |  | 336h | 252h |  |
| 543 | 1.2.2.8.3.5.1 | Implement O/R mapping |  | 5d | 2007-03-05 A | 2007-03-09 | 423 | 75% | 1.25d | 9d | 0d | Sujith | 40h | 30h |  |
| 544 | 1.2.2.8.3.5.2 | Develop DAO |  | 10d | 2007-03-07 A | 2007-03-20 | 543SS+2d | 75% | 2.5d | 2d | 0d | Sujith | 80h | 60h |  |
| 545 | 1.2.2.8.3.5.3 | Develop Service |  | 10d | 2007-03-09 A | 2007-03-22 | 544SS+2d | 75% | 2.5d | 0d |  | Sujith | 80h | 60h |  |
| 546 | 1.2.2.8.3.5.4 | Develop controller and command objects |  | 10d | 2007-03-13 A | 2007-03-26 | 545SS+2d | 75% | 2.5d | -2d | 0d | Sujith | 80h | 60h |  |
| 547 | 1.2.2.8.3.5.5 | Develop JUnit test cases |  | 7d | 2007-03-15 A | 2007-03-23 | 546SS+2d | 75% | 1.75d | -1d | 0d | Sujith | 56h | 42h |  |
| 548 | 1.2.2.8.3.6 | **Role Based Authorization** |  | 20d | 2007-03-05 A | 2007-03-30 A |  | 100% |  |  |  |  | 320h | 320h |  |
| 549 | 1.2.2.8.3.6.1 | Finish Acegi-CSM Tasks |  | 10d | 2007-03-05 A | 2007-03-16 A | 423 | 100% |  |  |  | Joshua; Vinay | 160h | 160h |  |
| 550 | 1.2.2.8.3.6.2 | Implement Study Participant Login/Authorization |  | 5d | 2007-03-19 A | 2007-03-23 A | 549 | 100% |  |  |  | Joshua; Vinay | 80h | 80h |  |
| 551 | 1.2.2.8.3.6.3 | Implement Study Coordinator Login/Authorization |  | 5d | 2007-03-26 A | 2007-03-30 A | 550 | 100% |  |  |  | Joshua; Vinay | 80h | 80h |  |
| 552 | 1.2.2.9 | **Testing (Iter-2)** |  | 37d | 2007-03-01 | 2007-04-20 |  |  |  | 16d |  |  | 360h |  |  |
| 553 | 1.2.2.9.1 | **Test Plan** |  | 20d | 2007-03-01 | 2007-03-28 |  |  |  | 144d |  |  | 160h |  |  |
| 554 | 1.2.2.9.1.1 | Update Test Plan Document (Task 3.6) |  | 10d | 2007-03-01 | 2007-03-14 | 418 |  |  | 144d | 0d | Ram | 80h |  |  |
| 555 | 1.2.2.9.1.2 | Submit to BAH | milestone | 0d | 2007-03-14 | 2007-03-14 | 554 |  |  | 144d | 0d | Edmond |  |  | 3.6 |
| 556 | 1.2.2.9.1.3 | Formal Review by BAH |  | 10d | 2007-03-15 | 2007-03-28 | 555 |  |  | 144d |  | BAH | 80h |  |  |

| ID | WBS | Task | Type | Duration | Start | Finish | Predecessors | Baseline start | Baseline finish | Baseline duration | Total slack | Free slack | Constraint | Resources | Work |
| --- | --- | --- | --- | --- | --- | --- | --- | --- | --- | --- | --- | --- | --- | --- | --- |
| 557 | 1.2.2.9.2 | **Run Tests** |  | 15d | 2007-04-02 | 2007-04-20 |  |  |  |  | -6d | 0d |  |  | 200h |
| 558 | 1.2.2.9.2.1 | Testing |  | 5d | 2007-04-02 | 2007-04-06 | 511 |  |  |  | -6d | 0d |  | Renee; David; Natasha | 120h |
| 559 | 1.2.2.9.2.2 | Submit Test Results Report (Task 3.8) | milestone | 0d | 2007-04-06 | 2007-04-06 | 558 |  |  |  | 127d | 0d |  | Edmond |  |
| 560 | 1.2.2.9.2.3 | Formal Review of Test results Report |  | 10d | 2007-04-09 | 2007-04-20 | 559 |  |  |  | 127d |  |  | BAH | 80h |
| 561 | 1.2.2.10 | **Documentation (Iter-2)** |  | 17d | 2007-03-22 | 2007-04-13 |  |  |  |  | 132d |  |  |  | 776h |
| 562 | 1.2.2.10.1 | **Installation Guide** |  | 13d | 2007-03-22 | 2007-04-09 |  |  |  |  | 136d |  |  |  | 288h |
| 563 | 1.2.2.10.1.1 | Update Installation Guide |  | 3d | 2007-03-22 | 2007-03-26 | 579FS-7d |  |  |  | 136d | 0d |  | Rhett; Edmond | 48h |
| 564 | 1.2.2.10.1.2 | Submit to BAH/Adopters | milestone | 0d | 2007-03-26 | 2007-03-26 | 563 |  |  |  | 136d | 0d |  | BAH |  |
| 565 | 1.2.2.10.1.3 | Review of Installation Guide |  | 10d | 2007-03-27 | 2007-04-09 | 564 |  |  |  | 136d |  |  | BAH; Adopters; Mentors | 240h |
| 566 | 1.2.2.10.2 | **Administrators Guide** |  | 15d | 2007-03-26 | 2007-04-13 |  |  |  |  | 132d |  |  |  | 240h |
| 567 | 1.2.2.10.2.1 | Update Administrators Guide |  | 5d | 2007-03-26 | 2007-03-30 | 579FS-7d, 511FS-5d |  |  |  | 132d | 0d |  |  |  |
| 568 | 1.2.2.10.2.2 | Submit to BAH | milestone | 0d | 2007-03-30 | 2007-03-30 | 567 |  |  |  | 132d | 0d |  | BAH |  |
| 569 | 1.2.2.10.2.3 | Review of Admin Guide |  | 10d | 2007-04-02 | 2007-04-13 | 568 |  |  |  | 132d |  |  | BAH; Adopters; Mentors | 240h |
| 570 | 1.2.2.10.3 | **Release Notes** |  | 11d | 2007-03-26 | 2007-04-09 |  |  |  |  | 136d |  |  |  | 248h |
| 571 | 1.2.2.10.3.1 | Update Release Notes |  | 1d | 2007-03-26 | 2007-03-26 | 579FS-7d, 511FS-5d |  |  |  | 136d | 0d |  | Edmond | 8h |
| 572 | 1.2.2.10.3.2 | Submit to BAH | milestone | 0d | 2007-03-26 | 2007-03-26 | 571 |  |  |  | 136d | 0d |  | BAH |  |
| 573 | 1.2.2.10.3.3 | Review of Release Notes |  | 10d | 2007-03-27 | 2007-04-09 | 572 |  |  |  | 136d |  |  | BAH; Adopters; Mentors | 240h |
| 574 | 1.2.2.11 | **Deployment (Iter-2)** |  | 10d | 2007-04-06 | 2007-04-20 |  |  |  |  | -6d | 0d |  |  | 112h |
| 575 | 1.2.2.11.1 | Submit prototype code (Task 3.5) | milestone | 0d | 2007-04-06 | 2007-04-06 | 558 |  |  |  | 127d | 0d |  | Ram |  |
| 576 | 1.2.2.11.2 | Formal Review of Code by BAH |  | 10d | 2007-04-09 | 2007-04-20 | 575 |  |  |  | 127d |  |  | BAH | 80h |
| 577 | 1.2.2.11.3 | Deploy Prototype for Iteration 1 at Mayo and WF |  | 1d | 2007-04-09 | 2007-04-09 | 558 |  |  |  | -6d | 0d |  | Vinay; Mayo; WF | 24h |
| 578 | 1.2.2.11.4 | Make URL Public |  | 1d | 2007-04-09 | 2007-04-09 | 558 |  |  |  | 136d |  |  | Vinay | 8h |
| 579 | 1.2.2.12 | Finish Iteration 2 | milestone | 0d | 2007-03-31 | 2007-03-31 | 577 | 2007-03-29 | 2007-04-04 | 5d | -6d | 0d | must finish on 2007-03-31 |  |  |
| 580 | 1.2.3 | **Construction Phase Iteration 3** |  | 38d | 2007-04-01 | 2007-05-23 | 579 | 2007-04-04 | 2007-05-07 | 23d | 0d |  |  |  | 5856h |
| 581 | 1.2.3.1 | Begin Iteration 3 | milestone | 0d | 2007-04-01 | 2007-04-01 |  | 2007-03-02 | 2007-03-02 | 0d | 0d |  | must start on 2007-04-01 |  |  |

Notes:
- 559: Text1: 3.8
- 575: Text1: 3.5
- 580: Text1: 1.1, 1.2, 1.3, 1.4, 2.10, 3.1, 3.2, 3.3, 3.4, 3.5, 3.6, 3.8, 3.10, 3.13, 3.14 / Text3: AE Data Collection,CandidateAE,SolicitedAE,Triggers/Notifications,Import,Reports(CreateReportForms)

| ID | WBS | Task | Duration | Start | Finish | Predecessors | Total slack | Free slack | Constraint | Resources | Work | Text1 |
| --- | --- | --- | --- | --- | --- | --- | --- | --- | --- | --- | --- | --- |
| 582 | 1.2.3.2 | **Iteration Planning (Iter-3)** | 2d | 2007-04-02 | 2007-04-03 |  | 104d |  |  |  | 48h |  |
| 583 | 1.2.3.2.1 | Review and finalize Ucases and Work List for Iteration | 1d | 2007-04-02 | 2007-04-02 | 581 | 104d | 0d |  | Edmond; Ram; Vinay | 24h |  |
| 584 | 1.2.3.2.2 | Review and finalize assignments for Iteration | 1d | 2007-04-03 | 2007-04-03 | 583 | 104d | 0d |  | Edmond; Ram; Vinay | 24h |  |
| 585 | 1.2.3.3 | **Project Management (Iter-3)** | 21d | 2007-04-02 | 2007-04-30 |  | 3d |  |  |  | 160h |  |
| 586 | 1.2.3.3.1 | Update Project Plan | 3d | 2007-04-04 | 2007-04-06 | 584 | 137d |  |  | Edmond | 24h |  |
| 587 | 1.2.3.3.2 | **CaAERS CCB (Task 2.10)** | 1d | 2007-04-02 | 2007-04-02 |  | 141d |  |  |  | 8h | 2.10 |
| 588 | 1.2.3.3.2.1 | CCB Meetings | 1d | 2007-04-02 | 2007-04-02 |  | 141d |  | finish no earlier than 2007-04-02 | Edmond | 8h |  |
| 589 | 1.2.3.3.3 | **Weekly Team/Developers Meeting** | 16d | 2007-04-02 | 2007-04-23 |  | 126d |  |  |  | 32h |  |
| 590 | 1.2.3.3.3.1 | Weekly Team Meeting 1 | 1d | 2007-04-02 | 2007-04-02 |  | 141d |  | start no earlier than 2007-04-02 | Edmond | 8h |  |
| 591 | 1.2.3.3.3.2 | Weekly Team Meeting 2 | 1d | 2007-04-09 | 2007-04-09 |  | 136d |  | start no earlier than 2007-04-09 | Edmond | 8h |  |
| 592 | 1.2.3.3.3.3 | Weekly Team Meeting 3 | 1d | 2007-04-16 | 2007-04-16 |  | 131d |  | start no earlier than 2007-04-16 | Edmond | 8h |  |
| 593 | 1.2.3.3.3.4 | Weekly Team Meeting 4 | 1d | 2007-04-23 | 2007-04-23 |  | 126d |  | start no earlier than 2007-04-23 | Edmond | 8h |  |
| 594 | 1.2.3.3.4 | **Status and Risk Reporting** | 17d | 2007-04-06 | 2007-04-30 |  | 16d |  |  |  | 64h | 1.3, 1.4 |
| 595 | 1.2.3.3.4.1 | Bi-weekly Risk Update in caMP (Task 1.4) | 1d | 2007-04-06 | 2007-04-06 |  | 137d |  | start no earlier than 2007-04-06 | Edmond | 8h |  |
| 596 | 1.2.3.3.4.2 | Bi-weekly Risk Matrix Update Meeting | 1d | 2007-04-06 | 2007-04-06 |  | 137d |  | start no earlier than 2007-04-06 | Edmond | 8h |  |
| 597 | 1.2.3.3.4.3 | Bi-weekly Risk Update in caMP (Task 1.4) | 1d | 2007-04-20 | 2007-04-20 |  | 127d |  | start no earlier than 2007-04-20 | Edmond | 8h |  |
| 598 | 1.2.3.3.4.4 | Bi-weekly Risk Matrix Update Meeting | 1d | 2007-04-20 | 2007-04-20 |  | 127d |  | start no earlier than 2007-04-20 | Edmond | 8h |  |
| 599 | 1.2.3.3.4.5 | Bi-weekly Status Update Meeting with BAH/NCI | 1d | 2007-04-13 | 2007-04-13 |  | 132d |  | start no earlier than 2007-04-13 | Edmond | 8h |  |
| 600 | 1.2.3.3.4.6 | Bi-weekly Status Update Meeting with BAH/NCI | 1d | 2007-04-27 | 2007-04-27 |  | 122d |  | start no earlier than 2007-04-27 | Edmond | 8h |  |
| 601 | 1.2.3.3.4.7 | Monthly Status Report (Task 1.3) | 1d | 2007-04-30 | 2007-04-30 |  | 0d |  | must finish on 2007-04-30 | Edmond | 8h |  |
| 602 | 1.2.3.3.4.8 | Monthly Risk Matrix Update (Task 1.3) | 1d | 2007-04-30 | 2007-04-30 | 601SS | 121d |  |  | Edmond | 8h |  |
| 603 | 1.2.3.3.5 | **Collaboration Management Activities** | 16d | 2007-04-05 | 2007-04-26 |  | 0d |  |  |  | 32h |  |
| 604 | 1.2.3.3.5.1 | Adopters Mtg | 1d | 2007-04-05 | 2007-04-05 |  | 0d |  | must start on 2007-04-05 | Edmond | 8h |  |
| 605 | 1.2.3.3.5.2 | Bi-Weekly AE SIG Meeting | 1d | 2007-04-12 | 2007-04-12 |  | 133d |  | start no earlier than 2007-04-12 | Edmond | 8h |  |
| 606 | 1.2.3.3.5.3 | Adopters Mtg | 1d | 2007-04-19 | 2007-04-19 |  | 128d |  | start no earlier than 2007-04-19 | Edmond | 8h |  |
| 607 | 1.2.3.3.5.4 | Bi-Weekly AE SIG Meeting | 1d | 2007-04-26 | 2007-04-26 |  | 123d |  | start no earlier than 2007-04-26 | Edmond | 8h |  |

| ID | WBS | Task | Type | Duration | Start | Finish | Predecessors | Total slack | Free slack | Resources | Work |
| --- | --- | --- | --- | --- | --- | --- | --- | --- | --- | --- | --- |
| 608 | 1.2.3.4 | **Environment (Iter-3)** |  | 3d | 2007-04-02 | 2007-04-04 |  | 139d |  |  | 24h |
| 609 | 1.2.3.4.1 | Update Environment |  | 3d | 2007-04-02 | 2007-04-04 |  | 139d |  | Vinay | 24h |
| 610 | 1.2.3.5 | **SCM (Iter-3)** |  | 5d | 2007-04-02 | 2007-04-06 |  | 137d |  |  | 40h |
| 611 | 1.2.3.5.1 | Manage Repository |  | 5d | 2007-04-02 | 2007-04-06 |  | 137d |  | Rhett | 40h |
| 612 | 1.2.3.6 | **Requirements (Iter-3)** |  | 30d | 2007-04-02 | 2007-05-11 |  | 112d |  |  | 1096h |
| 613 | 1.2.3.6.1 | **Requirements Gathering and Elucidation** |  | 3d | 2007-04-02 | 2007-04-04 |  | 139d |  |  | 216h |
| 614 | 1.2.3.6.1.1 | DCP Reqts (Continued) |  | 2d | 2007-04-02 | 2007-04-03 |  | 140d |  | Sean; DCP | 32h |
| 615 | 1.2.3.6.1.2 | MedDRA |  | 2d | 2007-04-02 | 2007-04-03 |  | 140d |  | Sean | 16h |
| 616 | 1.2.3.6.1.3 | Begin Talks with AdEERS Tech. POC |  | 3d | 2007-04-02 | 2007-04-04 |  | 139d |  | Ram; Sean; Edmond | 72h |
| 617 | 1.2.3.6.1.4 | Triggers/Notification |  | 2d | 2007-04-02 | 2007-04-03 |  | 140d |  | Sean; Ann; DCP | 48h |
| 618 | 1.2.3.6.1.5 | Report Requirements |  | 2d | 2007-04-02 | 2007-04-03 |  | 140d |  | Sean; Ann; DCP | 48h |
| 619 | 1.2.3.6.2 | **Updated Use Case Specification and Realization** |  | 30d | 2007-04-02 | 2007-05-11 |  | 112d |  |  | 280h |
| 620 | 1.2.3.6.2.1 | Developer draft |  | 5d | 2007-04-02 | 2007-04-06 |  | 112d | 0d | Sean | 40h |
| 621 | 1.2.3.6.2.2 | Adopters/Collobators Review |  | 5d | 2007-04-09 | 2007-04-13 | 620 | 112d | 0d | Mayo; WF | 80h |
| 622 | 1.2.3.6.2.3 | Update Use Case Document |  | 5d | 2007-04-16 | 2007-04-20 | 621 | 112d | 0d | Sean | 40h |
| 623 | 1.2.3.6.2.4 | Submit Updated Use Case Document to BAH (Task 3.1) | milestone | 0d | 2007-04-20 | 2007-04-20 | 622 | 112d | 0d | Edmond |  |
| 624 | 1.2.3.6.2.5 | Formal Review of Updated Use Case Document |  | 15d | 2007-04-23 | 2007-05-11 | 623 | 112d |  | BAH | 120h |
| 625 | 1.2.3.6.3 | **Updated SRS Document** |  | 30d | 2007-04-02 | 2007-05-11 |  | 112d |  |  | 280h |
| 626 | 1.2.3.6.3.1 | Developer draft |  | 5d | 2007-04-02 | 2007-04-06 |  | 112d | 0d | Sean | 40h |
| 627 | 1.2.3.6.3.2 | Adopters/Collobators Review |  | 5d | 2007-04-09 | 2007-04-13 | 626 | 112d | 0d | Mayo; WF | 80h |
| 628 | 1.2.3.6.3.3 | Update SRS |  | 5d | 2007-04-16 | 2007-04-20 | 627 | 112d | 0d | Sean | 40h |
| 629 | 1.2.3.6.3.4 | Submit Updated SRS Document to BAH (Task 3.2) | milestone | 0d | 2007-04-20 | 2007-04-20 | 628 | 112d | 0d | Mayo; WF |  |
| 630 | 1.2.3.6.3.5 | Formal Review of Updated SRS |  | 15d | 2007-04-23 | 2007-05-11 | 629 | 112d |  | BAH | 120h |
| 631 | 1.2.3.6.4 | **Updated UML Static Class Diagram Model** |  | 30d | 2007-04-02 | 2007-05-11 |  | 112d |  |  | 320h |
| 632 | 1.2.3.6.4.1 | Developer draft |  | 5d | 2007-04-02 | 2007-04-06 |  | 112d | 0d | Ram; Sean | 80h |
| 633 | 1.2.3.6.4.2 | Adopters/Collobators Review |  | 5d | 2007-04-09 | 2007-04-13 | 632 | 112d | 0d | Mayo; WF | 80h |
| 634 | 1.2.3.6.4.3 | Update UML |  | 5d | 2007-04-16 | 2007-04-20 | 633 | 112d | 0d | Sean | 40h |
| 635 | 1.2.3.6.4.4 | Submit UML to BAH (Task 3.3) | milestone | 0d | 2007-04-20 | 2007-04-20 | 634 | 112d | 0d | Edmond |  |
| 636 | 1.2.3.6.4.5 | Formal Review of UML |  | 15d | 2007-04-23 | 2007-05-11 | 635 | 112d |  | BAH | 120h |

| ID | WBS | Task | Duration | Start | Finish | Predecessors | Total slack | Free slack | Resources | Work |
| --- | --- | --- | --- | --- | --- | --- | --- | --- | --- | --- |
| 637 | 1.2.3.7 | **Analysis and Design (Iter-3)** | 29d | 2007-04-02 | 2007-05-10 |  | 113d |  |  | 568h |
| 638 | 1.2.3.7.1 | **Design Documents** | 29d | 2007-04-02 | 2007-05-10 |  | 113d |  |  | 400h |
| 639 | 1.2.3.7.1.1 | **AE Data Collection (cont'd)** | 17d | 2007-04-04 | 2007-04-26 |  | 113d |  |  | 176h |
| 640 | 1.2.3.7.1.1.1 | Develop appropriate UML Artifacts | 5d | 2007-04-04 | 2007-04-10 | 584 | 113d | 0d | Rhett | 40h |
| 641 | 1.2.3.7.1.1.2 | Create Design Document | 5d | 2007-04-11 | 2007-04-17 | 640 | 113d | 0d | Rhett | 40h |
| 642 | 1.2.3.7.1.1.3 | Adopters/Collaborators Review | 5d | 2007-04-18 | 2007-04-24 | 641 | 113d | 0d | Mayo; WF | 80h |
| 643 | 1.2.3.7.1.1.4 | Developers Update | 2d | 2007-04-25 | 2007-04-26 | 642 | 113d | 0d | Rhett | 16h |
| 644 | 1.2.3.7.1.2 | **Candidate AE** | 1d | 2007-04-02 | 2007-04-02 |  | 131d |  |  | 24h |
| 645 | 1.2.3.7.1.2.1 | Develop appropriate UML Artifacts | 1d | 2007-04-02 | 2007-04-02 |  | 141d |  | Kulasekeran | 8h |
| 646 | 1.2.3.7.1.2.2 | Create Design Document | 1d | 2007-04-02 | 2007-04-02 |  | 141d |  | Kulasekeran | 8h |
| 647 | 1.2.3.7.1.2.3 | Adopters/Collaborators Review | 1d | 2007-04-02 | 2007-04-02 |  | 141d |  |  |  |
| 648 | 1.2.3.7.1.2.4 | Developers Update | 1d | 2007-04-02 | 2007-04-02 |  | 131d | 16d | Kulasekeran | 8h |
| 649 | 1.2.3.7.1.3 | **Solicited AE** | 1d | 2007-04-02 | 2007-04-02 |  | 141d |  |  | 24h |
| 650 | 1.2.3.7.1.3.1 | Develop appropriate UML Artifacts | 1d | 2007-04-02 | 2007-04-02 |  | 141d |  | Kulasekeran | 8h |
| 651 | 1.2.3.7.1.3.2 | Create Design Document | 1d | 2007-04-02 | 2007-04-02 |  | 141d |  | Kulasekeran | 8h |
| 652 | 1.2.3.7.1.3.3 | Adopters/Collaborators Review | 1d | 2007-04-02 | 2007-04-02 |  | 141d |  |  |  |
| 653 | 1.2.3.7.1.3.4 | Developers Update | 1d | 2007-04-02 | 2007-04-02 |  | 141d |  | Kulasekeran | 8h |
| 654 | 1.2.3.7.1.4 | **Triggers and Notifications (cont'd)** | 17d | 2007-04-02 | 2007-04-24 |  | 115d |  |  | 176h |
| 655 | 1.2.3.7.1.4.1 | Develop appropriate UML Artifacts | 5d | 2007-04-02 | 2007-04-06 |  | 115d | 0d | Sujith | 40h |
| 656 | 1.2.3.7.1.4.2 | Create Design Document | 5d | 2007-04-09 | 2007-04-13 | 655 | 115d | 0d | Sujith | 40h |
| 657 | 1.2.3.7.1.4.3 | Adopters/Collaborators Review | 5d | 2007-04-16 | 2007-04-20 | 656 | 115d | 0d | Mayo; WF | 80h |
| 658 | 1.2.3.7.1.4.4 | Developers Update | 2d | 2007-04-23 | 2007-04-24 | 657 | 115d | 0d | Sujith | 16h |
| 659 | 1.2.3.7.1.5 | **Reports: Create Report Form** | 17d | 2007-04-02 | 2007-04-24 |  | 125d |  |  |  |
| 660 | 1.2.3.7.1.5.1 | Develop appropriate UML Artifacts | 5d | 2007-04-02 | 2007-04-06 |  | 125d | 0d |  |  |
| 661 | 1.2.3.7.1.5.2 | Create Design Document | 5d | 2007-04-09 | 2007-04-13 | 660 | 125d | 0d |  |  |
| 662 | 1.2.3.7.1.5.3 | Adopters/Collaborators Review | 5d | 2007-04-16 | 2007-04-20 | 661 | 125d | 0d |  |  |
| 663 | 1.2.3.7.1.5.4 | Developers Update | 2d | 2007-04-23 | 2007-04-24 | 662 | 125d |  |  |  |

| ID | WBS | Task | Type | Duration | Start | Finish | Predecessors | Baseline start | Baseline finish | Baseline duration | Total slack | Free slack | Resources | Work | Text1 | Text2 |
| --- | --- | --- | --- | --- | --- | --- | --- | --- | --- | --- | --- | --- | --- | --- | --- | --- |
| 664 | 1.2.3.7.1.6 | **Role Based Authorization (cont'd)** |  | 1d | 2007-04-02 | 2007-04-02 |  |  |  |  | 141d |  |  |  |  |  |
| 665 | 1.2.3.7.1.6.1 | Develop appropriate UML Artifacts |  | 1d | 2007-04-02 | 2007-04-02 |  |  |  |  | 141d |  |  |  |  |  |
| 666 | 1.2.3.7.1.6.2 | Create Design Document |  | 1d | 2007-04-02 | 2007-04-02 |  |  |  |  | 141d |  |  |  |  |  |
| 667 | 1.2.3.7.1.6.3 | Adopters/Collaborators Review |  | 1d | 2007-04-02 | 2007-04-02 |  |  |  |  | 141d |  |  |  |  |  |
| 668 | 1.2.3.7.1.6.4 | Developers Update |  | 1d | 2007-04-02 | 2007-04-02 |  |  |  |  | 141d |  |  |  |  |  |
| 669 | 1.2.3.7.1.7 | Deliver Design document to BAH (Task 3.4) | milestone | 0d | 2007-04-26 | 2007-04-26 | 643, 648, 658 |  |  |  | 123d |  |  |  | 3.4 |  |
| 670 | 1.2.3.7.1.8 | Deliver UML to BAH (Task 3.3) | milestone | 0d | 2007-04-26 | 2007-04-26 | 643, 648, 658 |  |  |  | 113d | 0d |  |  | 3.3 |  |
| 671 | 1.2.3.7.1.9 | Formal Review by BAH |  | 10d | 2007-04-27 | 2007-05-10 | 670 |  |  |  | 113d |  |  |  |  |  |
| 672 | 1.2.3.7.2 | **Modeling** |  | 5d | 2007-04-02 | 2007-04-06 |  |  |  |  | 137d |  |  | 96h |  | BRIDG |
| 673 | 1.2.3.7.2.1 | Update Implementation Model |  | 2d | 2007-04-04 | 2007-04-05 | 584 |  |  |  | 138d |  | Ram | 16h |  |  |
| 674 | 1.2.3.7.2.2 | Update Domain Analysis Model/BRIDG Harmonization |  | 5d | 2007-04-02 | 2007-04-06 |  |  |  |  | 137d |  | Sean | 40h |  |  |
| 675 | 1.2.3.7.2.3 | Create/Update Dynamic Models (BRIDG) |  | 5d | 2007-04-02 | 2007-04-06 |  |  |  |  | 137d |  | Sean | 40h |  |  |
| 676 | 1.2.3.7.3 | **Semantic Integration** |  | 6d | 2007-04-02 | 2007-04-09 |  | 2007-01-12 | 2007-01-26 | 11d | 136d |  |  | 72h |  | VCDE |
| 677 | 1.2.3.7.3.1 | CDE Gap Analysis/Report |  | 5d | 2007-04-02 | 2007-04-06 |  | 2007-01-12 | 2007-01-18 | 5d | 136d | 0d | Sean | 40h |  |  |
| 678 | 1.2.3.7.3.2 | Meeting with VCDE |  | 1d | 2007-04-09 | 2007-04-09 | 677 | 2007-01-26 | 2007-01-26 | 0d | 136d |  | Sean; Brian D; Lynne W; Brenda M | 32h |  |  |
| 679 | 1.2.3.8 | **Implementation (Iter-3)** |  | 18d | 2007-04-02 | 2007-04-25 |  |  |  |  | 104d | 0d |  | 2392h |  |  |
| 680 | 1.2.3.8.1 | **Web interface** |  | 5d | 2007-04-02 | 2007-04-06 |  |  |  |  | 117d |  |  | 40h |  |  |
| 681 | 1.2.3.8.1.1 | UI Refinement |  | 5d | 2007-04-02 | 2007-04-06 |  |  |  |  | 117d |  | Richard | 40h |  |  |
| 682 | 1.2.3.8.2 | **Bug Fixes** |  | 6d | 2007-04-02 | 2007-04-09 |  |  |  |  | 116d |  |  |  |  |  |
| 683 | 1.2.3.8.2.1 | Review and assignment of Bugs from prior iteration |  | 1d | 2007-04-02 | 2007-04-02 |  |  |  |  | 116d | 0d |  |  |  |  |
| 684 | 1.2.3.8.2.2 | Bug Fixes |  | 5d | 2007-04-03 | 2007-04-09 | 683 |  |  |  | 116d |  |  |  |  |  |
| 685 | 1.2.3.8.3 | **Implement Use Cases** |  | 16d | 2007-04-04 | 2007-04-25 | 584 |  |  |  | 104d |  |  | 2352h |  |  |
| 686 | 1.2.3.8.3.1 | **New Version of Study** |  | 16d | 2007-04-04 | 2007-04-25 |  |  |  |  | 104d |  |  | 336h |  |  |
| 687 | 1.2.3.8.3.1.1 | Implement O/R mapping |  | 5d | 2007-04-04 | 2007-04-10 | 584 |  |  |  | 104d | 0d | Kulasekaran | 40h |  |  |
| 688 | 1.2.3.8.3.1.2 | Develop DAO |  | 10d | 2007-04-06 | 2007-04-19 | 687SS+2d |  |  |  | 104d | 0d | Kulasekaran | 80h |  |  |
| 689 | 1.2.3.8.3.1.3 | Develop Service |  | 10d | 2007-04-10 | 2007-04-23 | 688SS+2d |  |  |  | 104d | 0d | Kulasekaran | 80h |  |  |
| 690 | 1.2.3.8.3.1.4 | Develop controller and command objects |  | 10d | 2007-04-12 | 2007-04-25 | 689SS+2d |  |  |  | 104d | 0d | Kulasekaran | 80h |  |  |
| 691 | 1.2.3.8.3.1.5 | Develop JUnit test cases |  | 7d | 2007-04-16 | 2007-04-24 | 690SS+2d |  |  |  | 105d |  | Kulasekaran | 56h |  |  |

| ID | WBS | Task | Duration | Start | Finish | Predecessors | Total slack | Free slack | Resources | Work | Text3 |
| --- | --- | --- | --- | --- | --- | --- | --- | --- | --- | --- | --- |
| 692 | 1.2.3.8.3.2 | **AE Data Collection (cont'd)** | 16d | 2007-04-04 | 2007-04-25 |  | 104d |  |  | 336h |  |
| 693 | 1.2.3.8.3.2.1 | Implement O/R mapping | 5d | 2007-04-04 | 2007-04-10 |  | 104d | 0d | Rhett | 40h |  |
| 694 | 1.2.3.8.3.2.2 | Develop DAO | 10d | 2007-04-06 | 2007-04-19 | 693SS+2d | 104d | 0d | Rhett | 80h |  |
| 695 | 1.2.3.8.3.2.3 | Develop Service | 10d | 2007-04-10 | 2007-04-23 | 694SS+2d | 104d | 0d | Rhett | 80h |  |
| 696 | 1.2.3.8.3.2.4 | Develop controller and command objects | 10d | 2007-04-12 | 2007-04-25 | 695SS+2d | 104d | 0d | Rhett | 80h |  |
| 697 | 1.2.3.8.3.2.5 | Develop JUnit test cases | 7d | 2007-04-16 | 2007-04-24 | 696SS+2d | 105d |  | Rhett | 56h |  |
| 698 | 1.2.3.8.3.3 | **Candidate AE** | 16d | 2007-04-04 | 2007-04-25 |  | 104d |  |  | 336h |  |
| 699 | 1.2.3.8.3.3.1 | Implement O/R mapping | 5d | 2007-04-04 | 2007-04-10 |  | 104d | 0d | Kulasekaran | 40h |  |
| 700 | 1.2.3.8.3.3.2 | Develop DAO | 10d | 2007-04-06 | 2007-04-19 | 699SS+2d | 104d | 0d | Kulasekaran | 80h |  |
| 701 | 1.2.3.8.3.3.3 | Develop Service | 10d | 2007-04-10 | 2007-04-23 | 700SS+2d | 104d | 0d | Kulasekaran | 80h |  |
| 702 | 1.2.3.8.3.3.4 | Develop controller and command objects | 10d | 2007-04-12 | 2007-04-25 | 701SS+2d | 104d | 0d | Kulasekaran | 80h |  |
| 703 | 1.2.3.8.3.3.5 | Develop JUnit test cases | 7d | 2007-04-16 | 2007-04-24 | 702SS+2d | 105d |  | Kulasekaran | 56h |  |
| 704 | 1.2.3.8.3.4 | **Solicted AE** | 16d | 2007-04-04 | 2007-04-25 |  | 104d |  |  | 336h |  |
| 705 | 1.2.3.8.3.4.1 | Implement O/R mapping | 5d | 2007-04-04 | 2007-04-10 |  | 104d | 0d | Kulasekaran | 40h |  |
| 706 | 1.2.3.8.3.4.2 | Develop DAO | 10d | 2007-04-06 | 2007-04-19 | 705SS+2d | 104d | 0d | Kulasekaran | 80h |  |
| 707 | 1.2.3.8.3.4.3 | Develop Service | 10d | 2007-04-10 | 2007-04-23 | 706SS+2d | 104d | 0d | Kulasekaran | 80h |  |
| 708 | 1.2.3.8.3.4.4 | Develop controller and command objects | 10d | 2007-04-12 | 2007-04-25 | 707SS+2d | 104d | 0d | Kulasekaran | 80h |  |
| 709 | 1.2.3.8.3.4.5 | Develop JUnit test cases | 7d | 2007-04-16 | 2007-04-24 | 708SS+2d | 105d |  | Kulasekaran | 56h |  |
| 710 | 1.2.3.8.3.5 | **Triggers and Notification (cont'd)** | 16d | 2007-04-04 | 2007-04-25 |  | 104d |  |  | 336h | Sponsor Level Rules |
| 711 | 1.2.3.8.3.5.1 | Implement O/R mapping | 5d | 2007-04-04 | 2007-04-10 |  | 104d | 0d | Sujith | 40h |  |
| 712 | 1.2.3.8.3.5.2 | Develop DAO | 10d | 2007-04-06 | 2007-04-19 | 711SS+2d | 104d | 0d | Sujith | 80h |  |
| 713 | 1.2.3.8.3.5.3 | Develop Service | 10d | 2007-04-10 | 2007-04-23 | 712SS+2d | 104d | 0d | Sujith | 80h |  |
| 714 | 1.2.3.8.3.5.4 | Develop controller and command objects | 10d | 2007-04-12 | 2007-04-25 | 713SS+2d | 104d | 0d | Sujith | 80h |  |
| 715 | 1.2.3.8.3.5.5 | Develop JUnit test cases | 7d | 2007-04-16 | 2007-04-24 | 714SS+2d | 105d |  | Sujith | 56h |  |

| ID | WBS | Task | Type | Duration | Start | Finish | Predecessors | Total slack | Free slack | Constraint | Resources | Work | Text1 |
| --- | --- | --- | --- | --- | --- | --- | --- | --- | --- | --- | --- | --- | --- |
| 716 | 1.2.3.8.3.6 | **Reports: Create Report Form** |  | 16d | 2007-04-04 | 2007-04-25 |  | 104d |  |  |  | 336h |  |
| 717 | 1.2.3.8.3.6.1 | Implement O/R mapping |  | 5d | 2007-04-04 | 2007-04-10 |  | 104d | 0d |  | Sujith | 40h |  |
| 718 | 1.2.3.8.3.6.2 | Develop DAO |  | 10d | 2007-04-06 | 2007-04-19 | 717SS+2d | 104d | 0d |  | Sujith | 80h |  |
| 719 | 1.2.3.8.3.6.3 | Develop Service |  | 10d | 2007-04-10 | 2007-04-23 | 718SS+2d | 104d | 0d |  | Sujith | 80h |  |
| 720 | 1.2.3.8.3.6.4 | Develop controller and command objects |  | 10d | 2007-04-12 | 2007-04-25 | 719SS+2d | 104d | 0d |  | Sujith | 80h |  |
| 721 | 1.2.3.8.3.6.5 | Develop JUnit test cases |  | 7d | 2007-04-16 | 2007-04-24 | 720SS+2d | 105d |  |  | Sujith | 56h |  |
| 722 | 1.2.3.8.3.7 | **Data Exchange: Import Data (cont'd)** |  | 16d | 2007-04-04 | 2007-04-25 |  | 104d |  |  |  | 336h |  |
| 723 | 1.2.3.8.3.7.1 | Implement O/R mapping |  | 5d | 2007-04-04 | 2007-04-10 |  | 104d | 0d |  | Krikor | 40h |  |
| 724 | 1.2.3.8.3.7.2 | Develop DAO |  | 10d | 2007-04-06 | 2007-04-19 | 723SS+2d | 104d | 0d |  | Krikor | 80h |  |
| 725 | 1.2.3.8.3.7.3 | Develop Service |  | 10d | 2007-04-10 | 2007-04-23 | 724SS+2d | 104d | 0d |  | Krikor | 80h |  |
| 726 | 1.2.3.8.3.7.4 | Develop controller and command objects |  | 10d | 2007-04-12 | 2007-04-25 | 725SS+2d | 104d | 0d |  | Krikor | 80h |  |
| 727 | 1.2.3.8.3.7.5 | Develop JUnit test cases |  | 7d | 2007-04-16 | 2007-04-24 | 726SS+2d | 105d |  |  | Krikor | 56h |  |
| 728 | 1.2.3.9 | **Testing (Iter-3)** |  | 38d | 2007-04-02 | 2007-05-23 |  | 104d |  |  |  | 400h |  |
| 729 | 1.2.3.9.1 | **Update Test Plan** |  | 20d | 2007-04-02 | 2007-04-27 |  | 122d |  |  |  | 160h |  |
| 730 | 1.2.3.9.1.1 | Update Test Plan Document (Task 3.6) |  | 10d | 2007-04-02 | 2007-04-13 |  | 122d | 0d |  | Ram | 80h |  |
| 731 | 1.2.3.9.1.2 | Submit to BAH | milestone | 0d | 2007-04-13 | 2007-04-13 | 730 | 122d | 0d |  | Edmond |  | 3.6 |
| 732 | 1.2.3.9.1.3 | Formal Review by BAH |  | 10d | 2007-04-16 | 2007-04-27 | 731 | 122d |  |  | BAH | 80h |  |
| 733 | 1.2.3.9.2 | **Run Tests** |  | 20d | 2007-04-26 | 2007-05-23 |  | 104d |  |  |  | 240h |  |
| 734 | 1.2.3.9.2.1 | Testing |  | 5d | 2007-04-26 | 2007-05-02 | 679 | 104d | 0d |  | Renee; David; Natasha | 120h |  |
| 735 | 1.2.3.9.2.2 | Submit Test Results Report (Task 3.8) | milestone | 0d | 2007-05-02 | 2007-05-02 | 734 | 104d | 0d |  | Edmond |  |  |
| 736 | 1.2.3.9.2.3 | Formal Review of Test results Report |  | 15d | 2007-05-03 | 2007-05-23 | 735 | 104d |  |  | BAH | 120h |  |
| 737 | 1.2.3.10 | **Documentation (Iter-3)** |  | 17d | 2007-04-16 | 2007-05-08 |  | 115d |  |  |  | 1024h |  |
| 738 | 1.2.3.10.1 | **Installation Guide** |  | 13d | 2007-04-20 | 2007-05-08 |  | 115d |  |  |  | 368h |  |
| 739 | 1.2.3.10.1.1 | Update Installation Guide |  | 3d | 2007-04-20 | 2007-04-24 |  | 115d | 0d | start no earlier than 2007-04-20 | Rhett; Edmond | 48h |  |
| 740 | 1.2.3.10.1.2 | Submit to BAH/Adopters | milestone | 0d | 2007-04-24 | 2007-04-24 | 739 | 115d | 0d |  | Edmond |  |  |
| 741 | 1.2.3.10.1.3 | Review of Installation Guide |  | 10d | 2007-04-25 | 2007-05-08 | 740 | 115d |  |  | BAH; NCI; Mayo; WF | 320h |  |

| ID | WBS | Task | Type | Duration | Start | Finish | Predecessors | Baseline start | Baseline finish | Baseline duration | Total slack | Free slack | Constraint | Resources | Work |
| --- | --- | --- | --- | --- | --- | --- | --- | --- | --- | --- | --- | --- | --- | --- | --- |
| 742 | 1.2.3.10.2 | **Administrators Guide** |  | 17d | 2007-04-16 | 2007-05-08 |  |  |  |  | 115d |  |  |  | 320h |
| 743 | 1.2.3.10.2.1 | Update Administrators Guide |  | 7d | 2007-04-16 | 2007-04-24 |  |  |  |  | 115d | 0d | start no earlier than 2007-04-16 |  |  |
| 744 | 1.2.3.10.2.2 | Submit to BAH | milestone | 0d | 2007-04-24 | 2007-04-24 | 743 |  |  |  | 115d | 0d |  | Edmond |  |
| 745 | 1.2.3.10.2.3 | Review of Admin Guide |  | 10d | 2007-04-25 | 2007-05-08 | 744 |  |  |  | 115d |  |  | BAH; NCI; Mayo; WF | 320h |
| 746 | 1.2.3.10.3 | **Release Notes** |  | 12d | 2007-04-23 | 2007-05-08 |  |  |  |  | 115d |  |  |  | 336h |
| 747 | 1.2.3.10.3.1 | Update Release Notes |  | 2d | 2007-04-23 | 2007-04-24 |  |  |  |  | 115d | 0d | start no earlier than 2007-04-23 | Edmond | 16h |
| 748 | 1.2.3.10.3.2 | Submit to BAH | milestone | 0d | 2007-04-24 | 2007-04-24 | 747 |  |  |  | 115d | 0d |  | Edmond |  |
| 749 | 1.2.3.10.3.3 | Review of Release Notes |  | 10d | 2007-04-25 | 2007-05-08 | 748 |  |  |  | 115d |  |  | BAH; NCI; Mayo; WF | 320h |
| 750 | 1.2.3.11 | **Deployment (Iter-3)** |  | 10d | 2007-05-02 | 2007-05-16 |  |  |  |  | 109d |  |  |  | 104h |
| 751 | 1.2.3.11.1 | Submit prototype code (Task 3.5) | milestone | 0d | 2007-05-02 | 2007-05-02 | 734 |  |  |  | 109d | 0d |  | Ram |  |
| 752 | 1.2.3.11.2 | Formal Review of Code by BAH |  | 10d | 2007-05-03 | 2007-05-16 | 751 |  |  |  | 109d |  |  | BAH | 80h |
| 753 | 1.2.3.11.3 | Deploy Prototype for Iteration 1 at Mayo and WF |  | 1d | 2007-05-03 | 2007-05-03 | 734 |  |  |  | 118d | 0d |  | Vinay; Mayo; WF | 24h |
| 754 | 1.2.3.12 | Finish Iteration 3 | milestone | 0d | 2007-05-03 | 2007-05-03 | 753 | 2007-03-29 | 2007-04-04 | 5d | 118d |  |  |  |  |
| 755 | 1.2.4 | **Construction Phase Iteration 4** |  | 32d | 2007-05-01 | 2007-06-13 |  | 2007-05-07 | 2007-06-07 | 23d | 0d |  |  |  | 4728h |
| 756 | 1.2.4.1 | Begin Iteration 4 | milestone | 0d | 2007-05-01 | 2007-05-01 |  | 2007-05-07 | 2007-05-07 | 0d | 0d |  | must start on 2007-05-01 |  |  |
| 757 | 1.2.4.2 | **Iteration Planning (Iter-4)** |  | 2d | 2007-05-01 | 2007-05-02 |  |  |  |  | 0d |  |  |  | 48h |
| 758 | 1.2.4.2.1 | Review and finalize Ucases and Work List for Iteration |  | 1d | 2007-05-01 | 2007-05-01 | 756 |  |  |  | 0d |  |  | Edmond; Ram; Vinay | 24h |
| 759 | 1.2.4.2.2 | Review and finalize assignments for Iteration |  | 1d | 2007-05-02 | 2007-05-02 | 758 |  |  |  | 0d |  |  | Edmond; Ram; Vinay | 24h |
| 760 | 1.2.4.3 | **Project Management (Iter-4)** |  | 21d | 2007-05-03 | 2007-05-31 |  |  |  |  | 2d |  |  |  | 128h |
| 761 | 1.2.4.3.1 | Update Project Plan |  | 3d | 2007-05-03 | 2007-05-07 | 759 |  |  |  | 116d |  |  | Edmond | 24h |
| 762 | 1.2.4.3.2 | **CaAERS CCB (Task 2.10)** |  | 1d | 2007-05-07 | 2007-05-07 |  |  |  |  | 0d |  |  |  | 8h |
| 763 | 1.2.4.3.2.1 | CCB Meetings |  | 1d | 2007-05-07 | 2007-05-07 |  |  |  |  | 0d |  | must start on 2007-05-07 | Edmond | 8h |
| 764 | 1.2.4.3.3 | **Weekly Team Meeting** |  | 16d | 2007-05-07 | 2007-05-28 |  |  |  |  | 101d |  |  |  |  |
| 765 | 1.2.4.3.3.1 | Weekly Team Meeting 1 |  | 1d | 2007-05-07 | 2007-05-07 |  |  |  |  | 116d |  | start no earlier than 2007-05-07 |  |  |
| 766 | 1.2.4.3.3.2 | Weekly Team Meeting 2 |  | 1d | 2007-05-14 | 2007-05-14 |  |  |  |  | 111d |  | start no earlier than 2007-05-14 |  |  |
| 767 | 1.2.4.3.3.3 | Weekly Team Meeting 3 |  | 1d | 2007-05-21 | 2007-05-21 |  |  |  |  | 106d |  | start no earlier than 2007-05-21 |  |  |
| 768 | 1.2.4.3.3.4 | Weekly Team Meeting 4 |  | 1d | 2007-05-28 | 2007-05-28 |  |  |  |  | 101d |  | start no earlier than 2007-05-28 |  |  |

Notes:
- 751: Text1: 3.5
- 755: Text1: 1.1, 1.2, 1.3, 1.4, 1.7, 2.10, 3.1, 3.2, 3.3, 3.4, 3.5, 3.6, 3.8, 3.10, 3.13, 3.14 / Text3: F2F, AE Data Capture for DCP Trials, Batch AE Workflow, Triggers/Notifications, Import,Reports(Form Generator)
- 762: Text1: 2.10

| ID | WBS | Task | Type | Duration | Start | Finish | Predecessors | Total slack | Free slack | Constraint | Resources | Work |
| --- | --- | --- | --- | --- | --- | --- | --- | --- | --- | --- | --- | --- |
| 769 | 1.2.4.3.4 | **Status and Risk Reporting** |  | 20d | 2007-05-04 | 2007-05-31 |  | 19d |  |  |  | 64h |
| 770 | 1.2.4.3.4.1 | Bi-weekly Risk Update in caMP (Task 1.4) |  | 1d | 2007-05-04 | 2007-05-04 |  | 117d |  | start no earlier than 2007-05-04 | Edmond | 8h |
| 771 | 1.2.4.3.4.2 | Bi-weekly Risk Matrix Update Meeting |  | 1d | 2007-05-04 | 2007-05-04 |  | 117d |  | start no earlier than 2007-05-04 | Edmond | 8h |
| 772 | 1.2.4.3.4.3 | Bi-weekly Risk Update in caMP (Task 1.4) |  | 1d | 2007-05-18 | 2007-05-18 |  | 107d |  | start no earlier than 2007-05-18 | Edmond | 8h |
| 773 | 1.2.4.3.4.4 | Bi-weekly Risk Matrix Update Meeting |  | 1d | 2007-05-18 | 2007-05-18 |  | 107d |  | start no earlier than 2007-05-18 | Edmond | 8h |
| 774 | 1.2.4.3.4.5 | Bi-weekly Status Update Meeting with BAH/NCI |  | 1d | 2007-05-11 | 2007-05-11 |  | 112d |  | start no earlier than 2007-05-11 | Edmond | 8h |
| 775 | 1.2.4.3.4.6 | Bi-weekly Status Update Meeting with BAH/NCI |  | 1d | 2007-05-25 | 2007-05-25 |  | 102d |  | start no earlier than 2007-05-25 | Edmond | 8h |
| 776 | 1.2.4.3.4.7 | Monthly Status Report (Task 1.3) |  | 1d | 2007-05-31 | 2007-05-31 |  | 0d |  | must finish on 2007-05-31 | Edmond | 8h |
| 777 | 1.2.4.3.4.8 | Monthly Risk Matrix Update (Task 1.3) |  | 1d | 2007-05-31 | 2007-05-31 | 776SS | 98d |  |  | Edmond | 8h |
| 778 | 1.2.4.3.5 | **Collaboration Management Activities** |  | 21d | 2007-05-03 | 2007-05-31 |  | 21d |  |  |  | 32h |
| 779 | 1.2.4.3.5.1 | Adopters Mtg |  | 1d | 2007-05-03 | 2007-05-03 |  | 118d |  | start no earlier than 2007-05-03 | Edmond | 8h |
| 780 | 1.2.4.3.5.2 | Bi-Weekly AE SIG Meeting |  | 1d | 2007-05-10 | 2007-05-10 |  | 113d |  | start no earlier than 2007-05-10 | Edmond | 8h |
| 781 | 1.2.4.3.5.3 | Adopters Mtg |  | 1d | 2007-05-18 | 2007-05-18 |  | 107d |  | start no earlier than 2007-05-18 | Edmond | 8h |
| 782 | 1.2.4.3.5.4 | Bi-Weekly AE SIG Meeting |  | 1d | 2007-05-25 | 2007-05-25 |  | 102d |  | start no earlier than 2007-05-25 | Edmond | 8h |
| 783 | 1.2.4.3.5.5 | Adopters Colloboration Report | milestone | 0d | 2007-05-31 | 2007-05-31 |  | 0d |  | must finish on 2007-05-31 |  |  |
| 784 | 1.2.4.4 | **Environment (Iter-4)** |  | 3d | 2007-05-03 | 2007-05-07 |  | 116d |  |  |  | 24h |
| 785 | 1.2.4.4.1 | Update Environment |  | 3d | 2007-05-03 | 2007-05-07 | 759 | 116d |  |  | Vinay | 24h |
| 786 | 1.2.4.5 | **SCM (Iter-4)** |  | 5d | 2007-05-03 | 2007-05-09 |  | 114d |  |  |  | 40h |
| 787 | 1.2.4.5.1 | Manage Repository |  | 5d | 2007-05-03 | 2007-05-09 | 759 | 114d |  |  | Rhett | 40h |
| 788 | 1.2.4.6 | **Requirements (Iter-4)** |  | 30d | 2007-05-03 | 2007-06-13 | 759 | 0d |  |  |  | 896h |
| 789 | 1.2.4.6.1 | **Requirements Gathering and Elucidation** |  | 2d | 2007-05-03 | 2007-05-04 |  | 0d |  |  |  | 16h |
| 790 | 1.2.4.6.1.1 | 1st Construction Phase F2F Meeting |  | 2d | 2007-05-03 | 2007-05-04 |  | 0d |  | must start on 2007-05-03 | All | 16h |
| 791 | 1.2.4.6.2 | **Updated Use Case Specification and Realization** |  | 30d | 2007-05-03 | 2007-06-13 |  | 89d |  |  |  | 280h |
| 792 | 1.2.4.6.2.1 | Developer draft |  | 5d | 2007-05-03 | 2007-05-09 |  | 89d | 0d |  | Sean | 40h |
| 793 | 1.2.4.6.2.2 | Adopters/Collobators Review |  | 5d | 2007-05-10 | 2007-05-16 | 792 | 89d | 0d |  | Mayo; WF | 80h |
| 794 | 1.2.4.6.2.3 | Update Use Case Document |  | 5d | 2007-05-17 | 2007-05-23 | 793 | 89d | 0d |  | Sean | 40h |
| 795 | 1.2.4.6.2.4 | Submit Updated Use Case Document to BAH (Task 3.1) | milestone | 0d | 2007-05-23 | 2007-05-23 | 794 | 89d | 0d |  | Edmond |  |
| 796 | 1.2.4.6.2.5 | Formal Review of Updated Use Case Document |  | 15d | 2007-05-24 | 2007-06-13 | 795 | 89d |  |  | BAH | 120h |

| ID | WBS | Task | Type | Duration | Start | Finish | Predecessors | Total slack | Free slack | Resources | Work |
| --- | --- | --- | --- | --- | --- | --- | --- | --- | --- | --- | --- |
| 797 | 1.2.4.6.3 | **Updated SRS Document** |  | 30d | 2007-05-03 | 2007-06-13 |  | 89d |  |  | 280h |
| 798 | 1.2.4.6.3.1 | Developer draft |  | 5d | 2007-05-03 | 2007-05-09 |  | 89d | 0d | Sean | 40h |
| 799 | 1.2.4.6.3.2 | Adopters/Collobators Review |  | 5d | 2007-05-10 | 2007-05-16 | 798 | 89d | 0d | Mayo; WF | 80h |
| 800 | 1.2.4.6.3.3 | Update SRS |  | 5d | 2007-05-17 | 2007-05-23 | 799 | 89d | 0d | Sean | 40h |
| 801 | 1.2.4.6.3.4 | Submit Updated SRS Document to BAH (Task 3.2) | milestone | 0d | 2007-05-23 | 2007-05-23 | 800 | 89d | 0d | Mayo; WF |  |
| 802 | 1.2.4.6.3.5 | Formal Review of Updated SRS |  | 15d | 2007-05-24 | 2007-06-13 | 801 | 89d |  | BAH | 120h |
| 803 | 1.2.4.6.4 | **Updated UML Static Class Diagram Model** |  | 30d | 2007-05-03 | 2007-06-13 |  | 89d |  |  | 320h |
| 804 | 1.2.4.6.4.1 | Developer draft |  | 5d | 2007-05-03 | 2007-05-09 |  | 89d | 0d | Ram; Sean | 80h |
| 805 | 1.2.4.6.4.2 | Adopters/Collobators Review |  | 5d | 2007-05-10 | 2007-05-16 | 804 | 89d | 0d | Mayo; WF | 80h |
| 806 | 1.2.4.6.4.3 | Update UML |  | 5d | 2007-05-17 | 2007-05-23 | 805 | 89d | 0d | Sean | 40h |
| 807 | 1.2.4.6.4.4 | Submit UML to BAH (Task 3.3) | milestone | 0d | 2007-05-23 | 2007-05-23 | 806 | 89d | 0d | Edmond |  |
| 808 | 1.2.4.6.4.5 | Formal Review of UML |  | 15d | 2007-05-24 | 2007-06-13 | 807 | 89d |  | BAH | 120h |
| 809 | 1.2.4.7 | **Analysis and Design (Iter-4)** |  | 27d | 2007-05-07 | 2007-06-12 | 789 | 90d |  |  | 824h |
| 810 | 1.2.4.7.1 | **Design Documents** |  | 27d | 2007-05-07 | 2007-06-12 |  | 90d |  |  | 656h |
| 811 | 1.2.4.7.1.1 | **Batch AE** |  | 17d | 2007-05-07 | 2007-05-29 |  | 90d |  |  | 176h |
| 812 | 1.2.4.7.1.1.1 | Develop appropriate UML Artifacts |  | 5d | 2007-05-07 | 2007-05-11 |  | 90d | 0d | Krikor | 40h |
| 813 | 1.2.4.7.1.1.2 | Create Design Document |  | 5d | 2007-05-14 | 2007-05-18 | 812 | 90d | 0d | Krikor | 40h |
| 814 | 1.2.4.7.1.1.3 | Adopters/Collaborators Review |  | 5d | 2007-05-21 | 2007-05-25 | 813 | 90d | 0d | Mayo; WF | 80h |
| 815 | 1.2.4.7.1.1.4 | Developers Update |  | 2d | 2007-05-28 | 2007-05-29 | 814 | 90d | 0d | Krikor | 16h |
| 816 | 1.2.4.7.1.2 | **AE Data Collection (DCP)** |  | 17d | 2007-05-07 | 2007-05-29 |  | 90d |  |  | 176h |
| 817 | 1.2.4.7.1.2.1 | Develop appropriate UML Artifacts |  | 5d | 2007-05-07 | 2007-05-11 |  | 90d | 0d | Rhett | 40h |
| 818 | 1.2.4.7.1.2.2 | Create Design Document |  | 5d | 2007-05-14 | 2007-05-18 | 817 | 90d | 0d | Rhett | 40h |
| 819 | 1.2.4.7.1.2.3 | Adopters/Collaborators Review |  | 5d | 2007-05-21 | 2007-05-25 | 818 | 90d | 0d | Mayo; WF | 80h |
| 820 | 1.2.4.7.1.2.4 | Developers Update |  | 2d | 2007-05-28 | 2007-05-29 | 819 | 90d | 0d | Rhett | 16h |

| ID | WBS | Task | Type | Duration | Start | Finish | Predecessors | Baseline start | Baseline finish | Baseline duration | Total slack | Free slack | Resources | Work | Text2 |
| --- | --- | --- | --- | --- | --- | --- | --- | --- | --- | --- | --- | --- | --- | --- | --- |
| 821 | 1.2.4.7.1.3 | **Reports (cont'd)** |  | 9d | 2007-05-07 | 2007-05-17 |  |  |  |  | 98d |  |  | 48h |  |
| 822 | 1.2.4.7.1.3.1 | Develop appropriate UML Artifacts |  | 2d | 2007-05-07 | 2007-05-08 |  |  |  |  | 98d | 0d | Kulasekeran | 16h |  |
| 823 | 1.2.4.7.1.3.2 | Create Design Document |  | 2d | 2007-05-09 | 2007-05-10 | 822 |  |  |  | 98d | 0d | Kulasekeran | 16h |  |
| 824 | 1.2.4.7.1.3.3 | Adopters/Collaborators Review |  | 3d | 2007-05-11 | 2007-05-15 | 823 |  |  |  | 98d | 0d |  |  |  |
| 825 | 1.2.4.7.1.3.4 | Developers Update |  | 2d | 2007-05-16 | 2007-05-17 | 824 |  |  |  | 98d | 8d | Kulasekeran | 16h |  |
| 826 | 1.2.4.7.1.4 | **AE Notification Trigger (cont'd)** |  | 17d | 2007-05-07 | 2007-05-29 |  |  |  |  | 90d |  |  | 176h |  |
| 827 | 1.2.4.7.1.4.1 | Develop appropriate UML Artifacts |  | 5d | 2007-05-07 | 2007-05-11 |  |  |  |  | 90d | 0d | Sujith | 40h |  |
| 828 | 1.2.4.7.1.4.2 | Create Design Document |  | 5d | 2007-05-14 | 2007-05-18 | 827 |  |  |  | 90d | 0d | Sujith | 40h |  |
| 829 | 1.2.4.7.1.4.3 | Adopters/Collaborators Review |  | 5d | 2007-05-21 | 2007-05-25 | 828 |  |  |  | 90d | 0d | Mayo; WF | 80h |  |
| 830 | 1.2.4.7.1.4.4 | Developers Update |  | 2d | 2007-05-28 | 2007-05-29 | 829 |  |  |  | 90d | 0d | Sujith | 16h |  |
| 831 | 1.2.4.7.1.5 | Deliver Design document to BAH (Task 3.4) | milestone | 0d | 2007-05-29 | 2007-05-29 | 815, 820, 825, 830 |  |  |  | 100d |  | Edmond |  |  |
| 832 | 1.2.4.7.1.6 | Deliver UML to BAH (Task 3.3) | milestone | 0d | 2007-05-29 | 2007-05-29 | 815, 820, 825, 830 |  |  |  | 90d | 0d | Edmond |  |  |
| 833 | 1.2.4.7.1.7 | Formal Review by BAH |  | 10d | 2007-05-30 | 2007-06-12 | 832 |  |  |  | 90d |  | BAH | 80h |  |
| 834 | 1.2.4.7.2 | **Modeling** |  | 5d | 2007-05-07 | 2007-05-11 |  |  |  |  | 112d |  |  | 96h | BRIDG |
| 835 | 1.2.4.7.2.1 | Update Implementation Model |  | 2d | 2007-05-07 | 2007-05-08 |  |  |  |  | 115d |  | Ram | 16h |  |
| 836 | 1.2.4.7.2.2 | Update Domain Analysis Model/BRIDG Harmonization |  | 5d | 2007-05-07 | 2007-05-11 |  |  |  |  | 112d |  | Sean | 40h |  |
| 837 | 1.2.4.7.2.3 | Create/Update Dynamic Models (BRIDG) |  | 5d | 2007-05-07 | 2007-05-11 |  |  |  |  | 112d |  | Sean | 40h |  |
| 838 | 1.2.4.7.3 | **Semantic Interoperability** |  | 6d | 2007-05-07 | 2007-05-14 |  | 2007-01-12 | 2007-01-26 | 11d | 111d |  |  | 72h | VCDE |
| 839 | 1.2.4.7.3.1 | CDE Gap Analysis/Report |  | 5d | 2007-05-07 | 2007-05-11 |  | 2007-01-12 | 2007-01-18 | 5d | 111d | 0d | Sean | 40h |  |
| 840 | 1.2.4.7.3.2 | Meeting with VCDE |  | 1d | 2007-05-14 | 2007-05-14 | 839 | 2007-01-26 | 2007-01-26 | 0d | 111d |  | Sean; Brian D; Lynne W; Brenda M | 32h |  |
| 841 | 1.2.4.8 | **Implementation (Iter-4)** |  | 16d | 2007-05-07 | 2007-05-28 | 789 |  |  |  | 91d | 0d |  | 1544h |  |
| 842 | 1.2.4.8.1 | **Web interface** |  | 5d | 2007-05-07 | 2007-05-11 |  |  |  |  | 102d |  |  | 40h |  |
| 843 | 1.2.4.8.1.1 | UI Refinement |  | 5d | 2007-05-07 | 2007-05-11 |  |  |  |  | 102d |  | Richard | 40h |  |
| 844 | 1.2.4.8.2 | **Bug Fixes** |  | 6d | 2007-05-07 | 2007-05-14 |  |  |  |  | 101d |  |  |  |  |
| 845 | 1.2.4.8.2.1 | Review and assignment of Bugs from prior iteration |  | 1d | 2007-05-07 | 2007-05-07 |  |  |  |  | 101d | 0d |  |  |  |
| 846 | 1.2.4.8.2.2 | Bug Fixes |  | 5d | 2007-05-08 | 2007-05-14 | 845 |  |  |  | 101d |  |  |  |  |

| ID | WBS | Task | Duration | Start | Finish | Predecessors | Total slack | Free slack | Resources | Work |
| --- | --- | --- | --- | --- | --- | --- | --- | --- | --- | --- |
| 847 | 1.2.4.8.3 | **Implement Use Cases** | 16d | 2007-05-07 | 2007-05-28 |  | 91d |  |  | 1504h |
| 848 | 1.2.4.8.3.1 | **Batch AE Entry Screens and Baseline Grading** | 16d | 2007-05-07 | 2007-05-28 |  | 91d |  |  | 336h |
| 849 | 1.2.4.8.3.1.1 | Implement O/R mapping | 5d | 2007-05-07 | 2007-05-11 |  | 91d | 0d | Rhett | 40h |
| 850 | 1.2.4.8.3.1.2 | Develop DAO | 10d | 2007-05-09 | 2007-05-22 | 849SS+2d | 91d | 0d | Rhett | 80h |
| 851 | 1.2.4.8.3.1.3 | Develop Service | 10d | 2007-05-11 | 2007-05-24 | 850SS+2d | 91d | 0d | Rhett | 80h |
| 852 | 1.2.4.8.3.1.4 | Develop controller and command objects | 10d | 2007-05-15 | 2007-05-28 | 851SS+2d | 91d | 0d | Rhett | 80h |
| 853 | 1.2.4.8.3.1.5 | Develop JUnit test cases | 7d | 2007-05-17 | 2007-05-25 | 852SS+2d | 92d |  | Rhett | 56h |
| 854 | 1.2.4.8.3.2 | **DCP AE Data Capture Workflow (cont'd)** | 16d | 2007-05-07 | 2007-05-28 |  | 91d |  |  | 336h |
| 855 | 1.2.4.8.3.2.1 | Implement O/R mapping | 5d | 2007-05-07 | 2007-05-11 |  | 91d | 0d | Rhett | 40h |
| 856 | 1.2.4.8.3.2.2 | Develop DAO | 10d | 2007-05-09 | 2007-05-22 | 855SS+2d | 91d | 0d | Rhett | 80h |
| 857 | 1.2.4.8.3.2.3 | Develop Service | 10d | 2007-05-11 | 2007-05-24 | 856SS+2d | 91d | 0d | Rhett | 80h |
| 858 | 1.2.4.8.3.2.4 | Develop controller and command objects | 10d | 2007-05-15 | 2007-05-28 | 857SS+2d | 91d | 0d | Rhett | 80h |
| 859 | 1.2.4.8.3.2.5 | Develop JUnit test cases | 7d | 2007-05-17 | 2007-05-25 | 858SS+2d | 92d |  | Rhett | 56h |
| 860 | 1.2.4.8.3.3 | **Triggers/Notification (cont'd)** | 16d | 2007-05-07 | 2007-05-28 |  | 91d |  |  | 336h |
| 861 | 1.2.4.8.3.3.1 | Implement O/R mapping | 5d | 2007-05-07 | 2007-05-11 |  | 91d | 0d | Sujith | 40h |
| 862 | 1.2.4.8.3.3.2 | Develop DAO | 10d | 2007-05-09 | 2007-05-22 | 861SS+2d | 91d | 0d | Sujith | 80h |
| 863 | 1.2.4.8.3.3.3 | Develop Service | 10d | 2007-05-11 | 2007-05-24 | 862SS+2d | 91d | 0d | Sujith | 80h |
| 864 | 1.2.4.8.3.3.4 | Develop controller and command objects | 10d | 2007-05-15 | 2007-05-28 | 863SS+2d | 91d | 0d | Sujith | 80h |
| 865 | 1.2.4.8.3.3.5 | Develop JUnit test cases | 7d | 2007-05-17 | 2007-05-25 | 864SS+2d | 92d |  | Sujith | 56h |
| 866 | 1.2.4.8.3.4 | **Reports: Generate Report Form** | 16d | 2007-05-07 | 2007-05-28 |  | 91d |  |  | 336h |
| 867 | 1.2.4.8.3.4.1 | Implement O/R mapping | 5d | 2007-05-07 | 2007-05-11 |  | 91d | 0d | Sujith | 40h |
| 868 | 1.2.4.8.3.4.2 | Develop DAO | 10d | 2007-05-09 | 2007-05-22 | 867SS+2d | 91d | 0d | Sujith | 80h |
| 869 | 1.2.4.8.3.4.3 | Develop Service | 10d | 2007-05-11 | 2007-05-24 | 868SS+2d | 91d | 0d | Sujith | 80h |
| 870 | 1.2.4.8.3.4.4 | Develop controller and command objects | 10d | 2007-05-15 | 2007-05-28 | 869SS+2d | 91d | 0d | Sujith | 80h |
| 871 | 1.2.4.8.3.4.5 | Develop JUnit test cases | 7d | 2007-05-17 | 2007-05-25 | 870SS+2d | 92d |  | Sujith | 56h |
| 872 | 1.2.4.8.3.5 | Data Exchange: Exporting Data | 10d | 2007-05-07 | 2007-05-18 |  | 97d |  | Krikor | 80h |
| 873 | 1.2.4.8.3.6 | Data Push to AdEERS | 10d | 2007-05-07 | 2007-05-18 |  | 97d |  | Krikor | 80h |

| ID | WBS | Task | Type | Duration | Start | Finish | Predecessors | Baseline start | Baseline finish | Baseline duration | Total slack | Free slack | Constraint | Resources | Work | Text1 |
| --- | --- | --- | --- | --- | --- | --- | --- | --- | --- | --- | --- | --- | --- | --- | --- | --- |
| 874 | 1.2.4.9 | **Documentation (Iter-4)** |  | 25d | 2007-05-07 | 2007-06-08 | 789 |  |  |  | 92d |  |  |  | 640h |  |
| 875 | 1.2.4.9.1 | **Installation Guide** |  | 15d | 2007-05-21 | 2007-06-08 |  |  |  |  | 92d |  |  |  | 320h |  |
| 876 | 1.2.4.9.1.1 | Update Installation Guide |  | 5d | 2007-05-21 | 2007-05-25 |  |  |  |  | 92d | 0d | start no earlier than 2007-05-21 |  |  |  |
| 877 | 1.2.4.9.1.2 | Submit to BAH/Adopters | milestone | 0d | 2007-05-25 | 2007-05-25 | 876 |  |  |  | 92d | 0d |  | Edmond |  |  |
| 878 | 1.2.4.9.1.3 | Review of Installation Guide |  | 10d | 2007-05-28 | 2007-06-08 | 877 |  |  |  | 92d |  |  | BAH; NCI; Mayo; WF | 320h |  |
| 879 | 1.2.4.9.2 | **Administrators Guide** |  | 15d | 2007-05-07 | 2007-05-25 |  |  |  |  | 102d |  |  |  | 320h |  |
| 880 | 1.2.4.9.2.1 | Update Administrators Guide |  | 5d | 2007-05-07 | 2007-05-11 |  |  |  |  | 102d | 0d |  |  |  |  |
| 881 | 1.2.4.9.2.2 | Submit to BAH | milestone | 0d | 2007-05-11 | 2007-05-11 | 880 |  |  |  | 102d | 0d |  | Edmond |  |  |
| 882 | 1.2.4.9.2.3 | Review of Admin Guide |  | 10d | 2007-05-14 | 2007-05-25 | 881 |  |  |  | 102d |  |  | BAH; NCI; Mayo; WF | 320h |  |
| 883 | 1.2.4.9.3 | **Release Notes** |  | 12d | 2007-05-07 | 2007-05-22 |  |  |  |  | 105d |  |  |  |  |  |
| 884 | 1.2.4.9.3.1 | Update Release Notes |  | 2d | 2007-05-07 | 2007-05-08 |  |  |  |  | 105d | 0d |  |  |  |  |
| 885 | 1.2.4.9.3.2 | Submit to BAH | milestone | 0d | 2007-05-08 | 2007-05-08 | 884 |  |  |  | 105d | 0d |  |  |  |  |
| 886 | 1.2.4.9.3.3 | Review of Release Notes |  | 10d | 2007-05-09 | 2007-05-22 | 885 |  |  |  | 105d |  |  |  |  |  |
| 887 | 1.2.4.9.4 | **End User Guide Draft** |  | 5d | 2007-05-25 | 2007-05-31 | 904FS-5d | 2007-05-29 | 2007-06-04 | 5d | 98d |  |  |  |  |  |
| 888 | 1.2.4.9.4.1 | Create Draft of End User Guide |  | 5d | 2007-05-25 | 2007-05-31 |  |  |  |  | 98d |  |  |  |  |  |
| 889 | 1.2.4.10 | **Testing (Iter-4)** |  | 20d | 2007-05-07 | 2007-06-01 | 789 |  |  |  | 97d |  |  |  | 480h |  |
| 890 | 1.2.4.10.1 | **Test Plan** |  | 15d | 2007-05-07 | 2007-05-25 |  |  |  |  | 102d |  |  |  | 120h |  |
| 891 | 1.2.4.10.1.1 | Update Test Plan Document (Task 3.6) |  | 5d | 2007-05-07 | 2007-05-11 |  |  |  |  | 102d | 0d |  | Ram | 40h |  |
| 892 | 1.2.4.10.1.2 | Submit to BAH | milestone | 0d | 2007-05-11 | 2007-05-11 | 891 |  |  |  | 102d | 0d |  | Edmond |  | 3.6 |
| 893 | 1.2.4.10.1.3 | Formal Review by BAH |  | 10d | 2007-05-14 | 2007-05-25 | 892 |  |  |  | 102d |  |  | BAH | 80h |  |
| 894 | 1.2.4.10.2 | **RTM** |  | 5d | 2007-05-07 | 2007-05-11 |  |  |  |  | 112d |  |  |  | 40h |  |
| 895 | 1.2.4.10.2.1 | Create RTM |  | 5d | 2007-05-07 | 2007-05-11 |  |  |  |  | 112d |  |  | Sean | 40h |  |
| 896 | 1.2.4.10.3 | **Run Tests** |  | 20d | 2007-05-07 | 2007-06-01 |  |  |  |  | 97d |  |  |  | 320h |  |
| 897 | 1.2.4.10.3.1 | Testing |  | 10d | 2007-05-07 | 2007-05-18 |  |  |  |  | 97d | 0d |  | Renee; David; Natasha | 240h |  |
| 898 | 1.2.4.10.3.2 | Submit Test Results Report (Task 3.7) | milestone | 0d | 2007-05-18 | 2007-05-18 | 897 |  |  |  | 97d | 0d |  | Edmond |  |  |
| 899 | 1.2.4.10.3.3 | Formal Review of Test results Report |  | 10d | 2007-05-21 | 2007-06-01 | 898 |  |  |  | 97d |  |  | BAH | 80h |  |

| ID | WBS | Task | Type | Duration | Start | Finish | Predecessors | Baseline start | Baseline finish | Baseline duration | Total slack | Free slack | Constraint | Resources | Work | Text2 | Text3 |
| --- | --- | --- | --- | --- | --- | --- | --- | --- | --- | --- | --- | --- | --- | --- | --- | --- | --- |
| 900 | 1.2.4.11 | **Deployment (Iter-4)** |  | 10d | 2007-05-28 | 2007-06-11 | 841 |  |  |  | 91d |  |  |  | 104h |  |  |
| 901 | 1.2.4.11.1 | Submit prototype code (Task 3.5) | milestone | 0d | 2007-05-28 | 2007-05-28 |  |  |  |  | 91d | 0d |  | Ram |  |  |  |
| 902 | 1.2.4.11.2 | Formal Review of Code by BAH |  | 10d | 2007-05-29 | 2007-06-11 | 901 |  |  |  | 91d |  |  | BAH | 80h |  |  |
| 903 | 1.2.4.11.3 | Deploy Prototype for Iteration 1 at Mayo and WF |  | 1d | 2007-05-29 | 2007-05-29 |  |  |  |  | 100d |  |  | Vinay; Mayo; WF | 24h |  |  |
| 904 | 1.2.4.12 | Finish Iteration 4 | milestone | 0d | 2007-05-31 | 2007-05-31 |  | 2007-06-04 | 2007-06-04 | 0d | 0d |  | must finish on 2007-05-31 |  |  |  |  |
| 905 | 1.2.5 | **Construction Phase Iteration 5** |  | 31d | 2007-06-01 | 2007-07-13 |  | 2007-06-07 | 2007-07-10 | 23d | 0d |  |  |  | 3480h | BRIDG Harmonization | Import,Export,BatchAE,Process Reports,SystemAdminModule |
| 906 | 1.2.5.1 | Begin Iteration 5 | milestone | 0d | 2007-06-01 | 2007-06-01 |  | 2007-05-07 | 2007-05-07 | 0d | 0d |  | must start on 2007-06-01 |  |  |  |  |
| 907 | 1.2.5.2 | **Iteration Planning (Iter-5)** |  | 2d | 2007-06-01 | 2007-06-04 |  |  |  |  | 67d |  |  |  | 48h |  |  |
| 908 | 1.2.5.2.1 | Review and finalize Ucases and Work List for Iteration |  | 1d | 2007-06-01 | 2007-06-01 | 906 |  |  |  | 67d | 0d |  | Edmond; Ram; Vinay | 24h |  |  |
| 909 | 1.2.5.2.2 | Review and finalize assignments for Iteration |  | 1d | 2007-06-04 | 2007-06-04 | 908 |  |  |  | 67d | 0d |  | Edmond; Ram; Vinay | 24h |  |  |
| 910 | 1.2.5.3 | **Project Management (Iter-5)** |  | 20d | 2007-06-04 | 2007-06-29 |  |  |  |  | 0d |  |  |  | 128h |  |  |
| 911 | 1.2.5.3.1 | Update Project Plan |  | 3d | 2007-06-05 | 2007-06-07 | 909 |  |  |  | 93d |  |  | Edmond | 24h |  |  |
| 912 | 1.2.5.3.2 | **CaAERS CCB (Task 2.10)** |  | 1d | 2007-06-04 | 2007-06-04 |  |  |  |  | 0d |  |  |  | 8h |  |  |
| 913 | 1.2.5.3.2.1 | CCB Meetings |  | 1d | 2007-06-04 | 2007-06-04 |  |  |  |  | 0d |  | must start on 2007-06-04 | Edmond | 8h |  |  |
| 914 | 1.2.5.3.3 | **Weekly Team Meeting** |  | 16d | 2007-06-04 | 2007-06-25 |  |  |  |  | 81d |  |  |  |  |  |  |
| 915 | 1.2.5.3.3.1 | Weekly Team Meeting 1 |  | 1d | 2007-06-04 | 2007-06-04 |  |  |  |  | 96d |  | start no earlier than 2007-06-04 |  |  |  |  |
| 916 | 1.2.5.3.3.2 | Weekly Team Meeting 2 |  | 1d | 2007-06-11 | 2007-06-11 |  |  |  |  | 91d |  | start no earlier than 2007-06-11 |  |  |  |  |
| 917 | 1.2.5.3.3.3 | Weekly Team Meeting 3 |  | 1d | 2007-06-18 | 2007-06-18 |  |  |  |  | 86d |  | start no earlier than 2007-06-18 |  |  |  |  |
| 918 | 1.2.5.3.3.4 | Weekly Team Meeting 4 |  | 1d | 2007-06-25 | 2007-06-25 |  |  |  |  | 81d |  | start no earlier than 2007-06-25 |  |  |  |  |
| 919 | 1.2.5.3.4 | **Status and Risk Reporting** |  | 16d | 2007-06-08 | 2007-06-29 |  |  |  |  | 77d |  |  |  | 64h |  |  |
| 920 | 1.2.5.3.4.1 | Bi-weekly Risk Update in caMP (Task 1.4) |  | 1d | 2007-06-08 | 2007-06-08 |  |  |  |  | 92d |  | start no earlier than 2007-06-08 | Edmond | 8h |  |  |
| 921 | 1.2.5.3.4.2 | Bi-weekly Risk Matrix Update Meeting |  | 1d | 2007-06-08 | 2007-06-08 |  |  |  |  | 92d |  | start no earlier than 2007-06-08 | Edmond | 8h |  |  |
| 922 | 1.2.5.3.4.3 | Bi-weekly Risk Update in caMP (Task 1.4) |  | 1d | 2007-06-22 | 2007-06-22 |  |  |  |  | 82d |  | start no earlier than 2007-06-22 | Edmond | 8h |  |  |
| 923 | 1.2.5.3.4.4 | Bi-weekly Risk Matrix Update Meeting |  | 1d | 2007-06-22 | 2007-06-22 |  |  |  |  | 82d |  | start no earlier than 2007-06-22 | Edmond | 8h |  |  |
| 924 | 1.2.5.3.4.5 | Bi-weekly Status Update Meeting with BAH/NCI |  | 1d | 2007-06-15 | 2007-06-15 |  |  |  |  | 87d |  | start no earlier than 2007-06-15 | Edmond | 8h |  |  |
| 925 | 1.2.5.3.4.6 | Bi-weekly Status Update Meeting with BAH/NCI |  | 1d | 2007-06-29 | 2007-06-29 |  |  |  |  | 77d |  | start no earlier than 2007-06-29 | Edmond | 8h |  |  |
| 926 | 1.2.5.3.4.7 | Monthly Status Report (Task 1.3) |  | 1d | 2007-06-29 | 2007-06-29 |  |  |  |  | 77d | 0d | start no earlier than 2007-06-29 | Edmond | 8h |  |  |
| 927 | 1.2.5.3.4.8 | Monthly Risk Matrix Update (Task 1.3) |  | 1d | 2007-06-29 | 2007-06-29 | 926SS |  |  |  | 77d |  | start no earlier than 2007-06-29 | Edmond | 8h |  |  |

Notes:
- 901: Text1: 3.5
- 905: Text1: 1.1, 1.2, 1.3, 1.4, 2.10, 3.1, 3.2, 3.3, 3.4, 3.5, 3.6, 3.8, 3.10, 3.13, 3.14
- 912: Text1: 2.10

| ID | WBS | Task | Type | Duration | Start | Finish | Predecessors | Total slack | Free slack | Constraint | Resources | Work |
| --- | --- | --- | --- | --- | --- | --- | --- | --- | --- | --- | --- | --- |
| 928 | 1.2.5.3.5 | **Collaboration Management Activities** |  | 16d | 2007-06-07 | 2007-06-28 |  | 78d |  |  |  | 32h |
| 929 | 1.2.5.3.5.1 | Adopters Mtg |  | 1d | 2007-06-07 | 2007-06-07 |  | 93d |  | start no earlier than 2007-06-07 | Edmond | 8h |
| 930 | 1.2.5.3.5.2 | Bi-Weekly AE SIG Meeting |  | 1d | 2007-06-14 | 2007-06-14 |  | 88d |  | start no earlier than 2007-06-14 | Edmond | 8h |
| 931 | 1.2.5.3.5.3 | Adopters Mtg |  | 1d | 2007-06-21 | 2007-06-21 |  | 83d |  | start no earlier than 2007-06-21 | Edmond | 8h |
| 932 | 1.2.5.3.5.4 | Bi-Weekly AE SIG Meeting |  | 1d | 2007-06-28 | 2007-06-28 |  | 78d |  | start no earlier than 2007-06-28 | Edmond | 8h |
| 933 | 1.2.5.4 | **Environment (Iter-5)** |  | 3d | 2007-06-05 | 2007-06-07 |  | 93d |  |  |  | 24h |
| 934 | 1.2.5.4.1 | Update Environment |  | 3d | 2007-06-05 | 2007-06-07 | 909 | 93d |  |  | Vinay | 24h |
| 935 | 1.2.5.5 | **SCM (Iter-5)** |  | 5d | 2007-06-05 | 2007-06-11 |  | 91d |  |  |  | 40h |
| 936 | 1.2.5.5.1 | Manage Repository |  | 5d | 2007-06-05 | 2007-06-11 | 909 | 91d |  |  | Rhett | 40h |
| 937 | 1.2.5.6 | **Requirements (Iter-5)** |  | 21d | 2007-06-05 | 2007-07-03 | 909 | 75d |  |  |  | 624h |
| 938 | 1.2.5.6.1 | **Requirements Gathering and Elucidation** |  | 1d | 2007-06-05 | 2007-06-05 |  | 95d |  |  |  |  |
| 939 | 1.2.5.6.1.1 | DCP Reqts (Continued) |  | 1d | 2007-06-05 | 2007-06-05 |  | 95d |  |  |  |  |
| 940 | 1.2.5.6.1.2 | Triggers |  | 1d | 2007-06-05 | 2007-06-05 |  | 95d |  |  |  |  |
| 941 | 1.2.5.6.1.3 | Reports |  | 1d | 2007-06-05 | 2007-06-05 |  | 95d |  |  |  |  |
| 942 | 1.2.5.6.2 | **Updated Use Case Specification and Realization** |  | 21d | 2007-06-05 | 2007-07-03 |  | 75d |  |  |  | 208h |
| 943 | 1.2.5.6.2.1 | Developer draft |  | 4d | 2007-06-05 | 2007-06-08 |  | 75d | 0d |  | Sean | 32h |
| 944 | 1.2.5.6.2.2 | Adopters/Collobators Review |  | 5d | 2007-06-11 | 2007-06-15 | 943 | 75d | 0d |  | Mayo; WF | 80h |
| 945 | 1.2.5.6.2.3 | Update Use Case Document |  | 2d | 2007-06-18 | 2007-06-19 | 944 | 75d | 0d |  | Sean | 16h |
| 946 | 1.2.5.6.2.4 | Submit Updated Use Case Document to BAH (Task 3.1) | milestone | 0d | 2007-06-19 | 2007-06-19 | 945 | 75d | 0d |  | Edmond |  |
| 947 | 1.2.5.6.2.5 | Formal Review of Updated Use Case Document |  | 10d | 2007-06-20 | 2007-07-03 | 946 | 75d |  |  | BAH | 80h |
| 948 | 1.2.5.6.3 | **Updated SRS Document** |  | 21d | 2007-06-05 | 2007-07-03 |  | 75d |  |  |  | 208h |
| 949 | 1.2.5.6.3.1 | Developer draft |  | 4d | 2007-06-05 | 2007-06-08 |  | 75d | 0d |  | Sean | 32h |
| 950 | 1.2.5.6.3.2 | Adopters/Collobators Review |  | 5d | 2007-06-11 | 2007-06-15 | 949 | 75d | 0d |  | Mayo; WF | 80h |
| 951 | 1.2.5.6.3.3 | Update SRS |  | 2d | 2007-06-18 | 2007-06-19 | 950 | 75d | 0d |  | Sean | 16h |
| 952 | 1.2.5.6.3.4 | Submit Updated SRS Document to BAH (Task 3.2) | milestone | 0d | 2007-06-19 | 2007-06-19 | 951 | 75d | 0d |  | Mayo; WF |  |
| 953 | 1.2.5.6.3.5 | Formal Review of Updated SRS |  | 10d | 2007-06-20 | 2007-07-03 | 952 | 75d |  |  | BAH | 80h |

| ID | WBS | Task | Type | Duration | Start | Finish | Predecessors | Total slack | Free slack | Resources | Work |
| --- | --- | --- | --- | --- | --- | --- | --- | --- | --- | --- | --- |
| 954 | 1.2.5.6.4 | **Updated UML Static Class Diagram Model** |  | 19d | 2007-06-05 | 2007-06-29 |  | 77d |  |  | 208h |
| 955 | 1.2.5.6.4.1 | Developer draft |  | 2d | 2007-06-05 | 2007-06-06 |  | 77d | 0d | Ram; Sean | 32h |
| 956 | 1.2.5.6.4.2 | Adopters/Collobators Review |  | 5d | 2007-06-07 | 2007-06-13 | 955 | 77d | 0d | Mayo; WF | 80h |
| 957 | 1.2.5.6.4.3 | Update UML |  | 2d | 2007-06-14 | 2007-06-15 | 956 | 77d | 0d | Sean | 16h |
| 958 | 1.2.5.6.4.4 | Submit UML to BAH (Task 3.3) | milestone | 0d | 2007-06-15 | 2007-06-15 | 957 | 77d | 0d | Edmond |  |
| 959 | 1.2.5.6.4.5 | Formal Review of UML |  | 10d | 2007-06-18 | 2007-06-29 | 958 | 77d |  | BAH | 80h |
| 960 | 1.2.5.7 | **Analysis and Design (Iter-5)** |  | 22d | 2007-06-05 | 2007-07-04 | 909 | 74d |  |  | 800h |
| 961 | 1.2.5.7.1 | **Design Documents** |  | 22d | 2007-06-05 | 2007-07-04 |  | 74d |  |  | 664h |
| 962 | 1.2.5.7.1.1 | **Exporting Data** |  | 9d | 2007-06-05 | 2007-06-15 |  | 77d |  |  | 96h |
| 963 | 1.2.5.7.1.1.1 | Develop appropriate UML Artifacts |  | 3d | 2007-06-05 | 2007-06-07 | 909 | 77d | 0d | Krikor | 24h |
| 964 | 1.2.5.7.1.1.2 | Create Design Document |  | 2d | 2007-06-08 | 2007-06-11 | 963 | 77d | 0d | Krikor | 16h |
| 965 | 1.2.5.7.1.1.3 | Adopters/Collaborators Review |  | 3d | 2007-06-12 | 2007-06-14 | 964 | 77d | 0d | Mayo; WF | 48h |
| 966 | 1.2.5.7.1.1.4 | Developers Update |  | 1d | 2007-06-15 | 2007-06-15 | 965 | 77d | 3d | Krikor | 8h |
| 967 | 1.2.5.7.1.2 | **Batch AE (cont'd)** |  | 9d | 2007-06-05 | 2007-06-15 |  | 77d |  |  | 96h |
| 968 | 1.2.5.7.1.2.1 | Develop appropriate UML Artifacts |  | 3d | 2007-06-05 | 2007-06-07 | 909 | 77d | 0d | Rhett | 24h |
| 969 | 1.2.5.7.1.2.2 | Create Design Document |  | 2d | 2007-06-08 | 2007-06-11 | 968 | 77d | 0d | Rhett | 16h |
| 970 | 1.2.5.7.1.2.3 | Adopters/Collaborators Review |  | 3d | 2007-06-12 | 2007-06-14 | 969 | 77d | 0d | Mayo; WF | 48h |
| 971 | 1.2.5.7.1.2.4 | Developers Update |  | 1d | 2007-06-15 | 2007-06-15 | 970 | 77d | 3d | Rhett | 8h |
| 972 | 1.2.5.7.1.3 | **Reports (cont'd)** |  | 9d | 2007-06-05 | 2007-06-15 |  | 77d |  |  | 96h |
| 973 | 1.2.5.7.1.3.1 | Develop appropriate UML Artifacts |  | 3d | 2007-06-05 | 2007-06-07 | 909 | 77d | 0d | Kulasekeran | 24h |
| 974 | 1.2.5.7.1.3.2 | Create Design Document |  | 2d | 2007-06-08 | 2007-06-11 | 973 | 77d | 0d | Kulasekeran | 16h |
| 975 | 1.2.5.7.1.3.3 | Adopters/Collaborators Review |  | 3d | 2007-06-12 | 2007-06-14 | 974 | 77d | 0d | Mayo; WF | 48h |
| 976 | 1.2.5.7.1.3.4 | Developers Update |  | 1d | 2007-06-15 | 2007-06-15 | 975 | 77d | 3d | Kulasekeran | 8h |
| 977 | 1.2.5.7.1.4 | **Institution AE Notification Trigger** |  | 12d | 2007-06-05 | 2007-06-20 |  | 74d |  |  | 136h |
| 978 | 1.2.5.7.1.4.1 | Develop appropriate UML Artifacts |  | 4d | 2007-06-05 | 2007-06-08 | 909 | 74d | 0d | Sujith | 32h |
| 979 | 1.2.5.7.1.4.2 | Create Design Document |  | 2d | 2007-06-11 | 2007-06-12 | 978 | 74d | 0d | Sujith | 16h |
| 980 | 1.2.5.7.1.4.3 | Adopters/Collaborators Review |  | 5d | 2007-06-13 | 2007-06-19 | 979 | 74d | 0d | Mayo; WF | 80h |
| 981 | 1.2.5.7.1.4.4 | Developers Update |  | 1d | 2007-06-20 | 2007-06-20 | 980 | 74d | 0d | Sujith | 8h |
| 982 | 1.2.5.7.1.5 | Deliver Design document to BAH (Task 3.4) | milestone | 0d | 2007-06-20 | 2007-06-20 | 966, 971, 976, 981 | 84d |  | Edmond |  |
| 983 | 1.2.5.7.1.6 | Deliver UML to BAH (Task 3.3) | milestone | 0d | 2007-06-20 | 2007-06-20 | 966, 971, 976, 981 | 74d | 0d | Edmond |  |
| 984 | 1.2.5.7.1.7 | Formal Review by BAH |  | 10d | 2007-06-21 | 2007-07-04 | 983 | 74d |  | BAH; Mayo; WF | 240h |

| ID | WBS | Task | Type | Duration | Start | Finish | Predecessors | Baseline start | Baseline finish | Baseline duration | Total slack | Free slack | Constraint | Resources | Work | Text2 |
| --- | --- | --- | --- | --- | --- | --- | --- | --- | --- | --- | --- | --- | --- | --- | --- | --- |
| 985 | 1.2.5.7.2 | **Modeling/BRIDG** |  | 3d | 2007-06-05 | 2007-06-07 |  |  |  |  | 88d | 0d |  |  | 64h | BRIDG |
| 986 | 1.2.5.7.2.1 | Update Implementation Model |  | 2d | 2007-06-05 | 2007-06-06 |  |  |  |  | 89d |  |  | Ram | 16h |  |
| 987 | 1.2.5.7.2.2 | Update Domain Analysis Model/BRIDG Harmonization |  | 3d | 2007-06-05 | 2007-06-07 |  |  |  |  | 88d |  |  | Sean | 24h |  |
| 988 | 1.2.5.7.2.3 | Update Dynamic Models (BRIDG) |  | 3d | 2007-06-05 | 2007-06-07 |  |  |  |  | 88d |  |  | Sean | 24h |  |
| 989 | 1.2.5.7.3 | **Semantic Integration** |  | 6d | 2007-06-05 | 2007-06-12 |  | 2007-01-12 | 2007-01-26 | 11d | 90d |  |  |  | 72h | VCDE |
| 990 | 1.2.5.7.3.1 | CDE Gap Analysis/Report |  | 5d | 2007-06-05 | 2007-06-11 |  | 2007-01-12 | 2007-01-18 | 5d | 90d | 0d |  | Sean | 40h |  |
| 991 | 1.2.5.7.3.2 | Meeting with VCDE |  | 1d | 2007-06-12 | 2007-06-12 | 990 | 2007-01-26 | 2007-01-26 | 0d | 90d |  |  | Sean; Brian D; Lynne W; Brenda M | 32h |  |
| 992 | 1.2.5.8 | **Implementation (Iter-5)** |  | 19d | 2007-06-05 | 2007-06-29 | 909 |  |  |  | 67d |  |  |  | 40h |  |
| 993 | 1.2.5.8.1 | **Web interface** |  | 5d | 2007-06-05 | 2007-06-11 |  |  |  |  | 91d |  |  |  | 40h |  |
| 994 | 1.2.5.8.1.1 | UI Refinement |  | 5d | 2007-06-05 | 2007-06-11 |  |  |  |  | 91d |  |  | Richard | 40h |  |
| 995 | 1.2.5.8.2 | **Bug Fixes** |  | 6d | 2007-06-05 | 2007-06-12 |  |  |  |  | 90d |  |  |  |  |  |
| 996 | 1.2.5.8.2.1 | Review and assignment of Bugs from prior iteration |  | 1d | 2007-06-05 | 2007-06-05 |  |  |  |  | 90d | 0d |  |  |  |  |
| 997 | 1.2.5.8.2.2 | Bug Fixes |  | 5d | 2007-06-06 | 2007-06-12 | 996 |  |  |  | 90d |  |  |  |  |  |
| 998 | 1.2.5.8.3 | **Implement Use Cases** |  | 19d | 2007-06-05 | 2007-06-29 |  |  |  |  | 67d | 0d |  |  |  |  |
| 999 | 1.2.5.8.3.1 | Import (cont'd) |  | 10d | 2007-06-05 | 2007-06-18 |  |  |  |  | 76d |  |  |  |  |  |
| 1000 | 1.2.5.8.3.2 | Export Data to Local CTMS |  | 15d | 2007-06-05 | 2007-06-25 |  |  |  |  | 71d |  |  |  |  |  |
| 1001 | 1.2.5.8.3.3 | Pushing data to AdEERS (cont'd) |  | 15d | 2007-06-05 | 2007-06-25 |  |  |  |  | 71d |  |  |  |  |  |
| 1002 | 1.2.5.8.3.4 | Batch AE Entry and Baseline Assignments(cont'd) |  | 15d | 2007-06-05 | 2007-06-25 |  |  |  |  | 71d |  |  |  |  |  |
| 1003 | 1.2.5.8.3.5 | Process Report |  | 17d | 2007-06-05 | 2007-06-27 |  |  |  |  | 69d |  |  |  |  |  |
| 1004 | 1.2.5.8.3.6 | LOV Maintenance Screens/Functionality |  | 10d | 2007-06-05 | 2007-06-18 |  |  |  |  | 76d |  |  |  |  |  |
| 1005 | 1.2.5.8.3.7 | System Admin (cont'd) |  | 19d | 2007-06-05 | 2007-06-29 |  |  |  |  | 67d |  |  |  |  |  |
| 1006 | 1.2.5.9 | **Documentation (Iter-5)** |  | 26d | 2007-06-05 | 2007-07-10 | 909 |  |  |  | 70d |  |  |  | 976h |  |
| 1007 | 1.2.5.9.1 | **Installation Guide** |  | 15d | 2007-06-20 | 2007-07-10 |  |  |  |  | 70d |  |  |  | 320h |  |
| 1008 | 1.2.5.9.1.1 | Update Installation Guide |  | 5d | 2007-06-20 | 2007-06-26 |  |  |  |  | 70d | 0d | start no earlier than 2007-06-20 |  |  |  |
| 1009 | 1.2.5.9.1.2 | Submit to BAH/Adopters | milestone | 0d | 2007-06-26 | 2007-06-26 | 1008 |  |  |  | 70d | 0d |  | Edmond |  |  |
| 1010 | 1.2.5.9.1.3 | Review of Installation Guide |  | 10d | 2007-06-27 | 2007-07-10 | 1009 |  |  |  | 70d |  |  | BAH; NCI; Mayo; WF | 320h |  |

| ID | WBS | Task | Type | Duration | Start | Finish | Predecessors | Baseline start | Baseline finish | Baseline duration | Total slack | Free slack | Constraint | Resources | Work | Text1 |
| --- | --- | --- | --- | --- | --- | --- | --- | --- | --- | --- | --- | --- | --- | --- | --- | --- |
| 1011 | 1.2.5.9.2 | **Administrators Guide** |  | 15d | 2007-06-05 | 2007-06-25 |  |  |  |  | 81d |  |  |  | 320h |  |
| 1012 | 1.2.5.9.2.1 | Update Administrators Guide |  | 5d | 2007-06-05 | 2007-06-11 |  |  |  |  | 81d | 0d |  |  |  |  |
| 1013 | 1.2.5.9.2.2 | Submit to BAH | milestone | 0d | 2007-06-11 | 2007-06-11 | 1012 |  |  |  | 81d | 0d |  | Edmond |  |  |
| 1014 | 1.2.5.9.2.3 | Review of Admin Guide |  | 10d | 2007-06-12 | 2007-06-25 | 1013 |  |  |  | 81d |  |  | BAH; NCI; Mayo; WF | 320h |  |
| 1015 | 1.2.5.9.3 | **Release Notes** |  | 12d | 2007-06-25 | 2007-07-10 |  |  |  |  | 70d |  |  |  | 336h |  |
| 1016 | 1.2.5.9.3.1 | Update Release Notes |  | 2d | 2007-06-25 | 2007-06-26 |  |  |  |  | 70d | 0d | start no earlier than 2007-06-25 | Edmond | 16h |  |
| 1017 | 1.2.5.9.3.2 | Submit to BAH | milestone | 0d | 2007-06-26 | 2007-06-26 | 1016 |  |  |  | 70d | 0d |  | Edmond |  |  |
| 1018 | 1.2.5.9.3.3 | Review of Release Notes |  | 10d | 2007-06-27 | 2007-07-10 | 1017 |  |  |  | 70d |  |  | BAH; NCI; Mayo; WF | 320h |  |
| 1019 | 1.2.5.9.4 | **End User Guide Draft** |  | 15d | 2007-06-05 | 2007-06-25 |  | 2007-05-29 | 2007-06-04 | 5d | 81d |  |  |  |  |  |
| 1020 | 1.2.5.9.4.1 | Create Draft of End User Guide |  | 15d | 2007-06-05 | 2007-06-25 |  |  |  |  | 81d |  |  |  |  |  |
| 1021 | 1.2.5.10 | **Testing (Iter-5)** |  | 20d | 2007-06-05 | 2007-07-02 | 909 |  |  |  | 76d |  |  |  | 720h |  |
| 1022 | 1.2.5.10.1 | **Test Plan** |  | 15d | 2007-06-05 | 2007-06-25 |  |  |  |  | 81d |  |  |  | 360h |  |
| 1023 | 1.2.5.10.1.1 | Update Test Plan Document (Task 3.6) |  | 5d | 2007-06-05 | 2007-06-11 |  |  |  |  | 81d | 0d |  | Ram | 40h |  |
| 1024 | 1.2.5.10.1.2 | Submit to BAH | milestone | 0d | 2007-06-11 | 2007-06-11 | 1023 |  |  |  | 81d | 0d |  | Edmond |  | 3.6 |
| 1025 | 1.2.5.10.1.3 | Formal Review by BAH |  | 10d | 2007-06-12 | 2007-06-25 | 1024 |  |  |  | 81d |  |  | BAH; NCI; Mayo; WF | 320h |  |
| 1026 | 1.2.5.10.2 | **RTM** |  | 5d | 2007-06-05 | 2007-06-11 |  |  |  |  | 91d |  |  |  | 40h |  |
| 1027 | 1.2.5.10.2.1 | Update RTM |  | 5d | 2007-06-05 | 2007-06-11 |  |  |  |  | 91d |  |  | Sean | 40h |  |
| 1028 | 1.2.5.10.3 | **Testing** |  | 20d | 2007-06-05 | 2007-07-02 |  |  |  |  | 76d |  |  |  | 320h |  |
| 1029 | 1.2.5.10.3.1 | Testing |  | 10d | 2007-06-05 | 2007-06-18 |  |  |  |  | 76d | 0d |  | Renee; David; Natasha | 240h |  |
| 1030 | 1.2.5.10.3.2 | Submit Test Results Report (Task 3.8) | milestone | 0d | 2007-06-18 | 2007-06-18 | 1029 |  |  |  | 76d | 0d |  | Edmond |  |  |
| 1031 | 1.2.5.10.3.3 | Formal Review of Test results Report |  | 10d | 2007-06-19 | 2007-07-02 | 1030 |  |  |  | 76d |  |  | BAH | 80h |  |
| 1032 | 1.2.5.11 | **BRIDG Review (Begin)** |  | 5d | 2007-06-08 | 2007-06-14 | 985 |  |  |  | 88d |  |  |  |  |  |
| 1033 | 1.2.5.11.1 | Harmonization with BRIDG Model (Review) |  | 5d | 2007-06-08 | 2007-06-14 |  |  |  |  | 88d |  |  |  |  |  |
| 1034 | 1.2.5.12 | **Deployment (Iter-5)** |  | 10d | 2007-06-29 | 2007-07-13 | 909 |  |  |  | 67d |  |  |  | 80h |  |
| 1035 | 1.2.5.12.1 | Submit prototype code (Task 3.5) | milestone | 0d | 2007-06-29 | 2007-06-29 | 998 |  |  |  | 67d | 0d |  | Ram |  | 3.5 |
| 1036 | 1.2.5.12.2 | Deploy Prototype for Iteration 1 at Mayo and WF | milestone | 0d | 2007-06-29 | 2007-06-29 | 998, 1035 |  |  |  | 67d | 0d |  | Vinay; Mayo; WF |  |  |
| 1037 | 1.2.5.12.3 | Formal Review of Code by BAH |  | 10d | 2007-07-02 | 2007-07-13 | 1036 |  |  |  | 67d |  |  | BAH | 80h |  |
| 1038 | 1.2.5.13 | Finish Iteration 5 | milestone | 0d | 2007-06-30 | 2007-06-30 |  | 2007-06-04 | 2007-06-04 | 0d | 0d |  | must finish on 2007-06-30 |  |  |  |

| ID | WBS | Task | Type | Duration | Start | Finish | Predecessors | Baseline start | Baseline finish | Baseline duration | Total slack | Free slack | Constraint | Resources | Work | Text2 | Text3 |
| --- | --- | --- | --- | --- | --- | --- | --- | --- | --- | --- | --- | --- | --- | --- | --- | --- | --- |
| 1039 | 1.2.6 | **Construction Phase Iteration 6** |  | 27d | 2007-07-02 | 2007-08-07 |  | 2007-07-10 | 2007-08-10 | 23d | 0d |  |  |  | 3496h | BRIDG, Silver Review | Export,SystemAdmin,Triggers,Reports |
| 1040 | 1.2.6.1 | Begin Iteration 6 | milestone | 0d | 2007-07-02 | 2007-07-02 |  | 2007-05-07 | 2007-05-07 | 0d | 0d |  | must start on 2007-07-02 |  |  |  |  |
| 1041 | 1.2.6.2 | **Iteration Planning (Iter-6)** |  | 2d | 2007-07-02 | 2007-07-03 |  |  |  |  | 3d |  |  |  | 48h |  |  |
| 1042 | 1.2.6.2.1 | Review and finalize Ucases and Work List for Iteration |  | 1d | 2007-07-02 | 2007-07-02 | 1040 |  |  |  | 3d | 0d |  | Edmond; Ram; Vinay | 24h |  |  |
| 1043 | 1.2.6.2.2 | Review and finalize assignments for Iteration |  | 1d | 2007-07-03 | 2007-07-03 | 1042 |  |  |  | 3d | 0d |  | Edmond; Ram; Vinay | 24h |  |  |
| 1044 | 1.2.6.3 | **Project Management (Iter-6)** |  | 22d | 2007-07-02 | 2007-07-31 |  |  |  |  | 55d |  |  |  | 128h |  |  |
| 1045 | 1.2.6.3.1 | Update Project Plan |  | 3d | 2007-07-03 | 2007-07-05 | 1042 |  |  |  | 73d |  |  | Edmond | 24h |  |  |
| 1046 | 1.2.6.3.2 | **CaAERS CCB (Task 2.10)** |  | 1d | 2007-07-02 | 2007-07-02 |  |  |  |  | 76d |  |  |  | 8h |  |  |
| 1047 | 1.2.6.3.2.1 | CCB Meetings |  | 1d | 2007-07-02 | 2007-07-02 |  |  |  |  | 76d |  | start no earlier than 2007-07-02 | Edmond | 8h |  |  |
| 1048 | 1.2.6.3.3 | **Weekly Team Meeting** |  | 16d | 2007-07-02 | 2007-07-23 |  |  |  |  | 61d |  |  |  |  |  |  |
| 1049 | 1.2.6.3.3.1 | Weekly Team Meeting 1 |  | 1d | 2007-07-02 | 2007-07-02 |  |  |  |  | 76d |  | start no earlier than 2007-07-02 |  |  |  |  |
| 1050 | 1.2.6.3.3.2 | Weekly Team Meeting 2 |  | 1d | 2007-07-09 | 2007-07-09 |  |  |  |  | 71d |  | start no earlier than 2007-07-09 |  |  |  |  |
| 1051 | 1.2.6.3.3.3 | Weekly Team Meeting 3 |  | 1d | 2007-07-16 | 2007-07-16 |  |  |  |  | 66d |  | start no earlier than 2007-07-16 |  |  |  |  |
| 1052 | 1.2.6.3.3.4 | Weekly Team Meeting 4 |  | 1d | 2007-07-23 | 2007-07-23 |  |  |  |  | 61d |  | start no earlier than 2007-07-23 |  |  |  |  |
| 1053 | 1.2.6.3.4 | **Status and Risk Reporting** |  | 18d | 2007-07-06 | 2007-07-31 |  |  |  |  | 55d |  |  |  | 64h |  |  |
| 1054 | 1.2.6.3.4.1 | Bi-weekly Risk Update in caMP (Task 1.4) |  | 1d | 2007-07-06 | 2007-07-06 |  |  |  |  | 72d |  | start no earlier than 2007-07-06 | Edmond | 8h |  |  |
| 1055 | 1.2.6.3.4.2 | Bi-weekly Risk Matrix Update Meeting |  | 1d | 2007-07-06 | 2007-07-06 |  |  |  |  | 72d |  | start no earlier than 2007-07-06 | Edmond | 8h |  |  |
| 1056 | 1.2.6.3.4.3 | Bi-weekly Risk Update in caMP (Task 1.4) |  | 1d | 2007-07-20 | 2007-07-20 |  |  |  |  | 62d |  | start no earlier than 2007-07-20 | Edmond | 8h |  |  |
| 1057 | 1.2.6.3.4.4 | Bi-weekly Risk Matrix Update Meeting |  | 1d | 2007-07-20 | 2007-07-20 |  |  |  |  | 62d |  | start no earlier than 2007-07-20 | Edmond | 8h |  |  |
| 1058 | 1.2.6.3.4.5 | Bi-weekly Status Update Meeting with BAH/NCI |  | 1d | 2007-07-13 | 2007-07-13 |  |  |  |  | 67d |  | start no earlier than 2007-07-13 | Edmond | 8h |  |  |
| 1059 | 1.2.6.3.4.6 | Bi-weekly Status Update Meeting with BAH/NCI |  | 1d | 2007-07-13 | 2007-07-13 |  |  |  |  | 67d |  | start no earlier than 2007-07-13 | Edmond | 8h |  |  |
| 1060 | 1.2.6.3.4.7 | Monthly Status Report (Task 1.3) |  | 1d | 2007-07-31 | 2007-07-31 |  |  |  |  | 55d | 0d | start no earlier than 2007-07-31 | Edmond | 8h |  |  |
| 1061 | 1.2.6.3.4.8 | Monthly Risk Matrix Update (Task 1.3) |  | 1d | 2007-07-31 | 2007-07-31 | 1060SS |  |  |  | 55d |  |  | Edmond | 8h |  |  |
| 1062 | 1.2.6.3.5 | **Collaboration Management Activities** |  | 16d | 2007-07-05 | 2007-07-26 |  |  |  |  | 58d |  |  |  | 32h |  |  |
| 1063 | 1.2.6.3.5.1 | Adopters Mtg |  | 1d | 2007-07-05 | 2007-07-05 |  |  |  |  | 73d |  | start no earlier than 2007-07-05 | Edmond | 8h |  |  |
| 1064 | 1.2.6.3.5.2 | Bi-Weekly AE SIG Meeting |  | 1d | 2007-07-12 | 2007-07-12 |  |  |  |  | 68d |  | start no earlier than 2007-07-12 | Edmond | 8h |  |  |
| 1065 | 1.2.6.3.5.3 | Adopters Mtg |  | 1d | 2007-07-19 | 2007-07-19 |  |  |  |  | 63d |  | start no earlier than 2007-07-19 | Edmond | 8h |  |  |
| 1066 | 1.2.6.3.5.4 | Bi-Weekly AE SIG Meeting |  | 1d | 2007-07-26 | 2007-07-26 |  |  |  |  | 58d |  | start no earlier than 2007-07-26 | Edmond | 8h |  |  |

Notes:
- 1039: Text1: 1.1, 1.2, 1.3, 1.4, 2.10, 3.1, 3.2, 3.3, 3.4, 3.5, 3.6, 3.8, 3.10, 3.13, 3.14, 3.15.1
- 1046: Text1: 2.10

| ID | WBS | Task | Type | Duration | Start | Finish | Predecessors | Total slack | Free slack | Resources | Work |
| --- | --- | --- | --- | --- | --- | --- | --- | --- | --- | --- | --- |
| 1067 | 1.2.6.4 | **Environment (Iter-6)** |  | 3d | 2007-07-03 | 2007-07-05 |  | 73d |  |  | 24h |
| 1068 | 1.2.6.4.1 | Update Environment |  | 3d | 2007-07-03 | 2007-07-05 | 1042 | 73d |  | Vinay | 24h |
| 1069 | 1.2.6.5 | **SCM (Iter-6)** |  | 5d | 2007-07-02 | 2007-07-06 |  | 72d |  |  | 40h |
| 1070 | 1.2.6.5.1 | Manage Repository |  | 5d | 2007-07-02 | 2007-07-06 | 1040 | 72d |  | Rhett | 40h |
| 1071 | 1.2.6.6 | **Requirements (Iter-6)** |  | 18d | 2007-07-02 | 2007-07-25 |  | 59d |  |  | 512h |
| 1072 | 1.2.6.6.1 | **Requirements Gathering and Elucidation** |  | 5d | 2007-07-02 | 2007-07-06 |  | 72d |  |  | 40h |
| 1073 | 1.2.6.6.1.1 | Requirements gathering/research for iteration |  | 5d | 2007-07-02 | 2007-07-06 | 1040 | 72d |  | Sean | 40h |
| 1074 | 1.2.6.6.2 | **Updated Use Case Specification and Realization** |  | 16d | 2007-07-04 | 2007-07-25 |  | 59d |  |  | 152h |
| 1075 | 1.2.6.6.2.1 | Developer draft |  | 2d | 2007-07-04 | 2007-07-05 | 1043 | 59d | 0d | Sean | 16h |
| 1076 | 1.2.6.6.2.2 | Adopters/Collobators Review |  | 3d | 2007-07-06 | 2007-07-10 | 1075 | 59d | 0d | Mayo; WF | 48h |
| 1077 | 1.2.6.6.2.3 | Update Use Case Document |  | 1d | 2007-07-11 | 2007-07-11 | 1076 | 59d | 0d | Sean | 8h |
| 1078 | 1.2.6.6.2.4 | Submit Updated Use Case Document to BAH (Task 3.1) | milestone | 0d | 2007-07-11 | 2007-07-11 | 1077 | 59d | 0d | Edmond |  |
| 1079 | 1.2.6.6.2.5 | Formal Review of Updated Use Case Document |  | 10d | 2007-07-12 | 2007-07-25 | 1078 | 59d |  | BAH | 80h |
| 1080 | 1.2.6.6.3 | **Updated SRS Document** |  | 16d | 2007-07-04 | 2007-07-25 |  | 59d |  |  | 152h |
| 1081 | 1.2.6.6.3.1 | Developer draft |  | 2d | 2007-07-04 | 2007-07-05 | 1043 | 59d | 0d | Sean | 16h |
| 1082 | 1.2.6.6.3.2 | Adopters/Collobators Review |  | 3d | 2007-07-06 | 2007-07-10 | 1081 | 59d | 0d | Mayo; WF | 48h |
| 1083 | 1.2.6.6.3.3 | Update SRS |  | 1d | 2007-07-11 | 2007-07-11 | 1082 | 59d | 0d | Sean | 8h |
| 1084 | 1.2.6.6.3.4 | Submit Updated SRS Document to BAH (Task 3.2) | milestone | 0d | 2007-07-11 | 2007-07-11 | 1083 | 59d | 0d | Mayo; WF |  |
| 1085 | 1.2.6.6.3.5 | Formal Review of Updated SRS |  | 10d | 2007-07-12 | 2007-07-25 | 1084 | 59d |  | BAH | 80h |
| 1086 | 1.2.6.6.4 | **Updated UML Static Class Diagram Model** |  | 16d | 2007-07-04 | 2007-07-25 |  | 59d |  |  | 168h |
| 1087 | 1.2.6.6.4.1 | Developer draft |  | 2d | 2007-07-04 | 2007-07-05 | 1043 | 59d | 0d | Ram; Sean | 32h |
| 1088 | 1.2.6.6.4.2 | Adopters/Collobators Review |  | 3d | 2007-07-06 | 2007-07-10 | 1087 | 59d | 0d | Mayo; WF | 48h |
| 1089 | 1.2.6.6.4.3 | Update UML |  | 1d | 2007-07-11 | 2007-07-11 | 1088 | 59d | 0d | Sean | 8h |
| 1090 | 1.2.6.6.4.4 | Submit UML to BAH (Task 3.3) | milestone | 0d | 2007-07-11 | 2007-07-11 | 1089 | 59d | 0d | Edmond |  |
| 1091 | 1.2.6.6.4.5 | Formal Review of UML |  | 10d | 2007-07-12 | 2007-07-25 | 1090 | 59d |  | BAH | 80h |

| ID | WBS | Task | Type | Duration | Start | Finish | Predecessors | Total slack | Free slack | Resources | Work | Text2 |
| --- | --- | --- | --- | --- | --- | --- | --- | --- | --- | --- | --- | --- |
| 1092 | 1.2.6.7 | **Analysis and Design (Iter-6)** |  | 21d | 2007-07-04 | 2007-08-01 | 1043 | 54d |  |  | 688h |  |
| 1093 | 1.2.6.7.1 | **Design Documents** |  | 21d | 2007-07-04 | 2007-08-01 |  | 54d |  |  | 520h |  |
| 1094 | 1.2.6.7.1.1 | **Export/Import (Con't)** |  | 11d | 2007-07-04 | 2007-07-18 |  | 54d |  |  | 112h |  |
| 1095 | 1.2.6.7.1.1.1 | Develop appropriate UML Artifacts |  | 3d | 2007-07-04 | 2007-07-06 | 1043 | 54d | 0d | Krikor | 24h |  |
| 1096 | 1.2.6.7.1.1.2 | Create Design Document |  | 3d | 2007-07-09 | 2007-07-11 | 1095 | 54d | 0d | Krikor | 24h |  |
| 1097 | 1.2.6.7.1.1.3 | Adopters/Collaborators Review |  | 3d | 2007-07-12 | 2007-07-16 | 1096 | 54d | 0d | Mayo; WF | 48h |  |
| 1098 | 1.2.6.7.1.1.4 | Developers Update |  | 2d | 2007-07-17 | 2007-07-18 | 1097 | 54d | 0d | Krikor | 16h |  |
| 1099 | 1.2.6.7.1.2 | **Rules Engine/Triggers (cont'd)** |  | 11d | 2007-07-04 | 2007-07-18 |  | 54d |  |  | 112h |  |
| 1100 | 1.2.6.7.1.2.1 | Develop appropriate UML Artifacts |  | 3d | 2007-07-04 | 2007-07-06 | 1043 | 54d | 0d | Rhett | 24h |  |
| 1101 | 1.2.6.7.1.2.2 | Create Design Document |  | 3d | 2007-07-09 | 2007-07-11 | 1100 | 54d | 0d | Rhett | 24h |  |
| 1102 | 1.2.6.7.1.2.3 | Adopters/Collaborators Review |  | 3d | 2007-07-12 | 2007-07-16 | 1101 | 54d | 0d | Mayo; WF | 48h |  |
| 1103 | 1.2.6.7.1.2.4 | Developers Update |  | 2d | 2007-07-17 | 2007-07-18 | 1102 | 54d | 0d | Rhett | 16h |  |
| 1104 | 1.2.6.7.1.3 | **System Admin Module (cont'd)** |  | 9d | 2007-07-04 | 2007-07-16 |  | 56d |  |  | 56h |  |
| 1105 | 1.2.6.7.1.3.1 | Develop appropriate UML Artifacts |  | 3d | 2007-07-04 | 2007-07-06 | 1043 | 56d | 0d | Kulasekeran | 24h |  |
| 1106 | 1.2.6.7.1.3.2 | Create Design Document |  | 2d | 2007-07-09 | 2007-07-10 | 1105 | 56d | 0d | Kulasekeran | 16h |  |
| 1107 | 1.2.6.7.1.3.3 | Adopters/Collaborators Review |  | 2d | 2007-07-11 | 2007-07-12 | 1106 | 56d | 0d |  |  |  |
| 1108 | 1.2.6.7.1.3.4 | Developers Update |  | 2d | 2007-07-13 | 2007-07-16 | 1107 | 56d | 2d | Kulasekeran | 16h |  |
| 1109 | 1.2.6.7.1.4 | Deliver Design document to BAH (Task 3.4) | milestone | 0d | 2007-07-18 | 2007-07-18 | 1098, 1103, 1108 | 64d |  | Edmond |  |  |
| 1110 | 1.2.6.7.1.5 | Deliver UML to BAH (Task 3.3) | milestone | 0d | 2007-07-18 | 2007-07-18 | 1098, 1103, 1108 | 54d | 0d | Edmond |  |  |
| 1111 | 1.2.6.7.1.6 | Formal Review by BAH |  | 10d | 2007-07-19 | 2007-08-01 | 1110 | 54d |  | BAH; Mayo; WF | 240h |  |
| 1112 | 1.2.6.7.2 | **Modeling** |  | 5d | 2007-07-04 | 2007-07-10 |  | 65d | 0d |  | 96h |  |
| 1113 | 1.2.6.7.2.1 | Update Implementation Model |  | 2d | 2007-07-04 | 2007-07-05 |  | 68d |  | Ram | 16h |  |
| 1114 | 1.2.6.7.2.2 | Update Domain Analysis Model/BRIDG Harmonization |  | 5d | 2007-07-04 | 2007-07-10 |  | 65d |  | Sean | 40h | BRIDG |
| 1115 | 1.2.6.7.2.3 | Create/Update Dynamic Models (BRIDG) |  | 5d | 2007-07-04 | 2007-07-10 |  | 65d |  | Sean | 40h | BRIDG |

| ID | WBS | Task | Type | Duration | Start | Finish | Predecessors | Baseline start | Baseline finish | Baseline duration | Total slack | Free slack | Constraint | Resources | Work | Text2 |
| --- | --- | --- | --- | --- | --- | --- | --- | --- | --- | --- | --- | --- | --- | --- | --- | --- |
| 1116 | 1.2.6.7.3 | **Semantic Integration with caDSR** |  | 6d | 2007-07-04 | 2007-07-11 |  | 2007-01-12 | 2007-01-26 | 11d | 69d | 2d |  |  | 72h |  |
| 1117 | 1.2.6.7.3.1 | CDE Use Report |  | 5d | 2007-07-04 | 2007-07-10 | 1043 | 2007-01-12 | 2007-01-18 | 5d | 69d | 0d |  | Sean | 40h |  |
| 1118 | 1.2.6.7.3.2 | Meeting with VCDE |  | 1d | 2007-07-11 | 2007-07-11 | 1117 | 2007-01-26 | 2007-01-26 | 0d | 69d |  |  | Sean; Brian D; Lynne W; Brenda M | 32h | VCDE |
| 1119 | 1.2.6.8 | **Implementation (Iter-6)** |  | 20d | 2007-07-04 | 2007-07-31 |  |  |  |  | 55d |  |  |  | 40h |  |
| 1120 | 1.2.6.8.1 | **Web interface** |  | 5d | 2007-07-04 | 2007-07-10 | 1043 |  |  |  | 70d |  |  |  | 40h |  |
| 1121 | 1.2.6.8.1.1 | UI Refinement |  | 5d | 2007-07-04 | 2007-07-10 |  |  |  |  | 70d |  |  | Richard | 40h |  |
| 1122 | 1.2.6.8.2 | **Bug Fixes** |  | 6d | 2007-07-04 | 2007-07-11 | 1043 |  |  |  | 69d |  |  |  |  |  |
| 1123 | 1.2.6.8.2.1 | Review and assignment of Bugs from prior iteration |  | 1d | 2007-07-04 | 2007-07-04 |  |  |  |  | 69d | 0d |  |  |  |  |
| 1124 | 1.2.6.8.2.2 | Bug Fixes |  | 5d | 2007-07-05 | 2007-07-11 | 1123 |  |  |  | 69d |  |  |  |  |  |
| 1125 | 1.2.6.8.3 | **Impementation** |  | 20d | 2007-07-04 | 2007-07-31 | 1043 |  |  |  | 55d |  |  |  |  |  |
| 1126 | 1.2.6.8.3.1 | Export (cont'd) |  | 20d | 2007-07-04 | 2007-07-31 |  |  |  |  | 55d |  |  |  |  |  |
| 1127 | 1.2.6.8.3.2 | System Admin (cont'd) |  | 20d | 2007-07-04 | 2007-07-31 |  |  |  |  | 55d |  |  |  |  |  |
| 1128 | 1.2.6.8.3.3 | Reports (cont'd) |  | 20d | 2007-07-04 | 2007-07-31 |  |  |  |  | 55d |  |  |  |  |  |
| 1129 | 1.2.6.8.3.4 | Triggers/Notification (cont'd) |  | 20d | 2007-07-04 | 2007-07-31 |  |  |  |  | 55d |  |  |  |  |  |
| 1130 | 1.2.6.9 | **Documentation (Iter-6)** |  | 25d | 2007-07-04 | 2007-08-07 | 1043 |  |  |  | 3d |  |  |  | 960h |  |
| 1131 | 1.2.6.9.1 | **Installation Guide** |  | 15d | 2007-07-18 | 2007-08-07 |  |  |  |  | 50d |  |  |  | 240h |  |
| 1132 | 1.2.6.9.1.1 | Update Installation Guide |  | 5d | 2007-07-18 | 2007-07-24 |  |  |  |  | 50d | 0d | start no earlier than 2007-07-18 |  |  |  |
| 1133 | 1.2.6.9.1.2 | Submit to BAH/Adopters | milestone | 0d | 2007-07-24 | 2007-07-24 | 1132 |  |  |  | 50d | 0d |  | Edmond |  |  |
| 1134 | 1.2.6.9.1.3 | Review of Installation Guide |  | 10d | 2007-07-25 | 2007-08-07 | 1133 |  |  |  | 50d |  |  | BAH; Mayo; WF | 240h |  |
| 1135 | 1.2.6.9.2 | **Administrators Guide** |  | 25d | 2007-07-04 | 2007-08-07 |  |  |  |  | 50d |  |  |  | 240h |  |
| 1136 | 1.2.6.9.2.1 | Update Administrators Guide |  | 15d | 2007-07-04 | 2007-07-24 |  |  |  |  | 50d | 0d |  |  |  |  |
| 1137 | 1.2.6.9.2.2 | Submit to BAH | milestone | 0d | 2007-07-24 | 2007-07-24 | 1136 |  |  |  | 50d | 0d |  | Edmond |  |  |
| 1138 | 1.2.6.9.2.3 | Review of Admin Guide |  | 10d | 2007-07-25 | 2007-08-07 | 1137 |  |  |  | 50d |  |  | BAH; Mayo; WF | 240h |  |
| 1139 | 1.2.6.9.3 | **Release Notes** |  | 12d | 2007-07-23 | 2007-08-07 |  |  |  |  | 50d |  |  |  | 240h |  |
| 1140 | 1.2.6.9.3.1 | Update Release Notes |  | 2d | 2007-07-23 | 2007-07-24 |  |  |  |  | 50d | 0d | start no earlier than 2007-07-23 |  |  |  |
| 1141 | 1.2.6.9.3.2 | Submit to BAH | milestone | 0d | 2007-07-24 | 2007-07-24 | 1140 |  |  |  | 50d | 0d |  | Edmond |  |  |
| 1142 | 1.2.6.9.3.3 | Review of Release Notes |  | 10d | 2007-07-25 | 2007-08-07 | 1141 |  |  |  | 50d |  |  | BAH; Mayo; WF | 240h |  |

| ID | WBS | Task | Type | Duration | Start | Finish | Predecessors | Baseline start | Baseline finish | Baseline duration | Total slack | Free slack | Constraint | Resources | Work | Text1 |
| --- | --- | --- | --- | --- | --- | --- | --- | --- | --- | --- | --- | --- | --- | --- | --- | --- |
| 1143 | 1.2.6.9.4 | **End User Guide Draft** |  | 25d | 2007-07-04 | 2007-08-07 |  | 2007-05-29 | 2007-06-04 | 5d | 3d |  |  |  | 240h |  |
| 1144 | 1.2.6.9.4.1 | Create Draft of End User Guide |  | 15d | 2007-07-04 | 2007-07-24 |  |  |  |  | 3d | 0d |  |  |  |  |
| 1145 | 1.2.6.9.4.2 | Submit to BAH (Task 13.15.1) | milestone | 0d | 2007-07-24 | 2007-07-24 | 1144 |  |  |  | 3d | 0d |  | Edmond |  | 13.15.1 |
| 1146 | 1.2.6.9.4.3 | Review of End User Guide Draft |  | 10d | 2007-07-25 | 2007-08-07 | 1145 |  |  |  | 3d | 0d |  | BAH; Mayo; WF | 240h |  |
| 1147 | 1.2.6.10 | **Testing (Iter-6)** |  | 25d | 2007-07-04 | 2007-08-07 | 1043 |  |  |  | 30d |  |  |  | 976h |  |
| 1148 | 1.2.6.10.1 | **Test Plan** |  | 12d | 2007-07-04 | 2007-07-19 |  |  |  |  | 63d |  |  |  | 96h |  |
| 1149 | 1.2.6.10.1.1 | Update Test Plan Document (Task 3.6) |  | 2d | 2007-07-04 | 2007-07-05 |  |  |  |  | 63d | 0d |  | Ram | 16h |  |
| 1150 | 1.2.6.10.1.2 | Submit to BAH | milestone | 0d | 2007-07-05 | 2007-07-05 | 1149 |  |  |  | 63d | 0d |  | Edmond |  | 3.6 |
| 1151 | 1.2.6.10.1.3 | Formal Review by BAH |  | 10d | 2007-07-06 | 2007-07-19 | 1150 |  |  |  | 63d |  |  | BAH | 80h |  |
| 1152 | 1.2.6.10.2 | **RTM** |  | 5d | 2007-07-04 | 2007-07-10 |  |  |  |  | 70d |  |  |  | 40h |  |
| 1153 | 1.2.6.10.2.1 | Update RTM |  | 5d | 2007-07-04 | 2007-07-10 |  |  |  |  | 70d |  |  | Sean | 40h |  |
| 1154 | 1.2.6.10.3 | **Test Data** |  | 20d | 2007-07-04 | 2007-07-31 |  |  |  |  | 55d |  |  |  | 400h |  |
| 1155 | 1.2.6.10.3.1 | Create test data set (Task 3.7) |  | 10d | 2007-07-04 | 2007-07-17 |  |  |  |  | 55d | 0d |  | Renee; David | 160h |  |
| 1156 | 1.2.6.10.3.2 | Submit for Review | milestone | 0d | 2007-07-17 | 2007-07-17 | 1155 |  |  |  | 55d | 0d |  | Edmond |  |  |
| 1157 | 1.2.6.10.3.3 | Review |  | 10d | 2007-07-18 | 2007-07-31 | 1156 |  |  |  | 55d |  |  | BAH; Mayo; WF | 240h |  |
| 1158 | 1.2.6.10.4 | **Testing** |  | 25d | 2007-07-04 | 2007-08-07 |  |  |  |  | 30d |  |  |  | 440h |  |
| 1159 | 1.2.6.10.4.1 | Testing |  | 15d | 2007-07-04 | 2007-07-24 |  |  |  |  | 30d | 0d |  | Renee; David; Natasha | 360h |  |
| 1160 | 1.2.6.10.4.2 | Submit Test Results Report (Task 3.8) | milestone | 0d | 2007-07-24 | 2007-07-24 | 1159 |  |  |  | 30d | 0d |  | Edmond |  |  |
| 1161 | 1.2.6.10.4.3 | Formal Review of Test results Report |  | 10d | 2007-07-25 | 2007-08-07 | 1160 |  |  |  | 30d | 0d |  | BAH | 80h |  |
| 1162 | 1.2.6.11 | **BRIDG Review (Final)** |  | 5d | 2007-07-11 | 2007-07-17 |  |  |  |  | 65d |  |  |  |  |  |
| 1163 | 1.2.6.11.1 | Harmonization with BRIDG Model (Final Review) |  | 5d | 2007-07-11 | 2007-07-17 | 1112 |  |  |  | 65d |  |  |  |  |  |
| 1164 | 1.2.6.12 | **Silver Review (Begin)** |  | 0d | 2007-07-16 | 2007-07-16 | 1116 |  |  |  | 67d |  |  |  |  |  |
| 1165 | 1.2.6.12.1 | Submit Draft Semantically annotated XMI file (Task 3.11.1) | milestone | 0d | 2007-07-16 | 2007-07-16 |  |  |  |  | 67d | 0d | start no earlier than 2007-07-16 |  |  |  |
| 1166 | 1.2.6.12.2 | Submit Draft Full CDE Use Report (Task 3.11.2) | milestone | 0d | 2007-07-16 | 2007-07-16 | 1165 |  |  |  | 67d | 0d |  |  |  |  |
| 1167 | 1.2.6.12.3 | Submit Draft Compatibility Review Submission Packaged (Task 3.12) | milestone | 0d | 2007-07-16 | 2007-07-16 | 1166 |  |  |  | 67d |  |  |  |  |  |

| ID | WBS | Task | Type | Duration | Start | Finish | Predecessors | Baseline start | Baseline finish | Baseline duration | Total slack | Free slack | Constraint | Resources | Work | Text2 | Text3 |
| --- | --- | --- | --- | --- | --- | --- | --- | --- | --- | --- | --- | --- | --- | --- | --- | --- | --- |
| 1168 | 1.2.6.13 | **Deployment (Iter-6)** |  | 10d | 2007-07-25 | 2007-08-07 |  |  |  |  | 50d |  |  |  | 80h |  |  |
| 1169 | 1.2.6.13.1 | Submit prototype code (Task 3.5) | milestone | 0d | 2007-07-25 | 2007-07-25 |  |  |  |  | 50d | 0d | start no earlier than 2007-07-25 | Ram |  |  |  |
| 1170 | 1.2.6.13.2 | Deploy Prototype for Iteration 1 at Mayo and WF | milestone | 0d | 2007-07-25 | 2007-07-25 | 1169 |  |  |  | 50d | 0d |  | Vinay; Mayo; WF |  |  |  |
| 1171 | 1.2.6.13.3 | Formal Review of Code by BAH |  | 10d | 2007-07-25 | 2007-08-07 | 1170 |  |  |  | 50d |  |  | BAH | 80h |  |  |
| 1172 | 1.2.6.14 | Finish Iteration 6 | milestone | 0d | 2007-07-31 | 2007-07-31 |  | 2007-08-07 | 2007-08-07 | 0d | 0d |  | must finish on 2007-07-31 |  |  |  |  |
| 1173 | 1.2.7 | **Construction Phase Iteration 7** |  | 32d | 2007-08-01 | 2007-09-13 |  | 2007-08-10 | 2007-09-12 | 23d | 0d |  |  |  | 2024h | Silver Review | Reports,Export,SystemAdmin,Triggers |
| 1174 | 1.2.7.1 | Begin Iteration 7 | milestone | 0d | 2007-08-01 | 2007-08-01 |  | 2007-08-10 | 2007-08-10 | 0d | 0d |  | must start on 2007-08-01 |  |  |  |  |
| 1175 | 1.2.7.2 | **Iteration Planning (Iter-7)** |  | 2d | 2007-08-01 | 2007-08-02 |  |  |  |  | 6d |  |  |  | 48h |  |  |
| 1176 | 1.2.7.2.1 | Review and finalize Ucases and Work List for Iteration |  | 1d | 2007-08-01 | 2007-08-01 | 1174 |  |  |  | 6d | 0d |  | Edmond; Ram; Vinay | 24h |  |  |
| 1177 | 1.2.7.2.2 | Review and finalize assignments for Iteration |  | 1d | 2007-08-02 | 2007-08-02 | 1176 |  |  |  | 6d | 0d |  | Edmond; Ram; Vinay | 24h |  |  |
| 1178 | 1.2.7.3 | **Project Management (Iter-7)** |  | 21d | 2007-08-03 | 2007-08-31 |  |  |  |  | 1d |  |  |  | 528h |  |  |
| 1179 | 1.2.7.3.1 | Update Project Plan |  | 3d | 2007-08-03 | 2007-08-07 | 1177 |  |  |  | 50d |  |  | Edmond | 24h |  |  |
| 1180 | 1.2.7.3.2 | **Detailed Transition Phase Plan (Task 3.16)** |  | 20d | 2007-08-03 | 2007-08-30 |  |  |  |  | 33d |  |  |  | 400h |  |  |
| 1181 | 1.2.7.3.2.1 | Draft Final Transition Phase Plan (3.16) |  | 5d | 2007-08-03 | 2007-08-09 | 1177 |  |  |  | 33d | 0d |  | Edmond | 40h |  |  |
| 1182 | 1.2.7.3.2.2 | Review |  | 10d | 2007-08-10 | 2007-08-23 | 1181 |  |  |  | 33d | 0d |  | BAH; NCI; Mayo; WF | 320h |  |  |
| 1183 | 1.2.7.3.2.3 | Update |  | 5d | 2007-08-24 | 2007-08-30 | 1182 |  |  |  | 33d | 0d |  | Edmond | 40h |  |  |
| 1184 | 1.2.7.3.2.4 | Submit Final Version of Transition Phase Plan | milestone | 0d | 2007-08-30 | 2007-08-30 | 1183 |  |  |  | 33d |  |  | Edmond |  |  |  |
| 1185 | 1.2.7.3.3 | **CaAERS CCB (Task 2.10)** |  | 1d | 2007-08-06 | 2007-08-06 |  |  |  |  | 0d |  |  |  | 8h |  |  |
| 1186 | 1.2.7.3.3.1 | CCB Meetings |  | 1d | 2007-08-06 | 2007-08-06 |  |  |  |  | 0d |  | must start on 2007-08-06 | Edmond | 8h |  |  |
| 1187 | 1.2.7.3.4 | **Weekly Team Meeting** |  | 16d | 2007-08-06 | 2007-08-27 |  |  |  |  | 36d |  |  |  |  |  |  |
| 1188 | 1.2.7.3.4.1 | Weekly Team Meeting 1 |  | 1d | 2007-08-06 | 2007-08-06 |  |  |  |  | 51d |  | start no earlier than 2007-08-06 |  |  |  |  |
| 1189 | 1.2.7.3.4.2 | Weekly Team Meeting 2 |  | 1d | 2007-08-13 | 2007-08-13 |  |  |  |  | 46d |  | start no earlier than 2007-08-13 |  |  |  |  |
| 1190 | 1.2.7.3.4.3 | Weekly Team Meeting 3 |  | 1d | 2007-08-20 | 2007-08-20 |  |  |  |  | 41d |  | start no earlier than 2007-08-20 |  |  |  |  |
| 1191 | 1.2.7.3.4.4 | Weekly Team Meeting 4 |  | 1d | 2007-08-27 | 2007-08-27 |  |  |  |  | 36d |  | start no earlier than 2007-08-27 |  |  |  |  |

Notes:
- 1169: Text1: 3.5
- 1173: Text1: 1.1, 1.2, 1.3, 1.4, 1.7, 2.10, 3.1, 3.2, 3.3, 3.4, 3.5, 3.6, 3.7, 3.8, 3.9, 3.10, 3.11, 3.12, 3.13, 3.14, 3.15.2, 3.16, 5.2
- 1180: Text1: 3.16
- 1185: Text1: 2.10

| ID | WBS | Task | Type | Duration | Start | Finish | Predecessors | Total slack | Free slack | Constraint | Resources | Work |
| --- | --- | --- | --- | --- | --- | --- | --- | --- | --- | --- | --- | --- |
| 1192 | 1.2.7.3.5 | **Status and Risk Reporting** |  | 21d | 2007-08-03 | 2007-08-31 |  | 32d |  |  |  | 64h |
| 1193 | 1.2.7.3.5.1 | Bi-weekly Risk Update in caMP (Task 1.4) |  | 1d | 2007-08-03 | 2007-08-03 |  | 52d |  | start no earlier than 2007-08-03 | Edmond | 8h |
| 1194 | 1.2.7.3.5.2 | Bi-weekly Risk Matrix Update Meeting |  | 1d | 2007-08-03 | 2007-08-03 |  | 52d |  | start no earlier than 2007-08-03 | Edmond | 8h |
| 1195 | 1.2.7.3.5.3 | Bi-weekly Risk Update in caMP (Task 1.4) |  | 1d | 2007-08-17 | 2007-08-17 |  | 42d |  | start no earlier than 2007-08-17 | Edmond | 8h |
| 1196 | 1.2.7.3.5.4 | Bi-weekly Risk Matrix Update Meeting |  | 1d | 2007-08-17 | 2007-08-17 |  | 42d |  | start no earlier than 2007-08-17 | Edmond | 8h |
| 1197 | 1.2.7.3.5.5 | Bi-weekly Status Update Meeting with BAH/NCI |  | 1d | 2007-08-10 | 2007-08-10 |  | 47d |  | start no earlier than 2007-08-10 | Edmond | 8h |
| 1198 | 1.2.7.3.5.6 | Bi-weekly Status Update Meeting with BAH/NCI |  | 1d | 2007-08-24 | 2007-08-24 |  | 37d |  | start no earlier than 2007-08-24 | Edmond | 8h |
| 1199 | 1.2.7.3.5.7 | Monthly Status Report (Task 1.3) |  | 1d | 2007-08-31 | 2007-08-31 |  | 32d | 0d | start no earlier than 2007-08-31 | Edmond | 8h |
| 1200 | 1.2.7.3.5.8 | Monthly Risk Matrix Update (Task 1.3) |  | 1d | 2007-08-31 | 2007-08-31 | 1199SS | 32d |  |  | Edmond | 8h |
| 1201 | 1.2.7.3.6 | **Collaboration Management Activities** |  | 16d | 2007-08-09 | 2007-08-30 |  | 33d |  |  |  | 32h |
| 1202 | 1.2.7.3.6.1 | Adopters Mtg |  | 1d | 2007-08-09 | 2007-08-09 |  | 48d |  | start no earlier than 2007-08-09 | Edmond | 8h |
| 1203 | 1.2.7.3.6.2 | Bi-Weekly AE SIG Meeting |  | 1d | 2007-08-16 | 2007-08-16 |  | 43d |  | start no earlier than 2007-08-16 | Edmond | 8h |
| 1204 | 1.2.7.3.6.3 | Adopters Mtg |  | 1d | 2007-08-23 | 2007-08-23 |  | 38d |  | start no earlier than 2007-08-23 | Edmond | 8h |
| 1205 | 1.2.7.3.6.4 | Bi-Weekly AE SIG Meeting |  | 1d | 2007-08-30 | 2007-08-30 |  | 33d |  | start no earlier than 2007-08-30 | Edmond | 8h |
| 1206 | 1.2.7.4 | **Environment (Iter-7)** |  | 3d | 2007-08-03 | 2007-08-07 |  | 50d |  |  |  | 24h |
| 1207 | 1.2.7.4.1 | Update Environment |  | 3d | 2007-08-03 | 2007-08-07 | 1177 | 50d |  |  | Vinay | 24h |
| 1208 | 1.2.7.5 | **SCM (Iter-7)** |  | 5d | 2007-08-03 | 2007-08-09 |  | 48d |  |  |  | 40h |
| 1209 | 1.2.7.5.1 | Manage Repository |  | 5d | 2007-08-03 | 2007-08-09 | 1177 | 48d |  |  | Rhett | 40h |
| 1210 | 1.2.7.6 | **Requirements (Iter-7)** |  | 8d | 2007-08-03 | 2007-08-14 |  | 35d |  |  |  | 64h |
| 1211 | 1.2.7.6.1 | Req'ts Gathering for Iteration |  | 3d | 2007-08-03 | 2007-08-07 | 1177 | 35d | 0d |  | Sean | 24h |
| 1212 | 1.2.7.6.2 | Update UC and SRS Documents |  | 5d | 2007-08-08 | 2007-08-14 | 1211 | 45d | 0d |  | Sean | 40h |
| 1213 | 1.2.7.6.3 | Submit Final Versions of UC and SRS documents (3.1, 3.2, 3.3) | milestone | 0d | 2007-08-14 | 2007-08-14 | 1212 | 45d |  |  | Edmond |  |
| 1214 | 1.2.7.7 | **Analysis and Design (Iter-7)** |  | 15d | 2007-08-08 | 2007-08-28 |  | 35d |  |  |  | 80h |
| 1215 | 1.2.7.7.1 | **Design Documents** |  | 15d | 2007-08-08 | 2007-08-28 |  | 35d |  |  |  | 80h |
| 1216 | 1.2.7.7.1.1 | Update Design Documents |  | 5d | 2007-08-08 | 2007-08-14 | 1211 | 35d | 0d |  |  |  |
| 1217 | 1.2.7.7.1.2 | Deliver Final Design document to BAH (Task 3.4) | milestone | 0d | 2007-08-14 | 2007-08-14 | 1216 | 45d |  |  | Edmond |  |
| 1218 | 1.2.7.7.1.3 | Deliver Final UML to BAH (Task 3.3) | milestone | 0d | 2007-08-14 | 2007-08-14 | 1216 | 35d | 0d |  | Edmond |  |
| 1219 | 1.2.7.7.1.4 | Formal Review by BAH |  | 10d | 2007-08-15 | 2007-08-28 | 1218 | 35d |  |  | BAH | 80h |

| ID | WBS | Task | Type | Duration | Start | Finish | Predecessors | Total slack | Free slack | Resources | Work | Text1 |
| --- | --- | --- | --- | --- | --- | --- | --- | --- | --- | --- | --- | --- |
| 1220 | 1.2.7.8 | **Implementation (Iter-7)** |  | 15d | 2007-08-03 | 2007-08-23 |  | 28d | 0d |  | 40h |  |
| 1221 | 1.2.7.8.1 | **Web interface** |  | 5d | 2007-08-03 | 2007-08-09 |  | 38d |  |  | 40h |  |
| 1222 | 1.2.7.8.1.1 | UI Refinement |  | 5d | 2007-08-03 | 2007-08-09 | 1177 | 38d |  | Richard | 40h |  |
| 1223 | 1.2.7.8.2 | **Bug Fixes** |  | 6d | 2007-08-03 | 2007-08-10 |  | 37d |  |  |  |  |
| 1224 | 1.2.7.8.2.1 | Review and assignment of Bugs from prior iteration |  | 1d | 2007-08-03 | 2007-08-03 | 1177 | 37d | 0d |  |  |  |
| 1225 | 1.2.7.8.2.2 | Bug Fixes |  | 5d | 2007-08-06 | 2007-08-10 | 1224 | 37d |  |  |  |  |
| 1226 | 1.2.7.8.3 | **Implement Use Cases** |  | 15d | 2007-08-03 | 2007-08-23 | 1177 | 28d |  |  |  |  |
| 1227 | 1.2.7.8.3.1 | Reports (cont'd) |  | 15d | 2007-08-03 | 2007-08-23 |  | 28d |  |  |  |  |
| 1228 | 1.2.7.8.3.2 | Data Push to AdEERS (cont'd) |  | 15d | 2007-08-03 | 2007-08-23 |  | 28d |  |  |  |  |
| 1229 | 1.2.7.8.3.3 | System Admin (cont'd) |  | 15d | 2007-08-03 | 2007-08-23 |  | 28d |  |  |  |  |
| 1230 | 1.2.7.8.3.4 | Triggers/Notification (cont'd) |  | 15d | 2007-08-03 | 2007-08-23 |  | 28d |  |  |  |  |
| 1231 | 1.2.7.8.3.5 | Reports |  | 14d | 2007-08-03 | 2007-08-22 |  | 29d |  |  |  |  |
| 1232 | 1.2.7.9 | **Testing (Iter-7)** |  | 30d | 2007-08-03 | 2007-09-13 |  | 23d |  |  | 1096h |  |
| 1233 | 1.2.7.9.1 | **Test Plan** |  | 12d | 2007-08-03 | 2007-08-20 |  | 41d |  |  | 96h |  |
| 1234 | 1.2.7.9.1.1 | Update Test Plan Document (Task 3.6) |  | 2d | 2007-08-03 | 2007-08-06 | 1177 | 41d | 0d | Ram | 16h |  |
| 1235 | 1.2.7.9.1.2 | Submit to BAH | milestone | 0d | 2007-08-06 | 2007-08-06 | 1234 | 41d | 0d | Edmond |  | 3.6 |
| 1236 | 1.2.7.9.1.3 | Formal Review by BAH |  | 10d | 2007-08-07 | 2007-08-20 | 1235 | 41d |  | BAH | 80h |  |
| 1237 | 1.2.7.9.2 | **RTM** |  | 5d | 2007-08-03 | 2007-08-09 |  | 48d |  |  | 40h |  |
| 1238 | 1.2.7.9.2.1 | Update RTM |  | 5d | 2007-08-03 | 2007-08-09 | 1177 | 48d |  | Sean | 40h |  |
| 1239 | 1.2.7.9.3 | **Test Data** |  | 20d | 2007-08-08 | 2007-09-04 |  | 30d |  |  | 400h |  |
| 1240 | 1.2.7.9.3.1 | Update test data set (Task 3.7) |  | 10d | 2007-08-08 | 2007-08-21 | 1161 | 30d | 0d | Renee; David | 160h |  |
| 1241 | 1.2.7.9.3.2 | Submit for Review | milestone | 0d | 2007-08-21 | 2007-08-21 | 1240 | 30d | 0d | Edmond |  |  |
| 1242 | 1.2.7.9.3.3 | Review |  | 10d | 2007-08-22 | 2007-09-04 | 1241 | 30d |  | BAH; Mayo; WF | 240h |  |
| 1243 | 1.2.7.9.4 | **Run Tests** |  | 30d | 2007-08-03 | 2007-09-13 |  | 23d |  |  | 560h |  |
| 1244 | 1.2.7.9.4.1 | Testing |  | 20d | 2007-08-03 | 2007-08-30 | 1177 | 23d | 0d | Renee; David; Natasha | 480h |  |
| 1245 | 1.2.7.9.4.2 | Submit Final Test Results Report (Task 3.8) | milestone | 0d | 2007-08-30 | 2007-08-30 | 1244 | 23d | 0d | Edmond |  | 3.8 |
| 1246 | 1.2.7.9.4.3 | Formal Review of Test results Report |  | 10d | 2007-08-31 | 2007-09-13 | 1245 | 23d |  | BAH | 80h |  |

| ID | WBS | Task | Type | Duration | Start | Finish | Predecessors | Baseline start | Baseline finish | Baseline duration | Total slack | Free slack | Constraint | Resources | Work | Text1 |
| --- | --- | --- | --- | --- | --- | --- | --- | --- | --- | --- | --- | --- | --- | --- | --- | --- |
| 1247 | 1.2.7.10 | **Silver Review (Final)** |  | 0d | 2007-08-27 | 2007-08-27 |  |  |  |  | 37d |  |  |  |  |  |
| 1248 | 1.2.7.10.1 | Complete Semantically annotated XMI file (Task 3.11.1) | milestone | 0d | 2007-08-27 | 2007-08-27 |  |  |  |  | 37d |  | start no earlier than 2007-08-27 |  |  | 3.11.1 |
| 1249 | 1.2.7.10.2 | Full CDE Use Report (Task 3.11.2) | milestone | 0d | 2007-08-27 | 2007-08-27 |  |  |  |  | 37d |  | start no earlier than 2007-08-27 |  |  | 3.11.2 |
| 1250 | 1.2.7.10.3 | Compatibility Review Submission Packaged (Task 3.12) | milestone | 0d | 2007-08-27 | 2007-08-27 |  |  |  |  | 37d |  | start no earlier than 2007-08-27 |  |  | 3.12 |
| 1251 | 1.2.7.11 | **Documentation (Iter-7)** |  | 21d | 2007-08-03 | 2007-08-31 |  |  |  |  | 0d |  |  |  |  |  |
| 1252 | 1.2.7.11.1 | Update End Users Guide |  | 15d | 2007-08-08 | 2007-08-28 | 1146 |  |  |  | 3d |  |  |  |  |  |
| 1253 | 1.2.7.11.2 | Submit Final End Users Guide (Task 3.15.2) | milestone | 0d | 2007-08-31 | 2007-08-31 | 1252 | 2007-09-03 | 2007-09-07 | 5d | 0d |  | must finish on 2007-08-31 |  |  |  |
| 1254 | 1.2.7.11.3 | Update Final Versions of Other Project Documents |  | 15d | 2007-08-03 | 2007-08-23 | 1177 |  |  |  | 6d |  |  |  |  |  |
| 1255 | 1.2.7.11.4 | Submit Final Administrators Guide (Task 3.13) | milestone | 0d | 2007-08-31 | 2007-08-31 | 1254 | 2007-09-03 | 2007-09-07 | 5d | 0d |  | must finish on 2007-08-31 |  |  |  |
| 1256 | 1.2.7.11.5 | Submit Final Installation Guide (Task 3.10) | milestone | 0d | 2007-08-31 | 2007-08-31 | 1254 | 2007-09-03 | 2007-09-07 | 5d | 0d |  | must finish on 2007-08-31 |  |  |  |
| 1257 | 1.2.7.11.6 | Submit Final Release Notes (Task 3.14) | milestone | 0d | 2007-08-31 | 2007-08-31 | 1254 | 2007-09-03 | 2007-09-07 | 5d | 0d |  | must finish on 2007-08-31 |  |  |  |
| 1258 | 1.2.7.12 | **Deployment (Iter-7)** |  | 10d | 2007-08-23 | 2007-09-06 |  |  |  |  | 28d |  |  |  | 104h |  |
| 1259 | 1.2.7.12.1 | Submit Final Code Base (Task 3.5) | milestone | 0d | 2007-08-23 | 2007-08-23 | 1220 |  |  |  | 28d | 0d |  | Ram |  | 3.5 |
| 1260 | 1.2.7.12.2 | Formal Review of Code by BAH |  | 10d | 2007-08-24 | 2007-09-06 | 1259 |  |  |  | 28d |  |  | BAH | 80h |  |
| 1261 | 1.2.7.12.3 | Deploy Prototype for Iteration 1 at Mayo and WF |  | 1d | 2007-08-24 | 2007-08-24 | 1259 |  |  |  | 37d |  |  | Vinay; Mayo; WF | 24h |  |
| 1262 | 1.2.7.13 | Finish Iteration 7 | milestone | 0d | 2007-08-31 | 2007-08-31 |  | 2007-09-07 | 2007-09-07 | 0d | 0d |  | must finish on 2007-08-31 |  |  |  |
| 1263 | 1.2.8 | Finish Construction Phase | milestone | 0d | 2007-08-31 | 2007-08-31 | 1262 | 2007-09-12 | 2007-09-12 | 0d | 0d |  |  |  |  |  |
| 1264 | 1.3 | **Transition Phase** |  | 32d | 2007-09-03 | 2007-10-16 | 1263 | 2007-09-13 | 2007-09-26 | 10d | 0d |  |  |  |  | 4.1, 4.2, 4.3 |
| 1265 | 1.3.1 | Deployment Plan (Task 4.1) |  | 2d | 2007-09-03 | 2007-09-04 |  | 2007-09-13 | 2007-09-14 | 2d | 0d |  |  |  |  |  |
| 1266 | 1.3.2 | Deployment |  | 10d | 2007-09-05 | 2007-09-18 | 1265 | 2007-09-17 | 2007-09-21 | 5d | 0d |  |  |  |  |  |
| 1267 | 1.3.3 | Deployment Report (Task 4.2) |  | 1d | 2007-09-03 | 2007-09-03 |  | 2007-09-13 | 2007-09-13 | 1d | 31d |  |  |  |  |  |
| 1268 | 1.3.4 | Code Release Updates (if needed) (Task 4.3) |  | 20d | 2007-09-19 | 2007-10-16 | 1266 | 2007-09-13 | 2007-09-26 | 10d | 0d |  |  |  |  |  |
| 1269 | 1.3.5 | Guide Updates (if needed) |  | 10d | 2007-09-03 | 2007-09-14 |  | 2007-09-13 | 2007-09-26 | 10d | 22d |  |  |  |  |  |
| 1270 | 1.3.6 | **Project Closing Activities** |  | 10d | 2007-09-03 | 2007-09-14 |  | 2007-09-13 | 2007-09-26 | 10d | 22d |  |  |  |  |  |
| 1271 | 1.3.6.1 | Lessons Learned (Task 1.6) |  | 10d | 2007-09-03 | 2007-09-14 |  | 2007-09-13 | 2007-09-26 | 10d | 22d |  |  |  |  |  |
| 1272 | 1.3.6.2 | Archiving |  | 10d | 2007-09-03 | 2007-09-14 |  | 2007-09-13 | 2007-09-26 | 10d | 22d |  |  |  |  |  |
| 1273 | 1.3.6.3 | Contract Closeout |  | 10d | 2007-09-03 | 2007-09-14 |  | 2007-09-13 | 2007-09-26 | 10d | 22d |  |  |  |  |  |
